# VIvienda Hermanos Rossi

How a schedule from MS Project XML changed from version to version. A marks actual dates.

## Version 1 (saved 2026-07-16)

| ID | WBS | Task | Duration | Start | Finish | Predecessors | Complete | Total float | Constraint |
| --- | --- | --- | --- | --- | --- | --- | --- | --- | --- |
| 1 | 1 | **VIVIENDAS HERMANOS ROSSI** | 680d? | 2025-07-01 A | 2028-03-17 |  | 33% | 0d |  |
| 2 |  | ✔Recepción de Pliego | 22d | 2025-07-01 A | 2025-07-31 A |  | 100% |  | start no earlier than 2025-07-01 |
| 3 | 1.2 | **✔Gestiones** | 35d | 2025-08-01 A | 2025-09-19 A |  | 100% |  |  |
| 4 |  | ✔Gestiones CAPC | 24d | 2025-08-01 A | 2025-09-04 A | 2 | 100% |  |  |
| 5 |  | ✔Gestiones Municipales | 35d | 2025-08-01 A | 2025-09-19 A | 2 | 100% |  |  |
| 6 |  | ✔Gestiones de Personal | 10d | 2025-09-08 A | 2025-09-19 A | 5FF | 100% |  |  |
| 7 | 1.3 | **Obra - Vivienda Hermanos Rossi** | 413d | 2025-09-19 A | 2027-05-19 |  | 9% | 210d |  |
| 8 |  | ✔Firma Acta Inicio de Obra | 0d | 2025-09-19 A | 2025-09-19 A | 3 | 100% |  |  |
| 9 |  | Vivieda Hermanos Rossi Contratada | 433d | 2025-09-22 | 2027-05-19 | 8 |  | 206d |  |
| 10 |  | Obra Vivieda Hermanos Rossi | 374d | 2025-09-22 A | 2027-02-25 |  | 20% | 267d | start no earlier than 2025-09-22 |
| 11 | 1.4 | **CRONOGRAMA VIVIENDA ROSSI** | 374d? | 2025-09-22 A | 2027-03-23 |  | 48% | 0d |  |
| 12 | 1.4.1 | **TAREAS PRELIMINARES** | 78d | 2025-09-22 A | 2026-01-14 A |  | 100% |  |  |
| 13 |  | ✔CERCO PERIMETRAL | 0d | 2025-09-22 A | 2025-09-22 A |  | 100% |  | start no earlier than 2025-09-22 |
| 14 |  | ✔REPLANTEO DE OBRA | 0d | 2025-10-08 A | 2025-10-08 A | 17 | 100% |  |  |
| 15 |  | ✔ARMADO DE PILAR CON TABLERO DE OBRA | 0d | 2025-09-22 A | 2025-09-22 A |  | 100% |  | start no earlier than 2025-09-22 |
| 16 |  | ✔MOVIMIENTO DE SUELO (Monto a confirmar una vez iniciada la obra) | 76d | 2025-09-24 A | 2026-01-14 A | 15FS+2d | 100% |  |  |
| 17 |  | ✔LIMPIEZA Y NIVELACIÓN (Monto a confirmar una vez iniciada la obra) | 0d | 2025-10-03 A | 2025-10-03 A | 16 | 100% |  |  |
| 18 |  | ✔AGUA DE OBRA (valor conexión Cooperativa agua) | 0d | 2025-09-22 A | 2025-09-22 A |  | 100% |  | start no earlier than 2025-09-22 |
| 19 |  | ✔LUZ DE OBRA (valor conexión Epec) | 0d | 2025-09-22 A | 2025-09-22 A |  | 100% |  | start no earlier than 2025-09-22 |
| 20 | 1.4.2 | **PILOTES** | 78d | 2025-10-22 A | 2026-02-13 A |  | 100% |  |  |
| 21 |  | ✔EXCAVACIÓN DE PILOTES | 10d | 2026-01-15 A | 2026-01-28 A | 16 | 100% |  |  |
| 22 |  | ✔P1 - Pilotes (40cm diametro) - 5 unidades - Prof. 3 mts aprox | 15d | 2026-01-23 A | 2026-02-13 A | 21FF+11d | 100% |  | start no earlier than 2025-09-10 |
| 23 |  | ✔P2 - Pilotes (50cm diametro) - 4 unidades - Prof. 3 mts aprox | 15d | 2026-01-23 A | 2026-02-13 A | 21FF+11d | 100% |  |  |
| 24 |  | ✔Zapata | 13d | 2025-10-22 A | 2025-11-07 A |  | 100% |  | start no earlier than 2025-10-22 |
| 25 |  | ✔Mamposteria de Nivelación SS1 | 5d | 2025-11-10 A | 2025-11-14 A | 28 | 100% |  |  |
| 26 |  | ✔Mamposteria de Nivelación PB | 9d | 2026-01-19 A | 2026-01-29 A | 79, 80 | 100% |  |  |
| 27 | 1.4.3 | **VIGAS DE FUNDACIÓN** | 76d | 2025-10-23 A | 2026-02-12 A |  | 100% |  |  |
| 28 |  | ✔VF - 0,30 x 0,35 | 12d | 2025-10-23 A | 2025-11-07 A | 24FF | 100% |  |  |
| 29 |  | ✔VF1 - 0,30 x 0,40 | 12d | 2025-10-23 A | 2025-11-07 A | 24FF | 100% |  |  |
| 30 |  | ✔VF2 - 0,30 x 0,45 | 12d | 2025-10-23 A | 2025-11-07 A | 24FF | 100% |  |  |
| 31 |  | ✔VF - 0,30 x 0,35 | 11d | 2026-01-28 A | 2026-02-12 A | 23SS+3d | 100% |  |  |
| 32 |  | ✔VF1 - 0,30 x 0,40 | 11d | 2026-01-28 A | 2026-02-12 A | 23SS+3d | 100% |  |  |
| 33 | 1.4.4 | **COLUMNAS + ENCADENADOS VERTICALES** | 123d | 2025-11-21 A | 2026-05-21 |  | 63% | 209d |  |
| 34 |  | ✔C1 (6 columnas) | 18d | 2025-11-21 A | 2025-12-17 A | 102 | 100% |  |  |
| 35 |  | ✔C1 s (11 columnas) | 18d | 2025-11-21 A | 2025-12-17 A | 102 | 100% |  |  |
| 36 |  | ✔C2 (1 columna) | 18d | 2025-11-21 A | 2025-12-17 A | 102 | 100% |  |  |
| 37 |  | ✔C3 s (2 columnas) | 18d | 2025-11-21 A | 2025-12-17 A | 102 | 100% |  |  |
| 38 |  | ✔C5 (2 columnas) | 18d | 2025-11-21 A | 2025-12-17 A | 102 | 100% |  |  |
| 39 |  | ✔C1 (18 columnas) | 7d | 2026-02-04 A | 2026-02-13 A | 101 | 100% |  |  |
| 40 |  | ✔C2 (5 columnas) | 7d | 2026-02-04 A | 2026-02-13 A | 101 | 100% |  |  |
| 41 |  | ✔C3 (5 columnas) | 7d | 2026-02-04 A | 2026-02-13 A | 101 | 100% |  |  |
| 42 |  | ✔C6 (3 columnas) | 27d | 2026-02-04 A | 2026-03-13 A | 101 | 100% |  |  |
| 43 |  | ✔C1 (19 columnas) | 17d | 2026-04-28 | 2026-05-21 | 83 |  | 209d |  |
| 44 |  | ✔C2 (2 columnas) | 17d | 2026-04-28 | 2026-05-21 | 83 |  | 209d |  |
| 45 |  | ✔C3 (2 columnas) | 17d | 2026-04-28 | 2026-05-21 | 83 |  | 209d |  |
| 46 |  | ✔C4 (3 columnas) | 17d | 2026-04-28 | 2026-05-21 | 83 |  | 209d |  |
| 47 |  | ✔Ce (7 columnas) | 7d | 2026-02-04 A | 2026-02-13 A | 101 | 100% |  |  |
| 48 |  | ✔Ce (17 columnas) | 17d | 2026-04-28 | 2026-05-21 | 83 |  | 209d |  |
| 49 | 1.4.5 | **TABIQUES DE HORMIGON VISTO** | 177d | 2025-11-10 A | 2026-07-28 |  | 36% | 111d |  |
| 50 |  | ✔T1 - TABIQUES DE HORMIGON VISTO contencion cantero y cochera PSB - esp: 20cm | 26d | 2025-11-10 A | 2025-12-17 A | 28, 29, 30 | 100% |  |  |
| 51 |  | ✔T1 - TABIQUES DE HORMIGON VISTO cantero PB - esp: 20cm | 10d | 2026-01-19 A | 2026-01-30 A | 80 | 100% |  |  |
| 52 |  | ✔T1 - TABIQUES DE HORMIGON VISTO PA - esp: 20cm - Etapa 1 | 45d | 2026-04-28 | 2026-07-01 | 82 |  | 13.8d |  |
| 53 |  | T1 - TABIQUES DE HORMIGON VISTO PA - esp: 20cm - Etapa 2 | 19d | 2026-07-02 | 2026-07-28 | 52 |  | 111d |  |
| 54 | 1.4.6 | **VIGAS ESTRUCTURALES + ENCADENADOS HORIZONTALES** | 141d | 2025-12-15 A | 2026-07-08 |  | 99% | 176d |  |
| 55 |  | ✔V1 - 0,18 x 0,30 | 7d | 2025-12-15 A | 2025-12-23 A | 79SS | 100% |  |  |
| 56 |  | ✔V2 - 0,18 x 0,30 | 7d | 2025-12-15 A | 2025-12-23 A | 79SS | 100% |  |  |
| 57 |  | ✔V3 - 0,18 x 0,35 | 7d | 2025-12-15 A | 2025-12-23 A | 79SS | 100% |  |  |
| 58 |  | ✔V4 - 0,18 x 0,40 | 7d | 2025-12-15 A | 2025-12-23 A | 79SS | 100% |  |  |
| 59 |  | ✔V5 - 0,18 x 0,45 | 7d | 2025-12-15 A | 2025-12-23 A | 79SS | 100% |  |  |
| 60 |  | ✔V6 - 0,18 x 0,45 | 7d | 2025-12-15 A | 2025-12-23 A | 79SS | 100% |  |  |
| 61 |  | ✔VL - 0,25 x 0,50 | 7d | 2025-12-15 A | 2025-12-23 A | 79SS | 100% |  |  |
| 62 |  | ✔Vh - 0,18 x h | 7d | 2025-12-15 A | 2025-12-23 A | 79SS | 100% |  |  |
| 63 |  | ✔V1 - 0,18 x 0,30 | 50d | 2026-02-02 A | 2026-04-15 A | 51 | 100% |  |  |
| 64 |  | ✔V2 - 0,18 x 0,30 | 50d | 2026-02-02 A | 2026-04-15 A | 51 | 100% |  |  |
| 65 |  | ✔V3 - 0,18 x 0,35 | 50d | 2026-02-02 A | 2026-04-15 A | 51 | 100% |  |  |
| 66 |  | ✔V4 - 0,18 x 0,40 | 50d | 2026-02-02 A | 2026-04-15 A | 51 | 100% |  |  |
| 67 |  | ✔V3e - 0,18 x 0,40 | 50d | 2026-02-02 A | 2026-04-15 A | 51 | 100% |  |  |
| 68 |  | ✔VL - 0,25 x 0,50 | 50d | 2026-02-02 A | 2026-04-15 A | 51 | 100% |  |  |
| 69 |  | ✔VL1 - 0,28 x 0,50 | 50d | 2026-02-02 A | 2026-04-15 A | 51 | 100% |  |  |
| 70 |  | ✔EH 0.18X0.18 | 36d | 2026-03-20 A | 2026-05-13 A | 51FS+33d | 100% |  |  |

| ID | WBS | Task | Duration | Start | Finish | Predecessors | Complete | Total float | Constraint |
| --- | --- | --- | --- | --- | --- | --- | --- | --- | --- |
| 71 |  | ✔EH1 0.18X0.18 | 7d | 2026-03-20 A | 2026-03-31 A | 51FS+33d | 100% |  |  |
| 72 |  | ✔V1 - 0,18 x 0,30 | 7d | 2026-06-04 A | 2026-06-12 A | 98, 99, 97 | 100% |  |  |
| 73 |  | ✔V2 - 0,18 x 0,30 | 7d | 2026-06-04 A | 2026-06-12 A | 98, 99, 97 | 100% |  |  |
| 74 |  | ✔V3 - 0,18 x 0,35 | 7d | 2026-06-04 A | 2026-06-12 A | 98, 99, 97 | 100% |  |  |
| 75 |  | V4 - 0,18 x 0,40 | 11d | 2026-06-24 A | 2026-07-08 | 52FS-11d | 80% | 176d |  |
| 76 |  | VL - 0,25 x 0,50 | 11d | 2026-06-24 A | 2026-07-08 | 52FS-11d | 80% | 176d |  |
| 77 |  | VL1e - 0,25 x 0,30 | 11d | 2026-06-24 A | 2026-07-08 | 52FS-11d | 80% | 176d |  |
| 78 | 1.4.7 | **LOSAS** | 129d | 2025-12-15 A | 2026-06-22 |  | 99% | 0d |  |
| 79 |  | ✔Losa Maciza 8 cm - Planta Subsuelo | 23d | 2025-12-15 A | 2026-01-16 A | 92 | 100% |  | start no earlier than 2025-12-01 |
| 80 |  | ✔Losa Viguetas 22 cm - Planta Subsuelo | 23d | 2025-12-15 A | 2026-01-16 A | 92 | 100% |  | start no earlier than 2025-12-01 |
| 81 |  | ✔Losa Viguetas 22 cm - Planta Baja | 28d | 2026-03-17 A | 2026-04-27 A | 96 | 100% |  |  |
| 82 |  | ✔Losa Viguetas 17 cm - Planta Baja | 28d | 2026-03-17 A | 2026-04-27 A | 96 | 100% |  |  |
| 83 |  | ✔Losa Maciza 8 cm HORMIGÓN VISTO - Planta Baja | 28d | 2026-03-17 A | 2026-04-27 A | 96 | 100% |  |  |
| 84 |  | ✔Losa Viguetas 17 cm - Planta Alta | 15d | 2026-06-02 A | 2026-06-22 A | 52FS-22d | 100% |  |  |
| 85 |  | ✔Pases electricidad gral ss1 | 5d | 2026-01-12 A | 2026-01-16 A | 80FF | 100% |  |  |
| 86 |  | ✔Pases plomería gral ss1 | 5d | 2026-01-12 A | 2026-01-16 A | 80FF | 100% |  |  |
| 87 |  | ✔Pases electricidad gral pb | 5d | 2026-04-21 A | 2026-04-27 A | 82FF | 100% |  |  |
| 88 |  | ✔Pases plomería gral pb | 5d | 2026-04-21 A | 2026-04-27 A | 82FF | 100% |  |  |
| 89 |  | ✔Pases electricidad gral pa | 5d | 2026-06-16 A | 2026-06-22 A | 84FF | 100% |  |  |
| 90 |  | ✔Pases plomería gral pa | 5d | 2026-06-16 A | 2026-06-22 A | 84FF | 100% |  |  |
| 91 | 1.4.8 | **MAMPOSTERIA** | 126d | 2025-11-21 A | 2026-05-27 A |  | 100% |  |  |
| 92 |  | XMAMP. LADRILLO CERAMICO HUECO PORTANTE 12x18x33 | 20d | 2025-11-21 A | 2025-12-19 A | 102 | 100% |  |  |
| 93 |  | ✔MAMP. LADRILLO CERAMICO HUECO PORTANTE 18x18x33 | 20d | 2025-11-21 A | 2025-12-19 A | 102 | 100% |  |  |
| 94 |  | ✔MAMP. LADRILLO CERAMICO HUECO PORTANTE 8x18x33 | 35d | 2026-03-06 A | 2026-04-27 A | 83FF | 100% |  |  |
| 95 |  | ✔MAMP. LADRILLO CERAMICO HUECO PORTANTE 12x18x33 | 28d | 2026-02-04 A | 2026-03-16 A | 101 | 100% |  |  |
| 96 |  | ✔MAMP. LADRILLO CERAMICO HUECO PORTANTE 18x18x33 | 28d | 2026-02-04 A | 2026-03-16 A | 101 | 100% |  |  |
| 97 |  | ✔MAMP. LADRILLO CERAMICO HUECO PORTANTE 8x18x33 | 20d | 2026-04-28 A | 2026-05-27 A | 81 | 100% |  |  |
| 98 |  | ✔MAMP. LADRILLO CERAMICO HUECO PORTANTE 12x18x33 | 20d | 2026-04-28 A | 2026-05-27 A | 81 | 100% |  |  |
| 99 |  | ✔MAMP. LADRILLO CERAMICO HUECO PORTANTE 18x18x33 | 20d | 2026-04-28 A | 2026-05-27 A | 81 | 100% |  |  |
| 100 | 1.4.9 | **AISLACIÓN MUROS** | 57d | 2025-11-17 A | 2026-02-09 A |  | 100% |  |  |
| 101 |  | ✔CAPA AISLADORA HORIZONTAL | 3d | 2026-01-30 A | 2026-02-03 A | 26 | 100% |  |  |
| 102 |  | ✔CAPA AISLADORA HORIZONTAL | 3d | 2025-11-17 A | 2025-11-20 A | 25 | 100% |  |  |
| 103 |  | ✔CAPA AISLADORA VERTICAL | 8d | 2026-01-29 A | 2026-02-09 A | 119, 121, 120 | 100% |  |  |
| 104 | 1.4.10 | **CONTRAPISO** | 73d | 2025-10-28 A | 2026-02-12 A |  | 100% |  |  |
| 105 |  | ✔HORMIGON P/ CONTRAPISO: INT: e= 10cm | 6d | 2026-02-04 A | 2026-02-12 A | 101, 102 | 100% |  |  |
| 106 |  | ✔HORMIGON P/ CONTRAPISO: EXT sub y planta baja: e= 10cm | 15d | 2025-10-28 A | 2025-11-17 A |  | 100% |  | finish no earlier than 2025-11-17 |
| 107 | 1.4.11 | **CARPETA DE NIVELACIÓN** | 38d | 2026-07-29 | 2026-09-21 |  |  | 101d |  |
| 108 |  | CARPETA DE NIVELACIÓN: ESP: 4 CM - INTERIOR PSS | 7d | 2026-09-11 | 2026-09-21 | 250 |  | 118d |  |
| 109 |  | CARPETA DE NIVELACIÓN: ESP: 4 CM - INTERIOR PB | 7d | 2026-09-11 | 2026-09-21 | 250 |  | 125d |  |
| 110 |  | CARPETA DE NIVELACIÓN: ESP: 4 CM - EXTERIOR PB | 7d | 2026-09-11 | 2026-09-21 | 250 |  | 125d |  |
| 111 |  | CARPETA DE NIVELACIÓN: ESP: 4 CM - INTERIOR PA | 7d | 2026-09-11 | 2026-09-21 | 250 |  | 70d |  |
| 112 |  | CARPETA DE NIVELACIÓN SOBRE CARGA CUBIERTA | 5d | 2026-07-29 | 2026-08-04 | 116 |  | 111d |  |
| 113 | 1.4.12 | **CUBIERTA** | 135d | 2026-01-29 A | 2026-08-13 |  | 31% | 151d |  |
| 114 |  | Tanque y parapetos | 7d | 2026-07-08 | 2026-07-17 | 84FS+11d |  | 170d |  |
| 115 |  | ✔Cubierta común sobre Losa - Hormigón de pendiente 10cm | 11d | 2026-01-29 A | 2026-02-12 A |  | 100% |  | finish no earlier than 2026-02-12 |
| 116 |  | Cubierta común sobre Losa - Hormigón de pendiente 10cm | 10d | 2026-07-15 | 2026-07-28 | 53FF |  | 111d |  |
| 117 |  | IMPERMEABILIZACIÓN EN LOSA Y PARAPETOS* | 7d | 2026-08-05 | 2026-08-13 | 112 |  | 111d |  |
| 118 | 1.4.13 | **REVOQUES EXT + INT** | 147d | 2026-03-12 A | 2026-10-12 |  | 32% | 110d |  |
| 119 |  | X REVOQUE GRUESO C/ AZOTADO HIDROF. CEMENTICIO EN MAMP. EXTERIOR | 60d | 2026-03-12 A | 2026-06-09 A | 92, 93FS+55d | 100% |  |  |
| 120 |  | X REVOQUE GRUESO C/ AZOTADO HIDROF. CEMENTICIO EN MAMP. EXTERIOR | 60d | 2026-03-12 A | 2026-06-09 A | 92, 93FS+55d | 100% |  |  |
| 121 |  | REVOQUE GRUESO C/ AZOTADO HIDROF. CEMENTICIO EN MAMP. INTERIOR | 60d | 2026-05-11 | 2026-08-04 | 92, 93FS+94d |  | 158d |  |
| 122 |  | X REVOQUE FINO EXTERIOR | 15d | 2026-07-20 A | 2026-08-07 A | 111 | 100% |  |  |
| 123 |  | REVOQUE GRUESO C/ AZOTADO HIDROF. CEMENTICIO EN MAMP. EXTERIOR | 34d | 2026-06-17 | 2026-08-04 | 95, 96FS+62d |  | 158d |  |
| 124 |  | REVOQUE GRUESO C/ AZOTADO HIDROF. CEMENTICIO EN MAMP. EXTERIOR | 34d | 2026-06-17 | 2026-08-04 | 95, 96FS+62d |  | 158d |  |
| 125 |  | REVOQUE GRUESO C/ AZOTADO HIDROF. CEMENTICIO EN MAMP. INTERIOR | 34d | 2026-06-17 | 2026-08-04 | 95, 96FS+62d |  | 158d |  |
| 126 |  | REVOQUE FINO EXTERIOR | 15d | 2026-09-22 | 2026-10-12 | 111 |  | 110d |  |
| 127 |  | REVOQUE GRUESO C/ AZOTADO HIDROF. CEMENTICIO EN MAMP. EXTERIOR | 53d | 2026-05-28 | 2026-08-11 | 98, 99 |  | 153d |  |
| 128 |  | REVOQUE GRUESO C/ AZOTADO HIDROF. CEMENTICIO EN MAMP. INTERIOR | 53d | 2026-05-28 | 2026-08-11 | 98, 99 |  | 1d |  |
| 129 |  | IMPERMEABILIZACIÓN P/ PIEDRAS | 5d | 2026-08-20 | 2026-08-26 | 84FS+40d |  | 123d |  |
| 130 | 1.4.14 | **ENGROSADO + ENLUCIDO DE YESO** | 15d | 2026-08-14 | 2026-09-04 |  |  | 111d |  |
| 131 |  | ENGROSADO + ENLUCIDO YESO | 15d | 2026-08-14 | 2026-09-04 | 117 |  | 111d |  |
| 132 |  | ENGROSADO + ENLUCIDO YESO | 15d | 2026-08-14 | 2026-09-04 | 117 |  | 136d |  |
| 133 |  | ENGROSADO + ENLUCIDO YESO | 15d | 2026-08-14 | 2026-09-04 | 117 |  | 136d |  |
| 134 | 1.4.15 | **CIELORRASO** | 10d | 2026-09-07 | 2026-09-18 |  |  | 111d |  |
| 135 |  | C2 - Cielorraso suspendido de placa de durock | 10d | 2026-09-07 | 2026-09-18 | 131 |  | 111d |  |
| 136 |  | C6 - Cajón de durlock | 10d | 2026-09-07 | 2026-09-18 | 131 |  | 126d |  |
| 137 | 1.4.16 | **ASADOR** | 3d | 2026-07-15 | 2026-07-17 |  |  | 170d |  |
| 138 |  | ASADOR | 3d | 2026-07-15 | 2026-07-17 |  |  | 170d | start no earlier than 2026-07-15 |
| 139 | 1.4.17 | **VEREDAS PERIMETRALES** | 71d | 2026-07-01 | 2026-10-09 |  |  | 111d |  |
| 140 |  | Definición de Paisajismo | 66d | 2026-07-01 | 2026-10-02 |  |  | 111d | start no earlier than 2026-07-01 |

| ID | WBS | Task | Duration | Start | Finish | Predecessors | Complete | Total float | Constraint |
| --- | --- | --- | --- | --- | --- | --- | --- | --- | --- |
| 141 |  | VEREDAS PERIMETRALES CON CORDÓN - ancho 40cm | 5d | 2026-10-05 | 2026-10-09 | 105FS+66d, 140 |  | 111d |  |
| 142 | 1.4.18 | **COLUMNAS Y VIGAS METÁLICAS** | 123d | 2026-04-01 A | 2026-09-25 |  | 49% | 121d |  |
| 143 |  | ✔Cm1- 2UPN140 (5 columnas) 3,50 mts de largo | 10d | 2026-04-01 A | 2026-04-15 A | 81SS+10d | 100% |  |  |
| 144 |  | ✔Cm3- 2UPN100 (2 columnas) 3,50 mts de largo | 10d | 2026-04-01 A | 2026-04-15 A | 81SS+10d | 100% |  |  |
| 145 |  | ✔Cm4- 2UPN200 (2 columnas) 3,5 mts de largo | 4d | 2026-05-22 A | 2026-05-28 A | 43 | 100% |  |  |
| 146 |  | Viga Met. - IPN300 | 14d | 2026-07-29 | 2026-08-17 | 81, 53 |  | 149d |  |
| 147 |  | ✔Viga Met. - IPN300 | 14d | 2026-05-22 A | 2026-06-11 A | 43 | 100% |  |  |
| 148 |  | Viga Met. - IPN300 + UPN300 | 14d | 2026-07-29 | 2026-08-17 | 81, 53 |  | 149d |  |
| 149 |  | ✔Viga Met. - IPN300 + UPN300 | 14d | 2026-05-22 A | 2026-06-11 A | 43 | 100% |  |  |
| 150 |  | ✔Viga Met. - IPN400 + UPN400 | 14d | 2026-05-22 A | 2026-06-11 A | 43 | 100% |  |  |
| 151 |  | Escalera con nervio central de IPN 300, con descanso (ver distribucion en plano) (9,3 m de IPN) | 20d | 2026-08-31 | 2026-09-25 | 53FS+22d |  | 121d |  |
| 152 |  | Escalera con nervio central de IPN 300, con descanso (ver distribucion en plano) (9,3 m de IPN) | 20d | 2026-08-31 | 2026-09-25 | 53FS+22d |  | 121d |  |
| 153 | 1.4.19 | **CUBIERTA METÁLICA** | 21d | 2026-08-11 | 2026-09-09 |  |  | 133d |  |
| 154 |  | Cubierta Liviana Metálica - pend. 2% - escur. a canaleta - chapa sinusoidal | 21d | 2026-08-11 | 2026-09-09 | 151SF+8d |  | 133d |  |
| 155 |  | Cubierta Liviana Metálica - pend. 15% - escur. a canaleta - chapa sinusoidal (ver planos) | 21d | 2026-08-11 | 2026-09-09 | 151SF+8d |  | 133d |  |
| 156 | 1.4.20 | **CONDUCTOS METÁLICOS** | 3d | 2026-04-23 A | 2026-04-27 A |  | 100% |  |  |
| 157 |  | .✔ASADOR PB - conducto descarga 2,30m aprx - 30 diam. | 3d | 2026-04-23 A | 2026-04-27 A | 83FF | 100% |  |  |
| 158 | 1.4.21 | **CERRAMIENTO METÁLICOS** | 4d | 2026-11-26 | 2026-12-01 |  |  | 76d |  |
| 159 |  | Cerramiento en Ventana Toilette (perfiles en vertical separados entre ellos 25 cm) | 4d | 2026-11-26 | 2026-12-01 | 232 |  | 76d |  |
| 160 | 1.4.22 | **PORTON METALICO COCHERA** | 4d | 2026-12-09 | 2026-12-14 |  |  | 68d |  |
| 161 |  | Portón metálico de la cochera (2,50m x 8,60m) | 4d | 2026-12-09 | 2026-12-14 | 236 |  | 68d |  |
| 162 | 1.4.23 | **INSTALACIONES PLUVIALES** | 120d | 2026-01-21 | 2026-07-15 |  |  | 172d |  |
| 163 |  | Desagues pluviales (sin zinguería) | 120d | 2026-01-21 | 2026-07-15 | 105SS-10d |  | 172d |  |
| 164 | 1.4.24 | **INSTALACIONES CLOACALES** | 35d | 2026-06-11 | 2026-07-30 |  |  | 161d |  |
| 165 |  | Instalación de cloacas para un baño en PB y tres baños en PA, pileta de cocina, pileta de lavadero, lavavajilla, lavarropas. | 25d | 2026-06-11 | 2026-07-16 | 83FS+30d |  | 161d |  |
| 166 |  | Colocación de 5 cámara de inspección (según detalle técnico) | 5d | 2026-07-17 | 2026-07-23 | 165 |  | 161d |  |
| 167 |  | Colocación de 1 cámara séptica (según detalle técnico) | 5d | 2026-07-24 | 2026-07-30 | 166 |  | 161d |  |
| 168 | 1.4.25 | **INSTALACIONES AGUA** | 141d | 2026-06-11 | 2027-01-04 |  |  | 55d |  |
| 169 |  | Instalación de agua fría y caliente para un baño PB y tres en PA, pileta de cocina, pileta de lavadero, lavavajilla, lavarropas. | 25d | 2026-06-11 | 2026-07-16 | 83FS+30d |  | 166d |  |
| 170 |  | Alimentación de agua para válvulas de inodoros desde tanques | 5d | 2026-07-17 | 2026-07-23 | 169 |  | 166d |  |
| 171 |  | Alimentación de agua a tanques y canillas en patio | 5d | 2026-07-17 | 2026-07-23 | 169 |  | 166d |  |
| 172 |  | Instalación de bomba hidroneumática bajo tanque | 2d | 2026-12-31 | 2027-01-04 | 236FS+15d |  | 55d |  |
| 173 | 1.4.26 | **INSTALACIONES GAS** | 214d | 2026-05-15 A | 2027-03-23 |  | 18% | 0d |  |
| 174 |  | Instalación de gas para anafe, horno, termotanque | 17d | 2026-05-15 A | 2026-06-09 A |  | 100% |  | start no earlier than 2026-05-15 |
| 175 |  | Factibilidad de gas y plano aprobación de cañerías | 33d | 2026-06-10 | 2026-07-27 | 174 |  | 70d |  |
| 176 |  | Segunda inspección parcial de cañerías y ventilaciones | 10d | 2026-07-28 | 2026-08-10 | 175 |  | 70d |  |
| 177 |  | Solicitud de servicio domiciliario (no incluye aranceles Ecogas) | 7d | 2027-03-15 | 2027-03-23 | 178 |  | 0d |  |
| 178 |  | Final de gas con artefactos colocados | 15d | 2027-02-22 | 2027-03-12 | 245FS+5d |  | 0d |  |
| 179 |  | Ventilaciones para gas. Conductos y rejillas | 15d | 2026-07-13 | 2026-07-31 | 174FS+22d |  | 160d |  |
| 180 | 1.4.27 | **INSTALACION A°A° Y CALEFACCIÓN CENTRALIZADO (POR CONDUCTOS)** | 151d | 2026-07-17 | 2027-02-23 |  |  | 20d |  |
| 181 |  | 1 EQUIPO CON 6 CONDUCTOS | 7d | 2027-02-15 | 2027-02-23 | 226FS+40d |  | 20d |  |
| 182 |  | 2 EQUIPOS CON 4 CONDUCTOS CADA EQUIPO | 7d | 2027-02-15 | 2027-02-23 | 226FS+40d |  | 20d |  |
| 183 |  | KIT INSTALACIÓN AA | 7d | 2026-07-17 | 2026-07-27 | 165 |  | 164d |  |
| 184 | 1.4.28 | **INSTALACION ELÉCTRICA** | 265d | 2026-01-12 A | 2027-02-02 |  | 46% | 34d |  |
| 185 |  | ✔AMURADO DE CAJAS Y CANALIZACIÓN EN LOSA O CIELORASO | 5d | 2026-01-12 A | 2026-01-16 A | 79FF | 100% |  |  |
| 186 |  | ✔AMURADO DE CAJAS Y CANALIZACIÓN EN LOSA O CIELORASO | 5d | 2026-04-21 A | 2026-04-27 A | 81FF | 100% |  |  |
| 187 |  | ✔AMURADO DE CAJAS Y CANALIZACIÓN EN LOSA O CIELORASO | 5d | 2026-06-16 A | 2026-06-22 A | 84FF | 100% |  |  |
| 188 |  | ✔AMURADO DE CAJAS Y CANALIZACIÓN EN MUROS | 15d | 2026-03-19 A | 2026-04-10 A | 119, 120 | 100% |  |  |
| 189 |  | ✔AMURADO DE CAJAS Y CANALIZACIÓN EN MUROS | 15d | 2026-06-01 A | 2026-06-19 A |  | 100% |  | start no earlier than 2026-06-01 |
| 190 |  | AMURADO DE CAJAS Y CANALIZACIÓN EN MUROS | 15d | 2026-07-01 | 2026-07-22 | 127FS-29d |  | 167d |  |
| 191 |  | ✔AMURADO DE TABLEROS SECCIONALES | 2d | 2026-05-20 A | 2026-05-21 A | 190FS-44d | 100% |  |  |
| 192 |  | CABLEADO GENERAL 220V | 15d | 2026-12-16 | 2027-01-07 | 236FS+5d |  | 52d |  |
| 193 |  | GUIAS TESTIGOS DE SEÑALES DÉBILES | 10d | 2026-12-09 | 2026-12-22 | 236 |  | 62d |  |
| 194 |  | ARMADO DE INTERRUPTORES Y TOMAS | 10d | 2027-01-15 | 2027-01-28 | 224FS+20d |  | 34d |  |
| 195 |  | ARMADO DEL TABLERO GENERAL | 3d | 2027-01-29 | 2027-02-02 | 194 |  | 34d |  |
| 196 |  | ARMADO DEL PILAR Y TABLERO DE OBRA TRIFÁSICO | 2d | 2027-01-29 | 2027-02-01 | 194 |  | 35d |  |
| 197 | 1.4.29 | **PISOS INTERIORES** | 30d | 2026-09-22 | 2026-11-03 |  |  | 70d |  |
| 198 |  | S1 - COCINA-LIVING-COMEDOR-PASILLO-DESPENSA (Porcelanato Simil Madera 60x120) | 30d | 2026-09-22 | 2026-11-03 | 111 |  | 70d |  |
| 199 |  | S3 - LAVADERO Y TOILETTE (Porcelanato de 60x120 - a definir) | 30d | 2026-09-22 | 2026-11-03 | 111 |  | 95d |  |
| 200 |  | S1 - DORMITORIOS-VESTIDOR-PASILLOS-BALCONES (Porcelanato Simil Madera 60x120) | 30d | 2026-09-22 | 2026-11-03 | 111 |  | 95d |  |
| 201 |  | S3 - BAÑOS (Porcelanato de 60x120 - a definir) | 30d | 2026-09-22 | 2026-11-03 | 111 |  | 92d |  |
| 202 | 1.4.30 | **REVESTIMIENTOS EXTERIORES** | 83d | 2026-08-27 | 2026-12-24 |  |  | 60d |  |
| 203 |  | R5 - rev. Texturado plástico color gris oscuro tono a definir - ext | 20d | 2026-11-16 | 2026-12-15 | 236SS-7d |  | 60d |  |
| 204 |  | R6 - rev. De piedra formato natural de color a definir - ext | 20d | 2026-08-27 | 2026-09-23 | 129 |  | 123d |  |
| 205 |  | R5 - rev. Texturado plástico color gris oscuro tono a definir - ext | 20d | 2026-11-16 | 2026-12-15 | 236SS-7d |  | 67d |  |
| 206 |  | R6 - rev. De piedra formato natural de color a definir - ext | 20d | 2026-08-27 | 2026-09-23 | 129 |  | 123d |  |
| 207 |  | R8 - rev. De ladrillos refractarios - ext | 3d | 2026-11-04 | 2026-11-06 | 201 |  | 92d |  |
| 208 |  | R11 - rev. Tipo wpc simil madera - ext | 5d | 2026-12-16 | 2026-12-22 | 203 |  | 62d |  |
| 209 |  | R10 - rev. De hormigón visto - ext | 7d | 2026-12-16 | 2026-12-24 | 203 |  | 60d |  |
| 210 |  | R11 - rev. Tipo wpc simil madera - ext | 5d | 2026-12-16 | 2026-12-22 | 203 |  | 62d |  |

| ID | WBS | Task | Duration | Start | Finish | Predecessors | Total float | Constraint |
| --- | --- | --- | --- | --- | --- | --- | --- | --- |
| 211 | 1.4.31 | **PISOS EXTERIORES** | 25d | 2026-11-04 | 2026-12-10 |  | 70d |  |
| 212 |  | S8 - INGRESO COCHERA - COCHERA - Adoquines de Hormigón | 25d | 2026-11-04 | 2026-12-10 | 198 | 70d |  |
| 213 |  | S2 - INGRESO PEATONAL - Cemento alisado transitable exterior | 15d | 2026-11-04 | 2026-11-25 | 198 | 80d |  |
| 214 |  | S4 - CANTEROS - Piedra partida | 15d | 2026-11-04 | 2026-11-25 | 198 | 80d |  |
| 215 |  | S5 - GALERIA PILETA Y SOLARIUM - Revestimiento Travertino | 20d | 2026-11-04 | 2026-12-02 | 198 | 75d |  |
| 216 | 1.4.32 | **ZOCALOS** | 73d | 2026-09-22 | 2027-01-07 |  | 52d |  |
| 217 |  | S8 - INGRESO COCHERA - COCHERA - Adoquines de Hormigón | 15d | 2026-12-16 | 2027-01-07 | 236FS+5d | 52d |  |
| 218 |  | S5 - GALERIA PILETA Y SOLARIUM - Revestimiento Travertino | 5d | 2026-12-16 | 2026-12-22 | 236FS+5d | 62d |  |
| 219 |  | S1 - COCINA-LIVING-COMEDOR-PASILLO-DESPENSA (Porcelanato Simil Madera 60x120) | 15d | 2026-12-16 | 2027-01-07 | 236FS+5d | 52d |  |
| 220 |  | S3 - LAVADERO-TOILETTE-TENDER (Porcelanato de 60x120 - a definir) | 15d | 2026-12-16 | 2027-01-07 | 236FS+5d | 52d |  |
| 221 |  | S1 - DORMITORIOS-VESTIDOR-PASILLOS-BALCONES (Porcelanato Simil Madera 60x120) | 15d | 2026-12-16 | 2027-01-07 | 236FS+5d | 52d |  |
| 222 |  | S3 - BAÑOS (Porcelanato de 60x120 - a definir) | 15d | 2026-12-16 | 2027-01-07 | 236FS+5d | 52d |  |
| 223 |  | Banquinas | 7d | 2026-09-22 | 2026-09-30 | 108 | 118d |  |
| 224 | 1.4.33 | **PINTURA INTERIOR** | 27d | 2026-11-05 | 2026-12-15 |  | 27d |  |
| 225 |  | LATEX INTERIOR PSB | 20d | 2026-11-16 | 2026-12-15 | 236SS-7d | 34d |  |
| 226 |  | LATEX INTERIOR PB | 20d | 2026-11-16 | 2026-12-15 | 236SS-7d | 20d |  |
| 227 |  | LATEX INTERIOR PA | 20d | 2026-11-16 | 2026-12-15 | 236SS-7d | 34d |  |
| 228 |  | LATEX CIELORRASO | 20d | 2026-11-16 | 2026-12-15 | 236SS-7d | 34d |  |
| 229 |  | LATEX CIELORRASO | 20d | 2026-11-16 | 2026-12-15 | 236SS-7d | 34d |  |
| 230 |  | ENDUIDO INTERIOR | 7d | 2026-11-05 | 2026-11-16 | 225SF | 54d |  |
| 231 | 1.4.34 | **PINTURA EXTERIOR** | 5d | 2026-11-19 | 2026-11-26 |  | 76d |  |
| 232 |  | ESMALTE SINTÉTICO | 5d | 2026-11-19 | 2026-11-26 | 236SF | 76d |  |
| 233 | 1.4.35 | **ABERTURAS** | 92d | 2026-07-28 | 2026-12-07 |  | 1d |  |
| 234 |  | Puertas de madera | 4d | 2026-12-02 | 2026-12-07 | 235 | 72d |  |
| 235 |  | Puertas de aluminio | 4d | 2026-11-26 | 2026-12-01 | 238 | 72d |  |
| 236 |  | Aberturas de aluminio* | 8d | 2026-11-26 | 2026-12-07 | 238 | 0d |  |
| 237 |  | Colocación de premarcos | 5d | 2026-07-28 | 2026-08-03 | 128FS-11d | 1d |  |
| 238 |  | Medición y fabricaciónde premarcos | 3d | 2026-11-23 | 2026-11-25 | 237FS+110ed | 0d |  |
| 239 | 1.4.36 | **VARIOS** | 350d? | 2025-09-22 | 2027-02-17 |  | 24d |  |
| 240 |  | PISCINA con desborde infinito* | 20d | 2026-12-31 | 2027-01-28 | 236FS+15d | 37d |  |
| 241 |  | Pérgola de listones de madera* | 1d? | 2025-09-22 | 2025-09-22 |  | 373d | start no earlier than 2025-09-22 |
| 242 |  | Pozo de agua | 3d | 2026-12-31 | 2027-01-05 | 236FS+15d | 54d |  |
| 243 |  | Instalación de artefactos electricos | 3d | 2026-12-23 | 2026-12-28 | 246 | 59d |  |
| 244 |  | Instalación de artefactos sanitarios | 3d | 2027-02-15 | 2027-02-17 | 245 | 24d |  |
| 245 |  | Mesadas colocación | 5d | 2027-02-05 | 2027-02-12 | 246FS+30d | 0d |  |
| 246 |  | Muebles colocación | 5d | 2026-12-16 | 2026-12-22 | 236FS+5d | 0d |  |
| 247 | 1.4.37 | **Instalaciones Calefacción** | 43d | 2026-08-11 | 2026-10-09 |  | 77d |  |
| 248 |  | Colector | 15d | 2026-09-21 | 2026-10-09 | 135 | 111d |  |
| 249 |  | Piso radiante planta baja | 15d | 2026-08-11 | 2026-09-01 | 176 | 139d |  |
| 250 |  | Piso radiante planta alta | 15d | 2026-08-21 | 2026-09-10 | 176FS+7d | 70d |  |
| 251 |  | Firma Acta recepcion Provisoria | 0d | 2027-03-23 | 2027-03-23 | 11 | 0d |  |
| 252 |  | Posventa | 12emo | 2027-03-23 | 2028-03-17 | 251 | 0d |  |

## Version 2 (saved 2026-09-26)

Last finish 2028-03-17 → 2028-04-10 (+24d). Complete tasks 98 → 114.

Added:

| ID | Task | Duration | Start | Finish | Predecessors | Resources |
| --- | --- | --- | --- | --- | --- | --- |
| 137 | Cielorraso de madera | 22d | 2026-10-12 | 2026-11-10 | 154 | Alexandra Arevalo |
| 159 | Adicional - Conducto de Horno | 5d | 2026-08-25 | 2026-08-31 | 139 | Alexandra Arevalo |
| 176 | Adicional - Instalación Horno Asador | 11d | 2026-08-10 | 2026-08-24 | 139FF | Alexandra Arevalo |

Removed: 167 Colocación de 1 cámara séptica (según detalle técnico)

Changed:

| ID | Task | Start | Finish | Duration | Complete | Total float | Predecessors | Other |
| --- | --- | --- | --- | --- | --- | --- | --- | --- |
| 1 | **VIVIENDAS HERMANOS ROSSI** |  | 2028-03-17 → 2028-04-10 (+24d) | 680d? → 695d? | 33% → 41% |  |  |  |
| 11 | **CRONOGRAMA VIVIENDA ROSSI** |  | 2027-03-23 → 2027-04-16 (+24d) | 374d? → 390d? | 48% → 61% |  |  |  |
| 33 | **COLUMNAS + ENCADENADOS VERTICALES** |  | 2026-05-21 A |  | 63% → 100% | 209d → none |  |  |
| 43 | ✔C1 (19 columnas) | 2026-04-28 A | 2026-05-21 A |  | 0% → 100% | 209d → none |  |  |
| 44 | ✔C2 (2 columnas) | 2026-04-28 A | 2026-05-21 A |  | 0% → 100% | 209d → none |  |  |
| 45 | ✔C3 (2 columnas) | 2026-04-28 A | 2026-05-21 A |  | 0% → 100% | 209d → none |  |  |
| 46 | ✔C4 (3 columnas) | 2026-04-28 A | 2026-05-21 A |  | 0% → 100% | 209d → none |  |  |
| 48 | ✔Ce (17 columnas) | 2026-04-28 A | 2026-05-21 A |  | 0% → 100% | 209d → none |  |  |
| 49 | **TABIQUES DE HORMIGON VISTO** |  | 2026-07-28 → 2026-08-28 (+31d) | 177d → 199d | 36% → 66% | 111d → 107d |  |  |
| 52 | ✔T1 - TABIQUES DE HORMIGON VISTO PA - esp: 20cm - Etapa 1 | 2026-04-28 A | 2026-07-01 A |  | 0% → 100% | 13.8d → none |  |  |
| 53 | T1 - TABIQUES DE HORMIGON VISTO PA - esp: 20cm - Etapa 2 |  | 2026-07-28 → 2026-08-28 (+31d) | 19d → 42d |  | 111d → 107d |  |  |
| 54 | **VIGAS ESTRUCTURALES + ENCADENADOS HORIZONTALES** |  | 2026-07-08 A |  | 99% → 100% | 176d → none |  |  |
| 75 | ✔V4 - 0,18 x 0,40 |  | 2026-07-08 A |  | 80% → 100% | 176d → none |  | was named V4 - 0,18 x 0,40 |
| 76 | ✔VL - 0,25 x 0,50 |  | 2026-07-08 A |  | 80% → 100% | 176d → none |  | was named VL - 0,25 x 0,50 |
| 77 | ✔VL1e - 0,25 x 0,30 |  | 2026-07-08 A |  | 80% → 100% | 176d → none |  | was named VL1e - 0,25 x 0,30 |
| 107 | **CARPETA DE NIVELACIÓN** | 2026-07-29 → 2026-10-02 (+65d) | 2026-09-21 → 2026-10-12 (+21d) | 38d → 7d |  | 101d → 71d |  |  |
| 108 | CARPETA DE NIVELACIÓN: ESP: 4 CM - INTERIOR PSS | 2026-09-11 → 2026-10-02 (+21d) | 2026-09-21 → 2026-10-12 (+21d) |  |  | 118d → 119d |  |  |
| 109 | CARPETA DE NIVELACIÓN: ESP: 4 CM - INTERIOR PB | 2026-09-11 → 2026-10-02 (+21d) | 2026-09-21 → 2026-10-12 (+21d) |  |  | 125d → 126d |  |  |
| 110 | CARPETA DE NIVELACIÓN: ESP: 4 CM - EXTERIOR PB | 2026-09-11 → 2026-10-02 (+21d) | 2026-09-21 → 2026-10-12 (+21d) |  |  | 125d → 126d |  |  |
| 111 | CARPETA DE NIVELACIÓN: ESP: 4 CM - INTERIOR PA | 2026-09-11 → 2026-10-02 (+21d) | 2026-09-21 → 2026-10-12 (+21d) |  |  | 70d → 71d |  |  |
| 112 | CARPETA DE NIVELACIÓN SOBRE CARGA CUBIERTA | 2026-07-29 → 2026-10-02 (+65d) | 2026-08-04 → 2026-10-08 (+65d) |  |  | 111d → 81d | 116 → 252 | constraint none → finish no earlier than 2026-08-28 |
| 113 | **CUBIERTA** |  | 2026-08-13 → 2026-10-20 (+68d) | 135d → 181d |  | 151d → 121d |  |  |
| 116 | Cubierta común sobre Losa - Hormigón de pendiente 10cm | 2026-07-15 → 2026-08-14 (+30d) | 2026-07-28 → 2026-08-28 (+31d) |  |  | 111d → 157d |  |  |
| 117 | IMPERMEABILIZACIÓN EN LOSA Y PARAPETOS* | 2026-08-05 → 2026-10-09 (+65d) | 2026-08-13 → 2026-10-20 (+68d) |  |  | 111d → 81d |  |  |
| 118 | **REVOQUES EXT + INT** |  | 2026-10-12 → 2026-11-03 (+22d) | 147d → 162d | 32% → 81% | 110d → 111d |  |  |
| 121 | ✔REVOQUE GRUESO C/ AZOTADO HIDROF. CEMENTICIO EN MAMP. INTERIOR | 2026-05-11 A | 2026-08-04 A |  | 0% → 100% | 158d → none |  | was named REVOQUE GRUESO C/ AZOTADO HIDROF. CEMENTICIO EN MAMP. INTERIOR |
| 123 | ✔REVOQUE GRUESO C/ AZOTADO HIDROF. CEMENTICIO EN MAMP. EXTERIOR | 2026-06-17 A | 2026-08-04 A |  | 0% → 100% | 158d → none |  | was named REVOQUE GRUESO C/ AZOTADO HIDROF. CEMENTICIO EN MAMP. EXTERIOR |
| 124 | REVOQUE GRUESO C/ AZOTADO HIDROF. CEMENTICIO EN MAMP. EXTERIOR | 2026-06-17 → 2026-07-30 A (+43d) | 2026-08-04 → 2026-08-14 A (+10d) | 34d → 12d | 0% → 100% | 158d → none | 95, 96FS+62d → 95, 96FS+92d |  |
| 125 | ✔REVOQUE GRUESO C/ AZOTADO HIDROF. CEMENTICIO EN MAMP. INTERIOR | 2026-06-17 A | 2026-08-04 A |  | 0% → 100% | 158d → none |  | was named REVOQUE GRUESO C/ AZOTADO HIDROF. CEMENTICIO EN MAMP. INTERIOR |
| 126 | REVOQUE FINO EXTERIOR | 2026-09-22 → 2026-10-14 (+22d) | 2026-10-12 → 2026-11-03 (+22d) |  |  | 110d → 111d |  |  |
| 127 | REVOQUE GRUESO C/ AZOTADO HIDROF. CEMENTICIO EN MAMP. EXTERIOR | 2026-05-28 → 2026-07-13 (+46d) | 2026-08-11 → 2026-08-14 (+3d) | 53d → 25d |  | 153d → 0d | 98, 99 → 124FF |  |
| 128 | REVOQUE GRUESO C/ AZOTADO HIDROF. CEMENTICIO EN MAMP. INTERIOR | 2026-05-28 → 2026-07-27 (+60d) | 2026-08-11 → 2026-08-31 (+20d) | 53d → 25d |  | 1d → 0d | 98, 99 → 127FF+10d |  |
| 129 | ✔IMPERMEABILIZACIÓN P/ PIEDRAS | 2026-08-20 → 2026-06-23 A (-58d) | 2026-08-26 → 2026-06-29 A (-58d) |  | 0% → 100% | 123d → none | 84FS+40d → 84 | was named IMPERMEABILIZACIÓN P/ PIEDRAS |
| 130 | **ENGROSADO + ENLUCIDO DE YESO** | 2026-08-14 → 2026-10-21 (+68d) | 2026-09-04 → 2026-11-10 (+67d) |  |  | 111d → 81d |  |  |
| 131 | ENGROSADO + ENLUCIDO YESO | 2026-08-14 → 2026-10-21 (+68d) | 2026-09-04 → 2026-11-10 (+67d) |  |  | 111d → 81d |  |  |
| 132 | ENGROSADO + ENLUCIDO YESO | 2026-08-14 → 2026-10-21 (+68d) | 2026-09-04 → 2026-11-10 (+67d) |  |  | 136d → 106d |  |  |
| 133 | ENGROSADO + ENLUCIDO YESO | 2026-08-14 → 2026-10-21 (+68d) | 2026-09-04 → 2026-11-10 (+67d) |  |  | 136d → 106d |  |  |
| 134 | **CIELORRASO** | 2026-09-07 → 2026-10-12 (+35d) | 2026-09-18 → 2026-11-25 (+68d) | 10d → 31d |  | 111d → 96d |  |  |
| 135 | C2 - Cielorraso suspendido de placa de durock | 2026-09-07 → 2026-11-11 (+65d) | 2026-09-18 → 2026-11-25 (+68d) |  |  | 111d → 81d |  |  |
| 136 | C6 - Cajón de durlock | 2026-09-07 → 2026-11-11 (+65d) | 2026-09-18 → 2026-11-25 (+68d) |  |  | 126d → 96d |  |  |
| 138 | **ASADOR** | 2026-07-15 → 2026-08-10 (+26d) | 2026-07-17 → 2026-08-24 (+38d) | 3d → 10d |  | 170d → 156d |  |  |
| 139 | ASADOR y Horno adicional | 2026-07-15 → 2026-08-10 (+26d) | 2026-07-17 → 2026-08-24 (+38d) | 3d → 10d |  | 170d → 156d |  | was named ASADOR; constraint start no earlier than 2026-07-15 → start no earlier than 2026-08-10 |
| 143 | **COLUMNAS Y VIGAS METÁLICAS** |  | 2026-09-25 → 2026-10-28 (+33d) | 123d → 145d |  | 121d → 115d |  |  |
| 147 | Viga Met. - IPN300 | 2026-07-29 → 2026-08-31 (+33d) | 2026-08-17 → 2026-09-17 (+31d) |  |  | 149d → 143d |  |  |
| 149 | Viga Met. - IPN300 + UPN300 | 2026-07-29 → 2026-08-31 (+33d) | 2026-08-17 → 2026-09-17 (+31d) |  |  | 149d → 143d |  |  |
| 152 | Escalera con nervio central de IPN 300, con descanso (ver distribucion en plano) (9,3 m de IPN) | 2026-08-31 → 2026-09-30 (+30d) | 2026-09-25 → 2026-10-28 (+33d) |  |  | 121d → 107d |  |  |
| 153 | Escalera con nervio central de IPN 300, con descanso (ver distribucion en plano) (9,3 m de IPN) | 2026-08-31 → 2026-09-30 (+30d) | 2026-09-25 → 2026-10-28 (+33d) |  |  | 121d → 115d |  |  |
| 154 | **CUBIERTA METÁLICA** | 2026-08-11 → 2026-09-11 (+31d) | 2026-09-09 → 2026-10-09 (+30d) |  |  | 133d → 107d |  |  |
| 155 | Cubierta Liviana Metálica - pend. 2% - escur. a canaleta - chapa sinusoidal | 2026-08-11 → 2026-09-11 (+31d) | 2026-09-09 → 2026-10-09 (+30d) |  |  | 133d → 107d |  |  |
| 156 | Cubierta Liviana Metálica - pend. 15% - escur. a canaleta - chapa sinusoidal (ver planos) | 2026-08-11 → 2026-09-11 (+31d) | 2026-09-09 → 2026-10-09 (+30d) |  |  | 133d → 107d |  |  |
| 157 | **CONDUCTOS METÁLICOS** |  | 2026-04-27 A → 2026-08-31 (+126d) | 3d → 89d | 100% → 38% | none → 156d |  |  |
| 160 | **CERRAMIENTO METÁLICOS** | 2026-11-26 → 2026-12-21 (+25d) | 2026-12-01 → 2026-12-24 (+23d) |  |  |  |  |  |
| 161 | Cerramiento en Ventana Toilette (perfiles en vertical separados entre ellos 25 cm) | 2026-11-26 → 2026-12-21 (+25d) | 2026-12-01 → 2026-12-24 (+23d) |  |  |  |  |  |
| 162 | **PORTON METALICO COCHERA** | 2026-12-09 → 2027-01-04 (+26d) | 2026-12-14 → 2027-01-07 (+24d) |  |  |  |  |  |
| 163 | Portón metálico de la cochera (2,50m x 8,60m) | 2026-12-09 → 2027-01-04 (+26d) | 2026-12-14 → 2027-01-07 (+24d) |  |  |  |  |  |
| 164 | **INSTALACIONES PLUVIALES** | 2026-01-21 A | 2026-07-15 → 2026-09-10 (+57d) | 120d → 160d | 0% → 79% | 172d → 148d |  |  |
| 165 | Desagues pluviales (sin zinguería) | 2026-01-21 A | 2026-07-15 → 2026-09-10 (+57d) | 120d → 160d | 0% → 79% | 172d → 148d |  |  |
| 166 | **INSTALACIONES CLOACALES** | 2026-06-11 A | 2026-07-30 → 2026-07-23 A (-7d) | 35d → 30d | 0% → 100% | 161d → none |  |  |
| 167 | ✔Instalación de cloacas para un baño en PB y tres baños en PA, pileta de cocina, pileta de lavadero, lavavajilla, lavarropas. | 2026-06-11 A | 2026-07-16 A |  | 0% → 100% | 161d → none |  | was named Instalación de cloacas para un baño en PB y tres baños en PA, pileta de cocina, pileta de lavadero, lavavajilla, lavarropas. |
| 168 | ✔Colocación de 5 cámara de inspección (según detalle técnico) | 2026-07-17 A | 2026-07-23 A |  | 0% → 100% | 161d → none |  | was named Colocación de 5 cámara de inspección (según detalle técnico) |
| 169 | **INSTALACIONES AGUA** | 2026-06-11 A | 2027-01-04 → 2027-01-26 (+22d) | 141d → 157d | 0% → 32% |  |  |  |
| 170 | Instalación de agua fría y caliente para un baño PB y tres en PA, pileta de cocina, pileta de lavadero, lavavajilla, lavarropas. | 2026-06-11 A | 2026-07-16 → 2026-08-21 (+36d) | 25d → 50d | 0% → 40% | 166d → 157d |  |  |
| 171 | Alimentación de agua para válvulas de inodoros desde tanques | 2026-07-17 → 2026-08-24 (+38d) | 2026-07-23 → 2026-08-28 (+36d) |  |  | 166d → 157d |  |  |
| 172 | Alimentación de agua a tanques y canillas en patio | 2026-07-17 → 2026-08-24 (+38d) | 2026-07-23 → 2026-08-28 (+36d) |  |  | 166d → 157d |  |  |
| 173 | Instalación de bomba hidroneumática bajo tanque | 2026-12-31 → 2027-01-25 (+25d) | 2027-01-04 → 2027-01-26 (+22d) |  |  |  |  |  |
| 174 | **INSTALACIONES GAS** |  | 2027-03-23 → 2027-04-16 (+24d) | 214d → 230d | 18% → 16% |  |  |  |
| 175 | ✔Instalación de gas para anafe, horno, termotanque |  |  |  |  |  |  | was named Instalación de gas para anafe, horno, termotanque |
| 179 | Solicitud de servicio domiciliario (no incluye aranceles Ecogas) | 2027-03-15 → 2027-04-08 (+24d) | 2027-03-23 → 2027-04-16 (+24d) |  |  |  |  |  |
| 180 | Final de gas con artefactos colocados | 2027-02-22 → 2027-03-16 (+22d) | 2027-03-12 → 2027-04-07 (+26d) |  |  |  |  |  |
| 182 | **INSTALACION A°A° Y CALEFACCIÓN CENTRALIZADO (POR CONDUCTOS)** | 2026-07-17 → 2026-10-01 (+76d) | 2027-02-23 → 2027-03-17 (+22d) | 151d → 114d |  |  |  |  |

| ID | Task | Start | Finish | Duration | Complete | Total float | Predecessors | Other |
| --- | --- | --- | --- | --- | --- | --- | --- | --- |
| 183 | 1 EQUIPO CON 6 CONDUCTOS | 2027-02-15 → 2027-03-09 (+22d) | 2027-02-23 → 2027-03-17 (+22d) |  |  |  |  |  |
| 184 | 2 EQUIPOS CON 4 CONDUCTOS CADA EQUIPO | 2027-02-15 → 2027-03-09 (+22d) | 2027-02-23 → 2027-03-17 (+22d) |  |  |  |  |  |
| 185 | Instalación Aire central PB y PA | 2026-07-17 → 2026-10-01 (+76d) | 2026-07-27 → 2026-10-15 (+80d) | 7d → 10d |  | 164d → 124d | 167 → none | was named KIT INSTALACIÓN AA; constraint none → start no earlier than 2026-10-01 |
| 186 | **INSTALACION ELÉCTRICA** |  | 2027-02-02 → 2027-02-25 (+23d) | 265d → 281d | 46% → 53% |  |  |  |
| 192 | AMURADO DE CAJAS Y CANALIZACIÓN EN MUROS | 2026-07-01 → 2026-07-06 A (+5d) | 2026-07-22 → 2026-08-17 (+26d) | 15d → 30d | 0% → 50% | 167d → 165d |  |  |
| 194 | CABLEADO GENERAL 220V | 2026-12-16 → 2027-01-11 (+26d) | 2027-01-07 → 2027-01-29 (+22d) |  |  |  |  |  |
| 195 | GUIAS TESTIGOS DE SEÑALES DÉBILES | 2026-12-09 → 2027-01-04 (+26d) | 2026-12-22 → 2027-01-15 (+24d) |  |  |  |  |  |
| 196 | ARMADO DE INTERRUPTORES Y TOMAS | 2027-01-15 → 2027-02-08 (+24d) | 2027-01-28 → 2027-02-22 (+25d) |  |  |  |  |  |
| 197 | ARMADO DEL TABLERO GENERAL | 2027-01-29 → 2027-02-23 (+25d) | 2027-02-02 → 2027-02-25 (+23d) |  |  |  |  |  |
| 198 | ARMADO DEL PILAR Y TABLERO DE OBRA TRIFÁSICO | 2027-01-29 → 2027-02-23 (+25d) | 2027-02-01 → 2027-02-24 (+23d) |  |  |  |  |  |
| 199 | **PISOS INTERIORES** | 2026-09-22 → 2026-10-14 (+22d) | 2026-11-03 → 2026-11-25 (+22d) |  |  | 70d → 71d |  |  |
| 200 | S1 - COCINA-LIVING-COMEDOR-PASILLO-DESPENSA (Porcelanato Simil Madera 60x120) | 2026-09-22 → 2026-10-14 (+22d) | 2026-11-03 → 2026-11-25 (+22d) |  |  | 70d → 71d |  |  |
| 201 | S3 - LAVADERO Y TOILETTE (Porcelanato de 60x120 - a definir) | 2026-09-22 → 2026-10-14 (+22d) | 2026-11-03 → 2026-11-25 (+22d) |  |  | 95d → 96d |  |  |
| 202 | S1 - DORMITORIOS-VESTIDOR-PASILLOS-BALCONES (Porcelanato Simil Madera 60x120) | 2026-09-22 → 2026-10-14 (+22d) | 2026-11-03 → 2026-11-25 (+22d) |  |  | 95d → 96d |  |  |
| 203 | S3 - BAÑOS (Porcelanato de 60x120 - a definir) | 2026-09-22 → 2026-10-14 (+22d) | 2026-11-03 → 2026-11-25 (+22d) |  |  | 92d → 93d |  |  |
| 204 | **REVESTIMIENTOS EXTERIORES** | 2026-08-27 → 2026-08-17 (-10d) | 2026-12-24 → 2027-01-19 (+26d) | 83d → 106d |  |  |  |  |
| 205 | R5 - rev. Texturado plástico color gris oscuro tono a definir - ext | 2026-11-16 → 2026-12-10 (+24d) | 2026-12-15 → 2027-01-08 (+24d) |  |  |  |  |  |
| 206 | R6 - rev. De piedra formato natural de color a definir - ext | 2026-08-27 → 2026-08-17 (-10d) | 2026-09-23 → 2026-09-14 (-9d) |  |  | 123d → 146d | 129 → 129FS+33d |  |
| 207 | R5 - rev. Texturado plástico color gris oscuro tono a definir - ext | 2026-11-16 → 2026-12-10 (+24d) | 2026-12-15 → 2027-01-08 (+24d) |  |  |  |  |  |
| 208 | R6 - rev. De piedra formato natural de color a definir - ext | 2026-08-27 → 2026-08-17 (-10d) | 2026-09-23 → 2026-09-14 (-9d) |  |  | 123d → 146d | 129 → 206SS |  |
| 209 | R8 - rev. De ladrillos refractarios - ext | 2026-11-04 → 2026-11-26 (+22d) | 2026-11-06 → 2026-11-30 (+24d) |  |  | 92d → 93d |  |  |
| 210 | R11 - rev. Tipo wpc simil madera - ext | 2026-12-16 → 2027-01-11 (+26d) | 2026-12-22 → 2027-01-15 (+24d) |  |  |  |  |  |
| 211 | R10 - rev. De hormigón visto - ext | 2026-12-16 → 2027-01-11 (+26d) | 2026-12-24 → 2027-01-19 (+26d) |  |  |  |  |  |
| 212 | R11 - rev. Tipo wpc simil madera - ext | 2026-12-16 → 2027-01-11 (+26d) | 2026-12-22 → 2027-01-15 (+24d) |  |  |  |  |  |
| 213 | **PISOS EXTERIORES** | 2026-11-04 → 2026-11-26 (+22d) | 2026-12-10 → 2027-01-04 (+25d) |  |  | 70d → 71d |  |  |
| 214 | S8 - INGRESO COCHERA - COCHERA - Adoquines de Hormigón | 2026-11-04 → 2026-11-26 (+22d) | 2026-12-10 → 2027-01-04 (+25d) |  |  | 70d → 71d |  |  |
| 215 | S2 - INGRESO PEATONAL - Cemento alisado transitable exterior | 2026-11-04 → 2026-11-26 (+22d) | 2026-11-25 → 2026-12-17 (+22d) |  |  | 80d → 81d |  |  |
| 216 | S4 - CANTEROS - Piedra partida | 2026-11-04 → 2026-11-26 (+22d) | 2026-11-25 → 2026-12-17 (+22d) |  |  | 80d → 81d |  |  |
| 217 | S5 - GALERIA PILETA Y SOLARIUM - Revestimiento Travertino | 2026-11-04 → 2026-11-26 (+22d) | 2026-12-02 → 2026-12-24 (+22d) |  |  | 75d → 76d |  |  |
| 218 | **ZOCALOS** | 2026-09-22 → 2026-10-14 (+22d) | 2027-01-07 → 2027-01-29 (+22d) | 73d → 74d |  |  |  |  |
| 219 | S8 - INGRESO COCHERA - COCHERA - Adoquines de Hormigón | 2026-12-16 → 2027-01-11 (+26d) | 2027-01-07 → 2027-01-29 (+22d) |  |  |  |  |  |
| 220 | S5 - GALERIA PILETA Y SOLARIUM - Revestimiento Travertino | 2026-12-16 → 2027-01-11 (+26d) | 2026-12-22 → 2027-01-15 (+24d) |  |  |  |  |  |
| 221 | S1 - COCINA-LIVING-COMEDOR-PASILLO-DESPENSA (Porcelanato Simil Madera 60x120) | 2026-12-16 → 2027-01-11 (+26d) | 2027-01-07 → 2027-01-29 (+22d) |  |  |  |  |  |
| 222 | S3 - LAVADERO-TOILETTE-TENDER (Porcelanato de 60x120 - a definir) | 2026-12-16 → 2027-01-11 (+26d) | 2027-01-07 → 2027-01-29 (+22d) |  |  |  |  |  |
| 223 | S1 - DORMITORIOS-VESTIDOR-PASILLOS-BALCONES (Porcelanato Simil Madera 60x120) | 2026-12-16 → 2027-01-11 (+26d) | 2027-01-07 → 2027-01-29 (+22d) |  |  |  |  |  |
| 224 | S3 - BAÑOS (Porcelanato de 60x120 - a definir) | 2026-12-16 → 2027-01-11 (+26d) | 2027-01-07 → 2027-01-29 (+22d) |  |  |  |  |  |
| 225 | Banquinas | 2026-09-22 → 2026-10-14 (+22d) | 2026-09-30 → 2026-10-22 (+22d) |  |  | 118d → 119d |  |  |
| 226 | **PINTURA INTERIOR** | 2026-11-05 → 2026-11-30 (+25d) | 2026-12-15 → 2027-01-08 (+24d) |  |  |  |  |  |
| 227 | LATEX INTERIOR PSB | 2026-11-16 → 2026-12-10 (+24d) | 2026-12-15 → 2027-01-08 (+24d) |  |  |  |  |  |
| 228 | LATEX INTERIOR PB | 2026-11-16 → 2026-12-10 (+24d) | 2026-12-15 → 2027-01-08 (+24d) |  |  |  |  |  |
| 229 | LATEX INTERIOR PA | 2026-11-16 → 2026-12-10 (+24d) | 2026-12-15 → 2027-01-08 (+24d) |  |  |  |  |  |
| 230 | LATEX CIELORRASO | 2026-11-16 → 2026-12-10 (+24d) | 2026-12-15 → 2027-01-08 (+24d) |  |  |  |  |  |
| 231 | LATEX CIELORRASO | 2026-11-16 → 2026-12-10 (+24d) | 2026-12-15 → 2027-01-08 (+24d) |  |  |  |  |  |
| 232 | ENDUIDO INTERIOR | 2026-11-05 → 2026-11-30 (+25d) | 2026-11-16 → 2026-12-10 (+24d) |  |  |  |  |  |
| 233 | **PINTURA EXTERIOR** | 2026-11-19 → 2026-12-14 (+25d) | 2026-11-26 → 2026-12-21 (+25d) |  |  |  |  |  |
| 234 | ESMALTE SINTÉTICO | 2026-11-19 → 2026-12-14 (+25d) | 2026-11-26 → 2026-12-21 (+25d) |  |  |  |  |  |
| 235 | **ABERTURAS** | 2026-07-28 → 2026-08-21 (+24d) | 2026-12-07 → 2026-12-31 (+24d) | 92d → 91d |  | 1d → 0d |  |  |
| 236 | Puertas de madera | 2026-12-02 → 2026-12-28 (+26d) | 2026-12-07 → 2026-12-31 (+24d) |  |  |  |  |  |
| 237 | Puertas de aluminio | 2026-11-26 → 2026-12-21 (+25d) | 2026-12-01 → 2026-12-24 (+23d) |  |  |  |  |  |
| 238 | Aberturas de aluminio* | 2026-11-26 → 2026-12-21 (+25d) | 2026-12-07 → 2026-12-31 (+24d) |  |  |  |  |  |
| 239 | Colocación de premarcos | 2026-07-28 → 2026-08-21 (+24d) | 2026-08-03 → 2026-08-27 (+24d) |  |  | 1d → 0d | 128FS-11d → 128FS-7d |  |
| 240 | Medición y fabricaciónde premarcos | 2026-11-23 → 2026-12-16 (+23d) | 2026-11-25 → 2026-12-18 (+23d) |  |  |  |  |  |
| 241 | **VARIOS** |  | 2027-02-17 → 2027-03-11 (+22d) | 350d? → 366d? |  |  |  |  |
| 242 | PISCINA con desborde infinito* | 2026-12-31 → 2027-01-25 (+25d) | 2027-01-28 → 2027-02-22 (+25d) |  |  |  |  |  |
| 244 | Pozo de agua | 2026-12-31 → 2027-01-25 (+25d) | 2027-01-05 → 2027-01-27 (+22d) |  |  |  |  |  |
| 245 | Instalación de artefactos electricos | 2026-12-23 → 2027-01-18 (+26d) | 2026-12-28 → 2027-01-20 (+23d) |  |  |  |  |  |
| 246 | Instalación de artefactos sanitarios | 2027-02-15 → 2027-03-09 (+22d) | 2027-02-17 → 2027-03-11 (+22d) |  |  |  |  |  |
| 247 | Mesadas colocación | 2027-02-05 → 2027-03-02 (+25d) | 2027-02-12 → 2027-03-08 (+24d) |  |  |  |  |  |
| 248 | Muebles colocación | 2026-12-16 → 2027-01-11 (+26d) | 2026-12-22 → 2027-01-15 (+24d) |  |  |  |  |  |
| 249 | **Instalaciones Calefacción** | 2026-08-11 → 2026-09-16 (+36d) | 2026-10-09 → 2026-12-17 (+69d) | 43d → 64d |  | 77d → 71d |  |  |
| 250 | Colector | 2026-09-21 → 2026-11-26 (+66d) | 2026-10-09 → 2026-12-17 (+69d) |  |  | 111d → 81d |  |  |
| 251 | Piso radiante planta baja | 2026-08-11 → 2026-09-16 (+36d) | 2026-09-01 → 2026-09-22 (+21d) | 15d → 5d |  | 139d → 71d | 178 → 178FS+25d |  |
| 252 | Piso radiante planta alta | 2026-08-21 → 2026-09-23 (+33d) | 2026-09-10 → 2026-10-01 (+21d) | 15d → 7d |  | 70d → 71d | 178FS+7d → 251 |  |
| 253 | Firma Acta recepcion Provisoria | 2027-03-23 → 2027-04-16 (+24d) | 2027-03-23 → 2027-04-16 (+24d) |  |  |  |  |  |
| 254 | Posventa | 2027-03-23 → 2027-04-16 (+24d) | 2028-03-17 → 2028-04-10 (+24d) |  |  |  |  |  |
