# Vivienda Venturelli - Bernal

How a schedule from MS Project XML changed from version to version. A marks actual dates.

## Version 1 (saved 2026-07-16, file Vivienda Venturelli - Bernal.xml)

| ID | WBS | Task | Duration | Start | Finish | Predecessors | Complete | Total float | Constraint |
| --- | --- | --- | --- | --- | --- | --- | --- | --- | --- |
| 1 | 1 | **Vivienda Venturelli - Bernal** | 404d? | 2026-06-01 A | 2028-01-09 |  | 1% | 0d |  |
| 2 |  | Obra Vivienda Venturelli - Bernal Contratada | 210d | 2026-06-01 | 2027-04-01 | 4SS |  | 0d | must start on 2026-06-01 |
| 3 |  | Obra Vivienda Venturelli - Bernal | 0d | 2026-06-01 A | 2026-06-01 A | 4FF | 100% |  |  |
| 4 | 1.3 | **OBRA VIVIENDA VENTURELLI - BERNAL** | 156.4d? | 2026-06-01 A | 2027-01-14 |  | 5% | 247.6d |  |
| 5 | 1.3.1 | **TAREAS PRELIMINARES** | 4.5d | 2026-06-01 A | 2026-06-05 A |  | 100% |  |  |
| 6 |  | Estudio de Suelos | 3d | 2026-06-01 A | 2026-06-03 A |  | 100% |  | start no earlier than 2026-06-01 |
| 7 |  | Calculo Estructural | 3d | 2026-06-01 A | 2026-06-03 A |  | 100% |  | start no earlier than 2026-06-01 |
| 8 |  | Cerco Perimetral | 2d | 2026-06-02 A | 2026-06-03 A |  | 100% |  |  |
| 9 |  | Replanteo de Obra | 1.5d | 2026-06-04 A | 2026-06-05 A | 13 | 100% |  | start no earlier than 2026-04-27 |
| 10 | 1.3.2 | **CONFORMACIÓN DE TERRENO** | 58.4d | 2026-06-02 A | 2026-08-25 |  | 36% | 325.6d |  |
| 11 |  | Extracción de árboles | 2d | 2026-06-02 A | 2026-06-03 A |  | 100% |  | start no earlier than 2026-06-02 |
| 12 |  | Demora por clima | 4d | 2026-06-04 | 2026-06-09 | 11 |  | 0d |  |
| 13 |  | Excavación terreno | 3d | 2026-06-10 A | 2026-06-12 A | 12 | 100% |  |  |
| 14 |  | Relleno de terreno | 5d | 2026-08-17 | 2026-08-25 | 74 |  | 325.6d |  |
| 15 | 1.3.3 | **ESTRUCTURA Y ALBAÑILERIA** | 151.9d | 2026-06-05 A | 2027-01-14 |  | 1% | 247.6d |  |
| 16 | 1.3.3.1 | **Pilotes de H°** | 23.5d | 2026-06-05 A | 2026-07-08 |  | 14% | 376d |  |
| 17 |  | EXCAVACIÓN DE PILOTES* (presupuesto prov. por empresa tercerizada) - 41 pilotes con ensanche mecánico p/ campana | 9d | 2026-06-25 | 2026-07-07 | 18 |  | 0d |  |
| 18 |  | Demora por conflicto externo con empresa pilotera | 11d | 2026-06-10 | 2026-06-24 | 12 |  | 0d |  |
| 19 |  | Armadura y llenado de H° | 12d | 2026-06-05 A | 2026-06-23 | 9 | 40% | 387.5d |  |
| 20 |  | Hormigón de pozos | 1d | 2026-07-01 | 2026-07-02 | 17SF+6% |  | 0d |  |
| 21 |  | Hormigón de pozos 2da etapa | 1d | 2026-07-08 | 2026-07-08 | 17 |  | 376d |  |
| 22 | 1.3.3.2 | **Zapata Continua** | 8d | 2026-07-08 | 2026-07-21 |  |  | 368.6d |  |
| 23 |  | CAB 01 - 60x60 | 8d | 2026-07-08 | 2026-07-21 | 28FF |  | 368.6d |  |
| 24 |  | CAB 02 - 110x80 | 8d | 2026-07-08 | 2026-07-21 | 28FF |  | 368.6d |  |
| 25 |  | CAB 03 - 120x80 | 8d | 2026-07-08 | 2026-07-21 | 28FF |  | 368.6d |  |
| 26 | 1.3.3.3 | **Vigas de Fundación y Riostra** | 13d | 2026-07-02 | 2026-07-22 |  |  | 0d |  |
| 27 |  | Excavación de vigas | 7d | 2026-07-02 | 2026-07-14 | 20 |  | 0d |  |
| 28 |  | Viga de Fundación - VF1 - (25x40) | 5d | 2026-07-14 | 2026-07-21 | 27 |  | 0d |  |
| 29 |  | Viga de Fundación - VF2 - (40x25) | 5d | 2026-07-14 | 2026-07-21 | 27 |  | 368.6d |  |
| 30 |  | Viga de Fundación - VF3 - (60x25) | 5d | 2026-07-14 | 2026-07-21 | 27 |  | 368.6d |  |
| 31 |  | Viga de Fundación - VF4 - (60x40) | 5d | 2026-07-14 | 2026-07-21 | 27 |  | 368.6d |  |
| 32 |  | Viga Riostra VR01 (25x25) | 5d | 2026-07-14 | 2026-07-21 | 27 |  | 368.6d |  |
| 33 |  | Hormigón de riostra | 1d | 2026-07-21 | 2026-07-22 | 28 |  | 0d |  |
| 34 | 1.3.3.4 | **Columnas.** | 5d | 2026-08-13 | 2026-08-21 |  |  | 346.6d |  |
| 35 | 1.3.3.4.1 | **Planta Baja** | 5d | 2026-08-13 | 2026-08-21 |  |  | 346.6d |  |
| 36 |  | C01 - (0,18x0,25) - 12 unid | 5d | 2026-08-13 | 2026-08-21 | 68 |  | 346.6d |  |
| 37 |  | C02 - (0,18x0,76) - 5 unid | 5d | 2026-08-13 | 2026-08-21 | 68 |  | 346.6d |  |
| 38 |  | C03 - (0,20x0,20) - 26 unid | 5d | 2026-08-13 | 2026-08-21 | 68 |  | 346.6d |  |
| 39 |  | C04 - (0,18x0,38) - 1 unid | 5d | 2026-08-13 | 2026-08-21 | 68 |  | 346.6d |  |
| 40 |  | C05 - (0,18x0,58) - 2 unid | 5d | 2026-08-13 | 2026-08-21 | 68 |  | 346.6d |  |
| 41 |  | C06 - (0,27x0,20) - 2 unid | 5d | 2026-08-13 | 2026-08-21 | 68 |  | 346.6d |  |
| 42 |  | C07 - (0,40x0,40) - 2 unid | 5d | 2026-08-13 | 2026-08-21 | 68 |  | 346.6d |  |
| 43 | 1.3.3.5 | **Encadenado Vertical** | 5d | 2026-08-13 | 2026-08-21 |  |  | 346.6d |  |
| 44 | 1.3.3.5.1 | **Planta Baja** | 5d | 2026-08-13 | 2026-08-21 |  |  | 346.6d |  |
| 45 |  | CE1 - (0,18x0,18) - 52 unid | 5d | 2026-08-13 | 2026-08-21 | 68 |  | 346.6d |  |
| 46 | 1.3.3.6 | **Encadenado Horizontal** | 5d | 2026-08-13 | 2026-08-21 |  |  | 346.6d |  |
| 47 | 1.3.3.6.1 | **Planta Baja** | 5d | 2026-08-13 | 2026-08-21 |  |  | 346.6d |  |
| 48 |  | VE - (0,18x0,20) | 5d | 2026-08-13 | 2026-08-21 | 68 |  | 346.6d |  |
| 49 |  | VE2 - (0,20x0,20) | 5d | 2026-08-13 | 2026-08-21 | 68 |  | 346.6d |  |
| 50 |  | VE3 - (0,20x0,30) | 5d | 2026-08-13 | 2026-08-21 | 68 |  | 346.6d |  |
| 51 | 1.3.3.7 | **Vigas Estructurales** | 34d | 2026-09-08 | 2026-10-27 |  |  | 0d |  |
| 52 | 1.3.3.7.1 | **Planta Baja** | 5d | 2026-09-08 | 2026-09-15 |  |  | 0d |  |
| 53 |  | Vigas estructurales - (18x15),(18x21),(18x25),(18x36),(18x40),(18x46),(18x50),(18x54),(18x54),(18x60),(18x68),(18x74) | 5d | 2026-09-08 | 2026-09-15 | 69 |  | 0d |  |
| 54 |  | Vigas estructurales - (20x110),(20x150) | 5d | 2026-09-08 | 2026-09-15 | 69 |  | 329.6d |  |
| 55 |  | Vigas estructurales - (27x21),(29x110),(38x20),(50x21) | 5d | 2026-09-08 | 2026-09-15 | 69 |  | 329.6d |  |
| 56 | 1.3.3.7.2 | **Planta Tanque** | 2d | 2026-10-23 | 2026-10-27 |  |  | 300.6d |  |
| 57 |  | Viga estructural - (18x30) | 2d | 2026-10-23 | 2026-10-27 | 70 |  | 300.6d |  |
| 58 | 1.3.3.8 | **Losas** | 42d | 2026-09-15 | 2026-11-13 |  |  | 0d |  |
| 59 |  | Losa Vigueta Simple - 21 cm | 21d | 2026-09-15 | 2026-10-15 | 53 |  | 308.6d |  |
| 60 |  | Losa Maciza - 10 cm | 21d | 2026-09-15 | 2026-10-15 | 53 |  | 308.6d |  |
| 61 |  | Losa Maciza - 15 cm | 21d | 2026-09-15 | 2026-10-15 | 53 |  | 0d |  |
| 62 |  | Hormigón de losas | 1d | 2026-10-15 | 2026-10-16 | 61 |  | 0d |  |
| 63 |  | Desencofrados y devoluciones de equipo | 5d | 2026-11-06 | 2026-11-13 | 62SF+21d |  | 287.6d |  |
| 64 |  | Losa Vigueta Simple - 21 cm - Tanque | 3d | 2026-10-23 | 2026-10-28 | 70 |  | 299.6d |  |
| 65 | 1.3.3.9 | **Mampostería** | 65d | 2026-07-22 | 2026-10-23 |  |  | 0d |  |
| 66 |  | Mampostería de fundación | 3d | 2026-07-22 | 2026-07-27 | 33 |  | 0d |  |
| 67 |  | Mamposteria Ladrillo Hueco no Portante 08x18x33 PB | 1d | 2026-08-10 | 2026-08-11 | 72 |  | 353.6d |  |
| 68 |  | Mamposteria Ladrillo Hueco Portante 12x18x33 PB | 3d | 2026-08-10 | 2026-08-13 | 72 |  | 346.6d |  |
| 69 |  | Mamposteria Ladrillo Hueco Portante 18x18x33 PB | 20d | 2026-08-10 | 2026-09-08 | 72 |  | 0d |  |
| 70 |  | Parapetos + tanque | 5d | 2026-10-16 | 2026-10-23 | 62 |  | 0d |  |

| ID | WBS | Task | Duration | Start | Finish | Predecessors | Total float | Constraint |
| --- | --- | --- | --- | --- | --- | --- | --- | --- |
| 71 | 1.3.3.10 | **Tabique de Contención** | 10d | 2026-07-27 | 2026-08-10 |  | 0d |  |
| 72 |  | Muro de contención: Muro Bloque H° armado + llenado de hormigón - esp:20cm | 10d | 2026-07-27 | 2026-08-10 | 66 | 0d |  |
| 73 | 1.3.3.11 | **Aislación en Muros y Contrapiso** | 101d | 2026-08-10 | 2027-01-06 |  | 253.6d |  |
| 74 |  | Capa Aisladora Horizontal Mampostería | 5d | 2026-08-10 | 2026-08-17 | 72 | 325.6d |  |
| 75 |  | Capa Aisladora Horizontal sobre Contrapiso | 2d | 2026-09-01 | 2026-09-03 | 80 | 325.6d |  |
| 76 |  | Capa Aisladora Vertical Mampostería - H: 50cm | 5d | 2026-08-10 | 2026-08-17 | 72 | 349.6d |  |
| 77 |  | Capa Aisladora Vertical en muro de piedra - Monotop | 8d | 2026-12-23 | 2027-01-06 | 89 | 253.6d |  |
| 78 | 1.3.3.12 | **Contrapiso** | 19d | 2026-08-25 | 2026-09-21 |  | 325.6d |  |
| 79 |  | Hormigón p/contrapiso Interior Casa e=10cm (PB) | 12d | 2026-09-03 | 2026-09-21 | 75 | 325.6d |  |
| 80 |  | Contrapiso 020 | 5d | 2026-08-25 | 2026-09-01 | 14 | 325.6d |  |
| 81 | 1.3.3.13 | **Carpeta de Nivelación** | 44d | 2026-11-09 | 2027-01-14 |  | 0d |  |
| 82 |  | Carpeta de Nivelación Interior Casa e=4cm (PB) | 8d | 2027-01-04 | 2027-01-14 | 94 | 0d |  |
| 83 |  | Carpeta de Nivelación de Cubierta Casa e= 4 cm | 5d | 2026-11-09 | 2026-11-16 | 86 | 0d |  |
| 84 | 1.3.3.14 | **Cubierta** | 21d | 2026-10-23 | 2026-11-24 |  | 0d |  |
| 85 |  | Base de Pintura Asfaltica. | 1d | 2026-10-23 | 2026-10-26 | 70 | 0d |  |
| 86 |  | Cubierta común sobre Losa con perlas de Telgopor - Hormigón de Pendiente - 10 cm | 10d | 2026-10-26 | 2026-11-09 | 85 | 0d |  |
| 87 |  | Impermeabilización en cubierta Casa* (con parapeto-h:20cm) | 5d | 2026-11-16 | 2026-11-24 | 83 | 281.6d |  |
| 88 | 1.3.3.15 | **Azotado Hidrófugo + Revoque Grueso exterior** | 15d | 2026-12-01 | 2026-12-23 |  | 0d |  |
| 89 |  | Revoque c/ azotado hidrof. cementicio en mamp. | 15d | 2026-12-01 | 2026-12-23 | 91 | 0d |  |
| 90 | 1.3.3.16 | **Azotado Cementicio Interior** | 10d | 2026-11-16 | 2026-12-01 |  | 0d |  |
| 91 |  | Azotado Cementicio Interior | 10d | 2026-11-16 | 2026-12-01 | 83 | 0d |  |
| 92 | 1.3.3.17 | **Escaleras** | 6d | 2026-12-23 | 2027-01-04 |  | 0d |  |
| 93 |  | Escalera Int. de Hormigon in situ - ancho: 1,60m | 3d | 2026-12-23 | 2026-12-29 | 89 | 0d |  |
| 94 |  | Escalera Int. de Hormigon in situ - ancho 1,35m | 3d | 2026-12-29 | 2027-01-04 | 93 | 0d |  |
| 95 | 1.3.3.18 | **Asador** | 5d | 2026-08-13 | 2026-08-21 |  | 346.6d |  |
| 96 |  | Asador (1,70 m de largo) | 5d | 2026-08-13 | 2026-08-21 | 68 | 346.6d |  |
| 97 | 1.3.4 | **CARPINTERIAS** | 130.4d? | 2026-06-01 | 2026-12-04 |  | 273.6d |  |
| 98 | 1.3.4.1 | **Aberturas** | 130.4d? | 2026-06-01 | 2026-12-04 |  | 273.6d |  |
| 99 |  | Colocación de premarcos | 3d | 2026-12-01 | 2026-12-04 | 91 | 273.6d |  |
| 100 |  | Puertas de madera* | 1d? | 2026-06-01 | 2026-06-01 |  | 403d | start no earlier than 2026-06-01 |
| 101 |  | Aberturas de aluminio* | 1d? | 2026-06-01 | 2026-06-01 |  | 403d | start no earlier than 2026-06-01 |
| 102 | 1.3.5 | **VARIOS** | 0d | 2026-06-01 | 2026-06-01 |  | 404d |  |
| 103 |  | Muebles | 0d | 2026-06-01 | 2026-06-01 |  | 404d | start no earlier than 2026-06-01 |
| 104 |  | Mesadas | 0d | 2026-06-01 | 2026-06-01 |  | 404d | start no earlier than 2026-06-01 |
| 105 |  | Firma Acta recepcion Provisoria | 0d | 2027-01-14 | 2027-01-14 | 82 | 0d |  |
| 106 |  | Posventa | 12emo | 2027-01-14 | 2028-01-09 | 105 | 0d |  |

## Version 2 (saved 2026-09-26, file VIvienda Venturelli-Bernal.xml)

Last finish 2028-01-09 → 2028-03-04 (+55d). Complete tasks 7 → 24.

Added:

| ID | Task | Duration | Start | Finish | Predecessors | Resources |
| --- | --- | --- | --- | --- | --- | --- |
| 68 | Vigas encadenado sobre muro contención, nivel contrapiso | 5d | 2026-09-28 A | 2026-10-05 | 75FF | Mariana V |
| 98 | **LIMPIEZA DE OBRA** | 4d? | 2026-06-01 | 2026-06-04 |  | Mariana V |
| 99 | Limpieza | 1d? | 2026-06-01 | 2026-06-01 |  | Mariana V |
| 100 | Limpieza periodica | 1d? | 2026-06-01 | 2026-06-01 |  | Mariana V |
| 101 | Limpieza final | 4d | 2026-06-01 | 2026-06-04 |  | Mariana V |
| 105 | Intalaciones de plomería contrapiso | 20d | 2026-06-30 | 2026-07-29 | 28 | Mariana V |
| 106 | Intalaciones de plomería pared | 15d | 2026-11-09 | 2026-12-01 | 64 | Mariana V |
| 107 | Instalaciones de electricidad losa | 2d | 2026-12-14 | 2026-12-16 | 54FF-3d | Mariana V |
| 108 | Instalaciones de electricidad pared | 15d | 2026-11-09 | 2026-12-01 | 64 | Mariana V |
| 109 | Instalación de losa radiante | 8d | 2027-02-12 | 2027-02-24 | 90 | Mariana V |

Removed: 35 Planta Baja; 44 Planta Baja; 47 Planta Baja; 52 Planta Baja; 56 Planta Tanque

Changed:

| ID | Task | Start | Finish | Duration | Complete | Total float | Predecessors | Other |
| --- | --- | --- | --- | --- | --- | --- | --- | --- |
| 1 | **Vivienda Venturelli - Bernal** |  | 2028-01-09 → 2028-03-04 (+55d) | 404d? → 443d? | 1% → 8% |  |  | baseline start none → 2026-06-01; baseline finish none → 2027-04-01 |
| 2 | Obra Vivienda Venturelli - Bernal Contratada |  |  |  |  |  |  | baseline start none → 2026-06-01; baseline finish none → 2027-04-01 |
| 3 | Obra Vivienda Venturelli - Bernal |  |  |  |  |  |  | baseline start none → 2026-06-01; baseline finish none → 2026-06-01 |
| 4 | **OBRA VIVIENDA VENTURELLI - BERNAL** |  | 2027-01-14 → 2027-03-10 (+55d) | 156.4d? → 194.4d? | 5% → 27% | 247.6d → 248.6d |  | constraint none → start no earlier than 2026-06-01; baseline start none → 2026-06-01; baseline finish none → 2027-03-31 |
| 5 | **TAREAS PRELIMINARES** |  |  |  |  |  |  | baseline start none → 2026-06-01; baseline finish none → 2026-06-05 |
| 6 | Estudio de Suelos |  |  |  |  |  |  | constraint start no earlier than 2026-06-01 → start no earlier than 2026-04-27; baseline start none → 2026-06-01; baseline finish none → 2026-06-03 |
| 7 | Calculo Estructural |  |  |  |  |  |  | constraint start no earlier than 2026-06-01 → none; baseline start none → 2026-06-01; baseline finish none → 2026-06-03 |
| 8 | Cerco Perimetral |  |  |  |  |  |  | baseline start none → 2026-06-02; baseline finish none → 2026-06-03 |
| 9 | Replanteo de Obra |  |  |  |  |  |  | baseline start none → 2026-06-04; baseline finish none → 2026-06-05 |
| 10 | **CONFORMACIÓN DE TERRENO** |  | 2026-08-25 → 2026-09-14 (+20d) | 58.4d → 72.4d | 36% → 56% | 325.6d → 0d |  | resources none → Mariana V; baseline start none → 2026-06-02; baseline finish none → 2026-09-22 |
| 11 | Extracción de árboles |  |  |  |  |  |  | baseline start none → 2026-06-02; baseline finish none → 2026-06-03 |
| 12 | Demora por clima | 2026-06-04 A | 2026-06-09 A |  | 0% → 100% | 0d → none |  | baseline start none → 2026-06-04; baseline finish none → 2026-06-09 |
| 13 | Excavación terreno |  |  |  |  |  |  | baseline start none → 2026-06-10; baseline finish none → 2026-06-12 |
| 14 | Relleno de terreno | 2026-08-17 → 2026-09-03 (+17d) | 2026-08-25 → 2026-09-14 (+20d) | 5d → 7d |  | 325.6d → 0d | 70 → 72FS+1d | baseline start none → 2026-09-11; baseline finish none → 2026-09-22 |
| 15 | **ESTRUCTURA Y ALBAÑILERIA** | 2026-06-05 A → 2026-06-01 A (-4d) | 2027-01-14 → 2027-03-10 (+55d) | 151.9d → 194.4d? | 1% → 28% | 247.6d → 248.6d |  | resources none → Mariana V; baseline start none → 2026-06-01; baseline finish none → 2027-03-31 |
| 16 | **Pilotes de H°** |  | 2026-07-08 A |  | 14% → 100% | 376d → none |  | resources none → Mariana V; baseline start none → 2026-06-01; baseline finish none → 2026-06-01 |
| 17 | EXCAVACIÓN DE PILOTES* (presupuesto prov. por empresa tercerizada) - 41 pilotes con ensanche mecánico p/ campana | 2026-06-25 A | 2026-07-07 A |  | 0% → 100% | 0d → none |  | baseline start none → 2026-06-25; baseline finish none → 2026-07-07 |
| 18 | Demora por conflicto externo con empresa pilotera | 2026-06-10 A | 2026-06-24 A |  | 0% → 100% | 0d → none |  | baseline start none → 2026-06-10; baseline finish none → 2026-06-24 |
| 19 | Armadura y llenado de H° |  | 2026-06-23 A |  | 40% → 100% | 387.5d → none |  | baseline start none → 2026-06-05; baseline finish none → 2026-06-23 |
| 20 | Hormigón de pozos | 2026-07-01 A | 2026-07-02 A |  | 0% → 100% | 0d → none |  | baseline start none → 2026-07-01; baseline finish none → 2026-07-02 |
| 21 | Hormigón de pozos 2da etapa | 2026-07-08 A | 2026-07-08 A |  | 0% → 100% | 376d → none |  | baseline start none → 2026-07-08; baseline finish none → 2026-07-08 |
| 22 | **Zapata Continua** | 2026-07-08 → 2026-06-16 A (-22d) | 2026-07-21 → 2026-06-30 A (-21d) | 8d → 10d | 0% → 100% | 368.6d → none |  | resources none → Mariana V; baseline start none → 2026-06-01; baseline finish none → 2026-06-01 |
| 23 | CAB 01 - 60x60 | 2026-07-08 → 2026-06-16 A (-22d) | 2026-07-21 → 2026-06-30 A (-21d) | 8d → 10d | 0% → 100% | 368.6d → none |  | baseline start none → 2026-07-14; baseline finish none → 2026-07-28 |
| 24 | CAB 02 - 110x80 | 2026-07-08 → 2026-06-16 A (-22d) | 2026-07-21 → 2026-06-30 A (-21d) | 8d → 10d | 0% → 100% | 368.6d → none |  | baseline start none → 2026-07-14; baseline finish none → 2026-07-28 |
| 25 | CAB 03 - 120x80 | 2026-07-08 → 2026-06-16 A (-22d) | 2026-07-21 → 2026-06-30 A (-21d) | 8d → 10d | 0% → 100% | 368.6d → none |  | baseline start none → 2026-07-14; baseline finish none → 2026-07-28 |
| 26 | **Vigas de Fundación y Riostra** | 2026-07-02 → 2026-06-23 A (-9d) | 2026-07-22 → 2026-08-03 A (+12d) | 13d → 27.9d | 0% → 100% | 0d → none |  | resources none → Mariana V; baseline start none → 2026-06-01; baseline finish none → 2026-06-01 |
| 27 | Excavación de vigas | 2026-07-02 A | 2026-07-14 → 2026-07-31 A (+17d) | 7d → 20d | 0% → 100% | 0d → none |  | baseline start none → 2026-07-02; baseline finish none → 2026-07-14 |
| 28 | Viga de Fundación - VF1 - (25x40) | 2026-07-14 → 2026-06-23 A (-21d) | 2026-07-21 → 2026-06-30 A (-21d) |  | 0% → 100% | 0d → none | 27 → 19 | baseline start none → 2026-07-14; baseline finish none → 2026-07-28 |
| 29 | Viga de Fundación - VF2 - (40x25) | 2026-07-14 → 2026-06-23 A (-21d) | 2026-07-21 → 2026-06-30 A (-21d) |  | 0% → 100% | 368.6d → none | 27 → 19 | baseline start none → 2026-07-14; baseline finish none → 2026-07-28 |
| 30 | Viga de Fundación - VF3 - (60x25) | 2026-07-14 → 2026-06-23 A (-21d) | 2026-07-21 → 2026-06-30 A (-21d) |  | 0% → 100% | 368.6d → none | 27 → 19 | baseline start none → 2026-07-14; baseline finish none → 2026-07-28 |
| 31 | Viga de Fundación - VF4 - (60x40) | 2026-07-14 → 2026-06-23 A (-21d) | 2026-07-21 → 2026-06-30 A (-21d) |  | 0% → 100% | 368.6d → none | 27 → 19 | baseline start none → 2026-07-14; baseline finish none → 2026-07-28 |
| 32 | Viga Riostra VR01 (25x25) | 2026-07-14 → 2026-06-23 A (-21d) | 2026-07-21 → 2026-06-30 A (-21d) |  | 0% → 100% | 368.6d → none | 27 → 19 | baseline start none → 2026-07-14; baseline finish none → 2026-07-28 |
| 33 | Hormigón de riostra | 2026-07-21 → 2026-07-31 A (+10d) | 2026-07-22 → 2026-08-03 A (+12d) |  | 0% → 100% | 0d → none | 28 → 27 | baseline start none → 2026-07-29; baseline finish none → 2026-07-30 |
| 34 | **Columnas.** | 2026-08-13 → 2026-10-23 (+71d) | 2026-08-21 → 2026-11-04 (+75d) | 5d → 8d |  | 346.6d → 333.6d |  | resources none → Mariana V; baseline start none → 2026-06-01; baseline finish none → 2026-06-01 |
| 35 | C01 - (0,18x0,25) - 12 unid | 2026-08-13 → 2026-10-23 (+71d) | 2026-08-21 → 2026-11-04 (+75d) | 5d → 8d |  | 346.6d → 333.6d |  | baseline start none → 2026-09-11; baseline finish none → 2026-09-23 |
| 36 | C02 - (0,18x0,76) - 5 unid | 2026-08-13 → 2026-10-23 (+71d) | 2026-08-21 → 2026-11-04 (+75d) | 5d → 8d |  | 346.6d → 333.6d |  | baseline start none → 2026-09-11; baseline finish none → 2026-09-23 |
| 37 | C03 - (0,20x0,20) - 26 unid | 2026-08-13 → 2026-10-23 (+71d) | 2026-08-21 → 2026-11-04 (+75d) | 5d → 8d |  | 346.6d → 333.6d |  | baseline start none → 2026-09-11; baseline finish none → 2026-09-23 |
| 38 | C04 - (0,18x0,38) - 1 unid | 2026-08-13 → 2026-10-23 (+71d) | 2026-08-21 → 2026-11-04 (+75d) | 5d → 8d |  | 346.6d → 333.6d |  | baseline start none → 2026-09-11; baseline finish none → 2026-09-23 |
| 39 | C05 - (0,18x0,58) - 2 unid | 2026-08-13 → 2026-10-23 (+71d) | 2026-08-21 → 2026-11-04 (+75d) | 5d → 8d |  | 346.6d → 333.6d |  | baseline start none → 2026-09-11; baseline finish none → 2026-09-23 |
| 40 | C06 - (0,27x0,20) - 2 unid | 2026-08-13 → 2026-10-23 (+71d) | 2026-08-21 → 2026-11-04 (+75d) | 5d → 8d |  | 346.6d → 333.6d |  | baseline start none → 2026-09-11; baseline finish none → 2026-09-23 |
| 41 | C07 - (0,40x0,40) - 2 unid | 2026-08-13 → 2026-10-23 (+71d) | 2026-08-21 → 2026-11-04 (+75d) | 5d → 8d |  | 346.6d → 333.6d |  | baseline start none → 2026-09-11; baseline finish none → 2026-09-23 |
| 42 | **Encadenado Vertical** | 2026-08-13 → 2026-10-23 (+71d) | 2026-08-21 → 2026-11-04 (+75d) | 5d → 8d |  | 346.6d → 333.6d |  | resources none → Mariana V; baseline start none → 2026-06-01; baseline finish none → 2026-06-01 |
| 43 | CE1 - (0,18x0,18) - 52 unid | 2026-08-13 → 2026-10-23 (+71d) | 2026-08-21 → 2026-11-04 (+75d) | 5d → 8d |  | 346.6d → 333.6d |  | baseline start none → 2026-09-11; baseline finish none → 2026-09-23 |
| 44 | **Encadenado Horizontal** | 2026-08-13 → 2026-10-23 (+71d) | 2026-08-21 → 2026-11-04 (+75d) | 5d → 8d |  | 346.6d → 333.6d |  | resources none → Mariana V; baseline start none → 2026-06-01; baseline finish none → 2026-06-01 |
| 45 | VE - (0,18x0,20) | 2026-08-13 → 2026-10-23 (+71d) | 2026-08-21 → 2026-11-04 (+75d) | 5d → 8d |  | 346.6d → 333.6d |  | baseline start none → 2026-09-11; baseline finish none → 2026-09-23 |
| 46 | VE2 - (0,20x0,20) | 2026-08-13 → 2026-10-23 (+71d) | 2026-08-21 → 2026-11-04 (+75d) | 5d → 8d |  | 346.6d → 333.6d |  | baseline start none → 2026-09-11; baseline finish none → 2026-09-23 |
| 47 | VE3 - (0,20x0,30) | 2026-08-13 → 2026-10-23 (+71d) | 2026-08-21 → 2026-11-04 (+75d) | 5d → 8d |  | 346.6d → 333.6d |  | baseline start none → 2026-09-11; baseline finish none → 2026-09-23 |
| 48 | **Vigas Estructurales** | 2026-09-08 → 2026-11-09 (+62d) | 2026-10-27 → 2027-01-07 (+72d) | 34d → 39d |  |  |  | resources none → Mariana V; baseline start none → 2026-06-01; baseline finish none → 2026-06-01 |
| 49 | Vigas estructurales - (18x15),(18x21),(18x25),(18x36),(18x40),(18x46),(18x50),(18x54),(18x54),(18x60),(18x68),(18x74) | 2026-09-08 → 2026-11-09 (+62d) | 2026-09-15 → 2026-11-19 (+65d) | 5d → 7d |  |  |  | baseline start none → 2026-10-07; baseline finish none → 2026-10-22 |
| 50 | Vigas estructurales - (20x110),(20x150) | 2026-09-08 → 2026-11-09 (+62d) | 2026-09-15 → 2026-11-19 (+65d) | 5d → 7d |  | 329.6d → 323.6d |  | baseline start none → 2026-10-07; baseline finish none → 2026-10-22 |
| 51 | Vigas estructurales - (27x21),(29x110),(38x20),(50x21) | 2026-09-08 → 2026-11-09 (+62d) | 2026-09-15 → 2026-11-19 (+65d) | 5d → 7d |  | 329.6d → 323.6d |  | baseline start none → 2026-10-07; baseline finish none → 2026-10-22 |
| 52 | Viga estructural - (18x30) | 2026-10-23 → 2026-12-30 (+68d) | 2026-10-27 → 2027-01-07 (+72d) | 2d → 5d |  | 300.6d → 291.6d |  | baseline start none → 2026-12-09; baseline finish none → 2026-12-16 |
| 53 | **Losas** | 2026-09-15 → 2026-11-19 (+65d) | 2026-11-13 → 2027-01-21 (+69d) |  |  |  |  | resources none → Mariana V; baseline start none → 2026-06-01; baseline finish none → 2026-06-01 |
| 54 | Losa Vigueta Simple - 21 cm | 2026-09-15 → 2026-11-19 (+65d) | 2026-10-15 → 2026-12-21 (+67d) |  |  | 308.6d → 302.6d |  | baseline start none → 2026-10-22; baseline finish none → 2026-11-23 |
| 55 | Losa Maciza - 10 cm | 2026-09-15 → 2026-11-19 (+65d) | 2026-10-15 → 2026-12-21 (+67d) |  |  | 308.6d → 302.6d |  | baseline start none → 2026-10-22; baseline finish none → 2026-11-23 |
| 56 | Losa Maciza - 15 cm | 2026-09-15 → 2026-11-19 (+65d) | 2026-10-15 → 2026-12-21 (+67d) |  |  |  |  | baseline start none → 2026-10-22; baseline finish none → 2026-11-23 |
| 57 | Hormigón de losas | 2026-10-15 → 2026-12-21 (+67d) | 2026-10-16 → 2026-12-22 (+67d) |  |  |  |  | baseline start none → 2026-11-23; baseline finish none → 2026-11-24 |
| 58 | Desencofrados y devoluciones de equipo | 2026-11-06 → 2027-01-14 (+69d) | 2026-11-13 → 2027-01-21 (+69d) |  |  | 287.6d → 281.6d |  | baseline start none → 2026-12-16; baseline finish none → 2026-12-23 |
| 59 | Losa Vigueta Simple - 21 cm - Tanque | 2026-10-23 → 2026-12-30 (+68d) | 2026-10-28 → 2027-01-05 (+69d) |  |  | 299.6d → 293.6d |  | baseline start none → 2026-12-09; baseline finish none → 2026-12-16 |
| 60 | Mampostería | 2026-07-22 → 2026-06-01 (-51d) | 2026-10-23 → 2026-06-01 (-144d) | 65d → 1d? |  | 0d → 442d |  | resources none → Mariana V; baseline start none → 2026-06-01; baseline finish none → 2026-06-01 |
| 61 | Mampostería de fundación | 2026-07-22 → 2026-10-01 (+71d) | 2026-07-27 → 2026-10-06 (+71d) |  |  |  | 33 → 75 | baseline start none → 2026-07-30; baseline finish none → 2026-08-04 |
| 62 | Mamposteria Ladrillo Hueco no Portante 08x18x33 PB | 2026-08-10 → 2026-10-14 (+65d) | 2026-08-11 → 2026-10-20 (+70d) | 1d → 4d |  | 353.6d → 344.6d | 67 → 70 | baseline start none → 2026-09-02; baseline finish none → 2026-09-08 |
| 63 | Mamposteria Ladrillo Hueco Portante 12x18x33 PB | 2026-08-10 → 2026-10-14 (+65d) | 2026-08-13 → 2026-10-23 (+71d) | 3d → 7d |  | 346.6d → 333.6d | 67 → 70 | baseline start none → 2026-09-02; baseline finish none → 2026-09-11 |
| 64 | Mamposteria Ladrillo Hueco Portante 18x18x33 PB | 2026-08-10 → 2026-10-14 (+65d) | 2026-09-08 → 2026-11-09 (+62d) | 20d → 18d |  |  | 67 → 70 | baseline start none → 2026-09-02; baseline finish none → 2026-10-07 |
| 65 | Parapetos + tanque | 2026-10-16 → 2026-12-22 (+67d) | 2026-10-23 → 2026-12-30 (+68d) |  |  |  |  | baseline start none → 2026-11-24; baseline finish none → 2026-12-09 |
| 66 | Tabique de Contención | 2026-07-27 → 2026-06-01 (-56d) | 2026-08-10 → 2026-06-01 (-70d) | 10d → 1d? |  | 0d → 442d |  | resources none → Mariana V; baseline start none → 2026-06-01; baseline finish none → 2026-06-01 |
| 67 | Muro de contención: Muro Bloque H° armado + llenado de hormigón - esp:20cm | 2026-07-27 → 2026-08-03 A (+7d) | 2026-08-10 → 2026-08-25 A (+15d) | 10d → 15d | 0% → 100% | 0d → none | 61 → 33 | baseline start none → 2026-08-04; baseline finish none → 2026-09-02 |
| 69 | Aislación en Muros y Contrapiso | 2026-08-10 → 2026-06-01 (-70d) | 2027-01-06 → 2026-06-01 (-219d) | 101d → 1d? |  | 253.6d → 442d |  | resources none → Mariana V; baseline start none → 2026-06-01; baseline finish none → 2026-06-01 |
| 70 | Capa Aisladora Horizontal Mampostería | 2026-08-10 → 2026-10-06 (+57d) | 2026-08-17 → 2026-10-14 (+58d) |  |  | 325.6d → 0d | 67 → 61 | baseline start none → 2026-09-02; baseline finish none → 2026-09-11 |
| 71 | Capa Aisladora Horizontal sobre Contrapiso | 2026-09-01 → 2026-09-15 (+14d) | 2026-09-03 → 2026-09-16 (+13d) | 2d → 1d |  | 325.6d → 0d |  | baseline start none → 2026-09-29; baseline finish none → 2026-10-02 |

| ID | Task | Start | Finish | Duration | Complete | Total float | Predecessors | Other |
| --- | --- | --- | --- | --- | --- | --- | --- | --- |
| 72 | Capa Aisladora Vertical Mampostería - H: 50cm | 2026-08-10 → 2026-08-25 A (+15d) | 2026-08-17 → 2026-09-02 (+16d) | 5d → 6d | 0% → 95% | 349.6d → 0d |  | baseline start none → 2026-09-02; baseline finish none → 2026-09-16 |
| 73 | Capa Aisladora Vertical en muro de piedra - Monotop | 2026-12-23 → 2027-02-26 (+65d) | 2027-01-06 → 2027-03-10 (+63d) |  |  | 253.6d → 248.6d |  | baseline start none → 2027-02-23; baseline finish none → 2027-03-09 |
| 74 | Contrapiso | 2026-08-25 → 2026-06-01 (-85d) | 2026-09-21 → 2026-06-01 (-112d) | 19d → 1d? |  | 325.6d → 442d |  | resources none → Mariana V; baseline start none → 2026-06-01; baseline finish none → 2026-06-01 |
| 75 | Hormigón p/contrapiso Interior Casa e=10cm (PB) | 2026-09-03 → 2026-09-16 (+13d) | 2026-09-21 → 2026-10-01 (+10d) | 12d → 11d |  | 325.6d → 0d |  | baseline start none → 2026-10-02; baseline finish none → 2026-10-21 |
| 76 | Contrapiso 020 | 2026-08-25 → 2026-09-14 (+20d) | 2026-09-01 → 2026-09-15 (+14d) | 5d → 1d |  | 325.6d → 0d |  | baseline start none → 2026-09-22; baseline finish none → 2026-09-29 |
| 77 | Carpeta de Nivelación | 2026-11-09 → 2026-06-01 (-161d) | 2027-01-14 → 2026-06-01 (-227d) | 44d → 1d? |  | 0d → 442d |  | resources none → Mariana V; baseline start none → 2026-06-01; baseline finish none → 2026-06-01 |
| 78 | Carpeta de Nivelación Interior Casa e=4cm (PB) | 2027-01-04 → 2027-02-24 (+51d) | 2027-01-14 → 2027-03-10 (+55d) | 8d → 10d |  |  | 90 → 109 | baseline start none → 2027-03-16; baseline finish none → 2027-03-31 |
| 79 | Carpeta de Nivelación de Cubierta Casa e= 4 cm | 2026-11-09 → 2027-01-12 (+64d) | 2026-11-16 → 2027-01-21 (+66d) | 5d → 7d |  |  |  | baseline start none → 2026-12-30; baseline finish none → 2027-01-11 |
| 80 | Cubierta | 2026-10-23 → 2026-06-01 (-144d) | 2026-11-24 → 2026-06-01 (-176d) | 21d → 1d? |  | 0d → 442d |  | resources none → Mariana V; baseline start none → 2026-06-01; baseline finish none → 2026-06-01 |
| 81 | Base de Pintura Asfaltica. | 2026-10-23 → 2026-12-30 (+68d) | 2026-10-26 → 2026-12-31 (+66d) |  |  |  |  | baseline start none → 2026-12-09; baseline finish none → 2026-12-11 |
| 82 | Cubierta común sobre Losa con perlas de Telgopor - Hormigón de Pendiente - 10 cm | 2026-10-26 → 2026-12-31 (+66d) | 2026-11-09 → 2027-01-12 (+64d) | 10d → 7d |  |  |  | baseline start none → 2026-12-11; baseline finish none → 2026-12-30 |
| 83 | Impermeabilización en cubierta Casa* (con parapeto-h:20cm) | 2026-11-16 → 2027-01-21 (+66d) | 2026-11-24 → 2027-02-01 (+69d) | 5d → 7d |  | 281.6d → 274.6d |  | baseline start none → 2027-01-11; baseline finish none → 2027-01-20 |
| 84 | Azotado Hidrófugo + Revoque Grueso exterior | 2026-12-01 → 2026-06-01 (-183d) | 2026-12-23 → 2026-06-01 (-205d) | 15d → 1d? |  | 0d → 442d |  | resources none → Mariana V; baseline start none → 2026-06-01; baseline finish none → 2026-06-01 |
| 85 | Revoque c/ azotado hidrof. cementicio en mamp. | 2026-12-01 → 2027-02-04 (+65d) | 2026-12-23 → 2027-02-26 (+65d) |  |  | 0d → 248.6d |  | baseline start none → 2027-01-27; baseline finish none → 2027-02-23 |
| 86 | Azotado Cementicio Interior | 2026-11-16 → 2026-06-01 (-168d) | 2026-12-01 → 2026-06-01 (-183d) | 10d → 1d? |  | 0d → 442d |  | resources none → Mariana V; baseline start none → 2026-06-01; baseline finish none → 2026-06-01 |
| 87 | Azotado Cementicio Interior | 2026-11-16 → 2027-01-21 (+66d) | 2026-12-01 → 2027-02-04 (+65d) |  |  |  |  | baseline start none → 2027-01-11; baseline finish none → 2027-01-27 |
| 88 | Escaleras | 2026-12-23 → 2026-06-01 (-205d) | 2027-01-04 → 2026-06-01 (-217d) | 6d → 1d? |  | 0d → 442d |  | resources none → Mariana V; baseline start none → 2026-06-01; baseline finish none → 2026-06-01 |
| 89 | Escalera Int. de Hormigon in situ - ancho: 1,60m | 2026-12-23 → 2027-02-04 (+43d) | 2026-12-29 → 2027-02-12 (+45d) | 3d → 5d |  |  | 85 → 87 | baseline start none → 2027-02-23; baseline finish none → 2027-03-04 |
| 90 | Escalera Int. de Hormigon in situ - ancho 1,35m | 2026-12-29 → 2027-02-04 (+37d) | 2027-01-04 → 2027-02-12 (+39d) | 3d → 5d |  |  | 89 → 89FF | baseline start none → 2027-03-04; baseline finish none → 2027-03-15 |
| 91 | Asador | 2026-08-13 → 2026-06-01 (-73d) | 2026-08-21 → 2026-06-01 (-81d) | 5d → 1d? |  | 346.6d → 442d |  | resources none → Mariana V; baseline start none → 2026-06-01; baseline finish none → 2026-06-01 |
| 92 | Asador (1,70 m de largo) | 2026-08-13 → 2026-10-23 (+71d) | 2026-08-21 → 2026-10-30 (+70d) |  |  | 346.6d → 336.6d |  | baseline start none → 2026-09-11; baseline finish none → 2026-09-18 |
| 93 | **CARPINTERIAS** |  | 2026-12-04 → 2027-02-12 (+70d) | 130.4d? → 176.4d? |  | 273.6d → 266.6d |  | resources none → Mariana V; baseline start none → 2026-06-01; baseline finish none → 2027-02-03 |
| 94 | Aberturas |  | 2026-12-04 → 2026-06-01 (-186d) | 130.4d? → 1d? |  | 273.6d → 442d |  | resources none → Mariana V; baseline start none → 2026-06-01; baseline finish none → 2026-06-01 |
| 95 | Colocación de premarcos | 2026-12-01 → 2027-02-04 (+65d) | 2026-12-04 → 2027-02-12 (+70d) | 3d → 5d |  | 273.6d → 266.6d |  | baseline start none → 2027-01-27; baseline finish none → 2027-02-03 |
| 96 | Puertas de madera* |  |  |  |  | 403d → 442d |  | constraint start no earlier than 2026-06-01 → none; baseline start none → 2026-06-01; baseline finish none → 2026-06-01 |
| 97 | Aberturas de aluminio* |  |  |  |  | 403d → 442d |  | constraint start no earlier than 2026-06-01 → none; baseline start none → 2026-06-01; baseline finish none → 2026-06-01 |
| 102 | **VARIOS** |  | 2026-06-01 → 2027-02-24 (+268d) | 0d → 184.4d |  | 404d → 176.4d |  | resources none → Mariana V; baseline start none → 2026-06-01; baseline finish none → 2027-03-16 |
| 103 | Muebles |  |  |  |  | 404d → 443d |  | constraint start no earlier than 2026-06-01 → none; baseline start none → 2026-06-01; baseline finish none → 2026-06-01 |
| 104 | Mesadas |  |  |  |  | 404d → 443d |  | constraint start no earlier than 2026-06-01 → none; baseline start none → 2026-06-01; baseline finish none → 2026-06-01 |
| 110 | Firma Acta recepcion Provisoria | 2027-01-14 → 2027-03-10 (+55d) | 2027-01-14 → 2027-03-10 (+55d) |  |  |  |  | baseline start none → 2027-03-31; baseline finish none → 2027-03-31 |
| 111 | Posventa | 2027-01-14 → 2027-03-10 (+55d) | 2028-01-09 → 2028-03-04 (+55d) |  |  |  |  | baseline start none → 2027-03-31; baseline finish none → 2028-03-25 |

## Version 3 (saved 2026-09-30, file VIvienda Venturelli-Bernal.xml)

Last finish stays 2028-03-04. Complete tasks 24 → 29.

Changed:

| ID | Task | Start | Finish | Duration | Complete | Total float |
| --- | --- | --- | --- | --- | --- | --- |
| 1 | **Vivienda Venturelli - Bernal** |  |  |  | 8% → 10% |  |
| 4 | **OBRA VIVIENDA VENTURELLI - BERNAL** |  |  |  | 27% → 33% |  |
| 15 | **ESTRUCTURA Y ALBAÑILERIA** | 2026-06-01 A → 2026-06-05 A (+4d) |  | 194.4d? → 189.9d | 28% → 36% |  |
| 34 | **Columnas.** | 2026-10-23 A |  |  | 0% → 30% |  |
| 35 | C01 - (0,18x0,25) - 12 unid | 2026-10-23 A |  |  | 0% → 30% |  |
| 36 | C02 - (0,18x0,76) - 5 unid | 2026-10-23 A |  |  | 0% → 30% |  |
| 37 | C03 - (0,20x0,20) - 26 unid | 2026-10-23 A |  |  | 0% → 30% |  |
| 38 | C04 - (0,18x0,38) - 1 unid | 2026-10-23 A |  |  | 0% → 30% |  |
| 39 | C05 - (0,18x0,58) - 2 unid | 2026-10-23 A |  |  | 0% → 30% |  |
| 40 | C06 - (0,27x0,20) - 2 unid | 2026-10-23 A |  |  | 0% → 30% |  |
| 41 | C07 - (0,40x0,40) - 2 unid | 2026-10-23 A |  |  | 0% → 30% |  |
| 60 | **Mampostería** | 2026-06-01 → 2026-10-01 A (+122d) | 2026-06-01 → 2026-12-30 (+212d) | 1d? → 60d | 0% → 2% | 442d → 296.6d |
| 61 | Mampostería de fundación | 2026-10-01 A |  |  | 0% → 30% |  |
| 66 | **Tabique de Contención** | 2026-06-01 → 2026-08-03 A (+63d) | 2026-06-01 → 2026-10-05 A (+126d) | 1d? → 44d | 0% → 100% | 442d → none |
| 68 | Vigas encadenado sobre muro contención, nivel contrapiso |  | 2026-10-05 A |  | 30% → 100% | 354.6d → none |
| 69 | **Aislación en Muros y Contrapiso** | 2026-06-01 → 2026-08-25 A (+85d) | 2026-06-01 → 2027-03-10 (+282d) | 1d? → 135d | 0% → 35% | 442d → 248.6d |
| 71 | Capa Aisladora Horizontal sobre Contrapiso | 2026-09-15 A | 2026-09-16 A |  | 0% → 100% | 0d → none |
| 72 | Capa Aisladora Vertical Mampostería - H: 50cm |  | 2026-09-02 A |  | 95% → 100% | 0d → none |
| 74 | **Contrapiso** | 2026-06-01 → 2026-09-14 A (+105d) | 2026-06-01 → 2026-10-01 A (+122d) | 1d? → 13d | 0% → 100% | 442d → none |
| 75 | Hormigón p/contrapiso Interior Casa e=10cm (PB) | 2026-09-16 A | 2026-10-01 A |  | 0% → 100% | 0d → none |
| 76 | Contrapiso 020 | 2026-09-14 A | 2026-09-15 A |  | 0% → 100% | 0d → none |
| 77 | **Carpeta de Nivelación** | 2026-06-01 → 2027-01-12 (+225d) | 2026-06-01 → 2027-03-10 (+282d) | 1d? → 40d |  | 442d → 0d |
| 80 | **Cubierta** | 2026-06-01 → 2026-12-30 (+212d) | 2026-06-01 → 2027-02-01 (+245d) | 1d? → 22d |  | 442d → 0d |
| 84 | **Azotado Hidrófugo + Revoque Grueso exterior** | 2026-06-01 → 2027-02-04 (+248d) | 2026-06-01 → 2027-02-26 (+270d) | 1d? → 15d |  | 442d → 248.6d |
| 86 | **Azotado Cementicio Interior** | 2026-06-01 → 2027-01-21 (+234d) | 2026-06-01 → 2027-02-04 (+248d) | 1d? → 10d |  | 442d → 0d |
| 88 | **Escaleras** | 2026-06-01 → 2027-02-04 (+248d) | 2026-06-01 → 2027-02-12 (+256d) | 1d? → 5d |  | 442d → 0d |
| 91 | **Asador** | 2026-06-01 → 2026-10-23 (+144d) | 2026-06-01 → 2026-10-30 (+151d) | 1d? → 5d |  | 442d → 336.6d |
| 94 | **Aberturas** |  | 2026-06-01 → 2027-02-12 (+256d) | 1d? → 176.4d? |  | 442d → 266.6d |
| 99 | **Limpieza** |  | 2026-06-01 → 2026-06-04 (+3d) | 1d? → 4d? |  | 442d → 439d |
