# Vivienda Venturelli - Bernal

How a schedule from MS Project XML changed from version to version. A marks actual dates.

## Version 1 (data date 2026-07-28, saved 2026-09-26)

| ID | WBS | Task | Duration | Start | Finish | Predecessors | Complete | Total float | Constraint |
| --- | --- | --- | --- | --- | --- | --- | --- | --- | --- |
| 1 | 1 | **Vivienda Carola Ruda** | 503d? | 2026-07-13 A | 2028-07-13 |  | 2% | 204d |  |
| 2 |  | Obra Vivienda Carola Ruda Contratada | 731ed | 2026-07-13 | 2028-07-13 |  |  | 883.25d | start no earlier than 2026-07-13 |
| 3 |  | Obra Vivienda Carola Ruda | 443d | 2026-07-13 | 2028-04-14 |  |  | 264d |  |
| 4 | 1.3 | **OBRA VIVIENDA CAROLA RUDA** | 458d? | 2026-07-13 A | 2028-05-08 |  | 3% | 0d |  |
| 5 | 1.3.1 | **TAREAS PRELIMINARES** | 11d | 2026-07-13 A | 2026-07-27 A |  | 100% |  |  |
| 6 |  | Estudio de Suelos | 1d | 2026-07-27 A | 2026-07-27 A | 9FS+8d | 100% |  |  |
| 7 |  | Calculo Estructural | 1d | 2026-07-13 A | 2026-07-13 A |  | 100% |  |  |
| 8 |  | Cerco Perimetral | 3d | 2026-07-13 A | 2026-07-15 A | 15SS | 100% |  |  |
| 9 |  | Replanteo de Obra | 2d | 2026-07-13 A | 2026-07-14 A | 8 | 100% |  |  |
| 10 |  | Armado de Pilar con Tablero de Obra | 1d | 2026-07-13 A | 2026-07-13 A |  | 100% |  |  |
| 11 | 1.3.2 | **CONFORMACIÓN DE TERRENO** | 78d | 2026-07-13 A | 2026-10-30 |  | 25% | 0d |  |
| 12 |  | Excavación terreno | 1d | 2026-07-13 A | 2026-07-13 A |  | 100% |  |  |
| 13 |  | Relleno de terreno | 3d | 2026-10-28 | 2026-10-30 | 72 |  | 0d |  |
| 14 | 1.3.3 | **ESTRUCTURA Y ALBAÑILERIA** | 303d | 2026-07-13 A | 2027-09-24 |  | 13% | 155d |  |
| 15 |  | Envío de materiales | 1d | 2026-07-13 A | 2026-07-13 A |  | 100% |  |  |
| 16 |  | P1- 80cm fuste; c/ campana de 160cm | 15d | 2026-07-15 A | 2026-08-04 A | 9 | 100% |  |  |
| 17 |  | P2- 60cm fuste; c/ campana de 120cm | 15d | 2026-07-15 A | 2026-08-04 A | 16FF | 100% |  |  |
| 18 |  | P3- 40cm fuste; c/ campana de 80cm | 15d | 2026-07-15 A | 2026-08-04 A | 16FF | 100% |  |  |
| 19 |  | Pilotera - Demora por ingreso de pilotera | 11d | 2026-08-13 A | 2026-08-28 A | 9FS+21d | 100% |  |  |
| 20 |  | Hormigonado de pozos | 1d | 2026-08-24 A | 2026-08-24 A |  | 100% |  | start no earlier than 2026-08-24 |
| 21 |  | Hormigonado de pozos 2da etapa | 1d | 2026-08-28 A | 2026-08-28 A |  | 100% |  | start no earlier than 2026-08-28 |
| 22 |  | CBZ1 - 80x50x150 | 5d | 2026-08-14 | 2026-08-21 | 25 |  | 429d |  |
| 23 |  | CBZ2 - 80x50x120 | 5d | 2026-08-14 | 2026-08-21 | 22FF |  | 429d |  |
| 24 |  | CBZ3 - 80x80x80 | 5d | 2026-08-14 | 2026-08-21 | 22FF |  | 429d |  |
| 25 |  | Viga Fundación VF (50x30) | 7d | 2026-08-05 A | 2026-08-13 A | 16 | 100% |  |  |
| 26 |  | Excavación de riostras y cabezales | 15d | 2026-08-25 A | 2026-09-14 | 20 | 30% | 0d |  |
| 27 |  | Hormigonado de riostras y cabezales | 16d | 2026-09-15 | 2026-10-06 | 26 |  | 0d |  |
| 28 |  | C1 - (0,18x1,50) - 2 unid - (3,0 m de altura) | 7d | 2027-01-11 | 2027-01-19 | 67FF |  | 327d |  |
| 29 |  | C2 - (0,18x1,00) - 1 unid - (3,0 m de altura) | 7d | 2027-01-11 | 2027-01-19 | 67FF |  | 327d |  |
| 30 |  | C3 - (0,18x0,90) - 2 unid - (3,0 m de altura) | 7d | 2027-01-11 | 2027-01-19 | 67FF |  | 327d |  |
| 31 |  | C4 - (0,18x0,80) - 2 unid - (3,0 m de altura) | 7d | 2027-01-11 | 2027-01-19 | 67FF |  | 327d |  |
| 32 |  | C5 - (0,18x0,60) - 2 unid - (3,0 m de altura) | 7d | 2027-01-11 | 2027-01-19 | 67FF |  | 327d |  |
| 33 |  | C6 - (0,18x0,50) - 3 unid - (3,0 m de altura) | 7d | 2027-01-11 | 2027-01-19 | 67FF |  | 327d |  |
| 34 |  | C7 - (0,18x0,70) - 6 unid - (3,0 m de altura) | 7d | 2027-01-11 | 2027-01-19 | 67FF |  | 327d |  |
| 35 |  | C9 - (0,18x0,18) - 43 unid - (3,0 m de altura) | 7d | 2027-01-11 | 2027-01-19 | 67FF |  | 327d |  |
| 36 |  | C10 - (0,18x0,18) - 12 unid - (3,0 m de altura) | 7d | 2027-01-11 | 2027-01-19 | 67FF |  | 327d |  |
| 37 |  | C11 - (0,12x0,30) - 33 unid - (3,0 m de altura) | 7d | 2027-01-11 | 2027-01-19 | 67FF |  | 327d |  |
| 38 |  | C1 - (0,18x1,50) - 1 unid - (2,8 m de altura) | 7d | 2027-06-09 | 2027-06-17 | 69FF |  | 224d |  |
| 39 |  | C4 - (0,18x0,80) - 1 unid - (2,8 m de altura) | 7d | 2027-06-09 | 2027-06-17 | 69FF |  | 224d |  |
| 40 |  | C7 - (0,18x0,70) - 1 unid - (2,8 m de altura) | 7d | 2027-06-09 | 2027-06-17 | 69FF |  | 224d |  |
| 41 |  | C9 - (0,18x0,18) - 41 unid - (2,8 m de altura) | 7d | 2027-06-09 | 2027-06-17 | 69FF |  | 224d |  |
| 42 |  | C10 - (0,18x0,18) - 2 unid - (2,8 m de altura) | 7d | 2027-06-09 | 2027-06-17 | 69FF |  | 224d |  |
| 43 |  | C11 - (0,12x0,30) - 4 unid - (2,8 m de altura) | 7d | 2027-06-09 | 2027-06-17 | 69FF |  | 224d |  |
| 44 |  | Ce - (0,18x0,18) - 3 unid - (3,0 m de altura) | 7d | 2027-01-11 | 2027-01-19 | 67FF |  | 327d |  |
| 45 |  | Ce - (0,18x0,18) - 18 unid - (2,8 m de altura) | 7d | 2027-06-09 | 2027-06-17 | 69FF |  | 224d |  |
| 46 |  | EH - (0,18x0,30), (0,18x0,40) | 5d | 2027-02-22 | 2027-02-26 | 48FF |  | 300d |  |
| 47 |  | EH - (0,18x0,30) | 5d | 2027-07-06 | 2027-07-13 | 53FF |  | 207d |  |
| 48 |  | V - (18x100),(18x120),(30x100),(40x100) | 15d | 2027-02-05 | 2027-02-26 | 105 |  | 300d |  |
| 49 |  | V - (18x50) | 15d | 2027-02-05 | 2027-02-26 | 48FF |  | 300d |  |
| 50 |  | V - (18x30) | 15d | 2027-02-05 | 2027-02-26 | 48FF |  | 300d |  |
| 51 |  | V - (30x30),(30x40),(40x40) | 15d | 2027-02-05 | 2027-02-26 | 48FF |  | 300d |  |
| 52 |  | NB - (18x50),(18x40),(40x40) | 15d | 2027-02-05 | 2027-02-26 | 48FF |  | 300d |  |
| 53 |  | V - (18x50) | 10d | 2027-06-29 | 2027-07-13 | 106 |  | 207d |  |
| 54 |  | V - (18x30) | 10d | 2027-06-29 | 2027-07-13 | 53FF |  | 207d |  |
| 55 |  | V - (40x30),(40x50) | 10d | 2027-06-29 | 2027-07-13 | 53FF |  | 207d |  |
| 56 |  | NB - (18x50) | 10d | 2027-06-29 | 2027-07-13 | 53FF |  | 207d |  |
| 57 |  | L1 - Losa Nervurada - 25 cm | 45d | 2027-03-08 | 2027-05-11 | 103 |  | 0d |  |
| 58 |  | L2 - Losa Nervurada - 30 cm | 45d | 2027-03-08 | 2027-05-11 | 57FF |  | 250d |  |
| 59 |  | L3 - Losa Nervurada - 40 cm | 45d | 2027-03-08 | 2027-05-11 | 57FF |  | 250d |  |
| 60 |  | Hormigon de losa | 1d | 2027-05-12 | 2027-05-12 | 57 |  | 0d |  |
| 61 |  | L2 - Losa Nervurada - 30 cm | 40d | 2027-07-16 | 2027-09-10 | 104 |  | 4d |  |
| 62 |  | L2 - Losa tanque | 10d | 2027-09-13 | 2027-09-24 | 61 |  | 155d |  |
| 63 |  | Hormigon de losa | 1d | 2027-09-13 | 2027-09-13 | 61 |  | 4d |  |
| 64 | 1.3.4 | **MAMPOSTERIA** | 202d | 2026-10-07 | 2027-07-29 |  |  | 0d |  |
| 65 |  | Mamposteria Ladrillo Hueco Portante 12x18x33 | 12d | 2026-11-27 | 2026-12-15 | 79 |  | 350d |  |
| 66 |  | Mamposteria Ladrillo Hueco Portante 18x18x33 | 12d | 2026-11-27 | 2026-12-15 | 65FF |  | 350d |  |
| 67 |  | Mamposteria Ladrillo Hueco Portante 12x18x33 PB | 35d | 2026-11-27 | 2027-01-19 | 79 |  | 0d |  |
| 68 |  | Mamposteria Ladrillo Hueco Portante 18x18x33 PB | 35d | 2026-11-27 | 2027-01-19 | 67FF |  | 327d |  |
| 69 |  | Mamposteria Ladrillo Hueco Portante 12x18x33 PA | 25d | 2027-05-13 | 2027-06-17 | 60 |  | 0d |  |
| 70 |  | Mamposteria Ladrillo Hueco Portante 18x18x33 PA | 25d | 2027-05-13 | 2027-06-17 | 69FF |  | 224d |  |

| ID | WBS | Task | Duration | Start | Finish | Predecessors | Total float |
| --- | --- | --- | --- | --- | --- | --- | --- |
| 71 |  | Mamposteria de contención | 12d | 2026-10-07 | 2026-10-23 | 27 | 0d |
| 72 |  | Capa Aisladora Vertical Mamposteria de contención | 2d | 2026-10-26 | 2026-10-27 | 71 | 0d |
| 73 |  | Capa Aisladora Horizontal Mampostería | 7d | 2026-10-19 | 2026-10-27 | 72FF | 383d |
| 74 |  | Capa Aisladora Horizontal bajo contrapiso | 2d | 2026-11-02 | 2026-11-03 | 13 | 378d |
| 75 |  | Capa Aisladora Vertical Mampostería - H: 50cm | 7d | 2026-10-19 | 2026-10-27 | 73FF | 383d |
| 76 |  | Capa Aisladora Vertical Muros revestido de piedra con sika monotop 107 | 15d | 2027-03-08 | 2027-03-29 | 103 | 260d |
| 77 |  | Capa Aisladora Vertical Muros revestido de piedra con sika monotop 107 PLANTA ALTA | 10d | 2027-07-16 | 2027-07-29 | 104 | 185d |
| 78 | 1.3.5 | **CONTRAPISO Y CARPETAS** | 307d | 2026-11-02 | 2028-01-21 |  | 0d |
| 79 |  | Hormigón p/contrapiso Interior Casa e=10cm | 18d | 2026-11-02 | 2026-11-26 | 13 | 0d |
| 80 |  | Hormigón p/contrapiso Exterior Galería/Quincho/Atelier/Pasillos exteriores e=10cm | 7d | 2026-11-27 | 2026-12-07 | 79 | 355d |
| 81 |  | Hormigon contrapiso primer etapa | 1d | 2026-11-27 | 2026-11-27 | 79 | 361d |
| 82 |  | Hormigón p/contrapiso Exterior Cochera e=10cm | 10d | 2026-11-13 | 2026-11-27 | 81FF | 361d |
| 83 |  | Hormigón p/contrapiso Exterior Escalones Ingreso Peatonal e=10cm | 10d | 2028-01-07 | 2028-01-20 | 107 | 73d |
| 84 |  | Hormigón p/contrapiso Exterior Deck Solarium y deck fogonero e=10cm | 10d | 2028-01-07 | 2028-01-20 | 83FF | 74d |
| 85 |  | Hormigon contrapiso segunda etapa | 1d | 2028-01-21 | 2028-01-21 | 83 | 73d |
| 86 |  | Carpeta de Nivelación Interior Casa e=10cm | 9d | 2027-10-28 | 2027-11-09 | 180 | 2d |
| 87 |  | Carpeta de Nivelación Exterior Galería/Quincho/Atelier/Pasillos exteriores e=4cm | 5d | 2027-11-03 | 2027-11-09 | 86FF | 124d |
| 88 |  | Carpeta de Nivelación Exterior Cochera e=4cm | 10d | 2027-10-27 | 2027-11-09 | 86FF | 124d |
| 89 |  | Carpeta de Nivelación ExteriorEscalones Ingreso Peatonal e=4cm | 7d | 2027-11-01 | 2027-11-09 | 86FF | 124d |
| 90 |  | Carpeta de Nivelación ExteriorDeck Solarium y deck fogonero e=4cm | 5d | 2027-11-03 | 2027-11-09 | 86FF | 124d |
| 91 |  | Hormigon carpetas planta baja | 1d | 2027-11-10 | 2027-11-10 | 86 | 2d |
| 92 |  | Carpeta de Nievelación Interior Casa e=4cm | 10d | 2027-11-09 | 2027-11-23 | 181 | 63d |
| 93 |  | Carpeta de Nievelación Exterior Terraza e=4cm | 7d | 2027-11-12 | 2027-11-23 | 92FF | 115d |
| 94 |  | Carpeta de Nievelación Exterior Deck Terraza e=4cm | 7d | 2027-11-12 | 2027-11-23 | 92FF | 115d |
| 95 |  | Hormigon carpetas planta alta | 1d | 2027-11-24 | 2027-11-24 | 92 | 63d |
| 96 |  | Carpeta de Nivelación de Cubierta e=4 cm (techo PB) | 5d | 2027-10-26 | 2027-11-01 | 97 | 130d |
| 97 |  | Carpeta de Nivelación de Cubierta e=4 cm (techo PA) | 12d | 2027-10-07 | 2027-10-25 | 100 | 31d |
| 98 |  | Cubierta común sobre Losa - Hormigon de Pendiente (carga) - 10 cm (techo PB) | 7d | 2027-09-27 | 2027-10-05 | 99FF | 148d |
| 99 |  | Cubierta común sobre Losa - Hormigon de Pendiente (carga) - 10 cm (techo PA) | 10d | 2027-09-22 | 2027-10-05 | 159 | 31d |
| 100 |  | Hormigon de carga | 1d | 2027-10-06 | 2027-10-06 | 99 | 31d |
| 101 |  | Impermeabilización en cubierta total (con parapeto-h:20cm)* | 10d | 2027-10-26 | 2027-11-08 | 97 | 31d |
| 102 | 1.3.6 | **REVOQUES** | 263d | 2027-01-20 | 2028-02-03 |  | 0d |
| 103 |  | Revoque c/ azotado hidrof. cementicio en mamp. | 20d | 2027-02-05 | 2027-03-05 | 105 | 0d |
| 104 |  | Revoque c/ azotado hidrof. cementicio en mamp. | 12d | 2027-06-29 | 2027-07-15 | 106 | 4d |
| 105 |  | Azotado Cementicio Interior | 12d | 2027-01-20 | 2027-02-04 | 67 | 0d |
| 106 |  | Azotado Cementicio Interior | 7d | 2027-06-18 | 2027-06-28 | 69 | 0d |
| 107 |  | Revoque Fino Exterior | 18d | 2027-12-14 | 2028-01-06 | 108 | 72d |
| 108 |  | Revoque Fino Exterior | 12d | 2027-11-25 | 2027-12-13 | 95 | 63d |
| 109 |  | Engrosado + Enlucido de Yeso | 15d | 2028-01-14 | 2028-02-03 | 112 | 31d |
| 110 |  | Engrosado + Enlucido de Yeso | 10d | 2027-12-15 | 2027-12-28 | 120 | 31d |
| 111 | 1.3.7 | **CIELORRASO** | 264d | 2027-03-08 | 2028-03-22 |  | 31d |
| 112 |  | Cielorraso de Yeso (engrosado+enlucido) - interior | 12d | 2027-12-29 | 2028-01-13 | 110 | 31d |
| 113 |  | Cielorraso de durlock (ubicación equipos AA°) - interior | 10d | 2028-02-14 | 2028-02-25 | 175 | 31d |
| 114 |  | Cielorraso de Rev. Grueso - Exterior | 10d | 2027-03-08 | 2027-03-19 | 103 | 285d |
| 115 |  | Cielorraso de Rev. Fino - Exterior | 12d | 2028-01-07 | 2028-01-24 | 107 | 72d |
| 116 |  | Cielorraso de Rev. plastico - Exterior | 12d | 2027-12-28 | 2028-01-12 | 263 | 80d |
| 117 |  | Cielorraso de revestimiento de madera (cochera)* | 8d | 2028-03-13 | 2028-03-22 | 125FF | 31d |
| 118 |  | Cortinero (estructura + emplacado) | 5d | 2028-02-21 | 2028-02-25 | 113FF | 49d |
| 119 |  | Cielorraso de Yeso interior (engrosado+enlucido) h: 2,80m | 10d | 2027-11-09 | 2027-11-23 | 101 | 31d |
| 120 |  | Cielorraso de Yeso interior (engrosado+enlucido) h: 6,00m | 14d | 2027-11-24 | 2027-12-14 | 119 | 31d |
| 121 |  | Cielorraso de durlock (ubicación equipos AA°) - interior | 10d | 2028-02-28 | 2028-03-10 | 113 | 31d |
| 122 |  | Cielorraso de Rev. Grueso - Exterior | 10d | 2027-07-16 | 2027-07-29 | 104 | 195d |
| 123 |  | Cielorraso de Rev. Fino - Exterior | 12d | 2027-12-14 | 2027-12-29 | 108 | 90d |
| 124 |  | Cielorraso de Rev. plastico - Exterior | 12d | 2028-01-20 | 2028-02-04 | 269 | 63d |
| 125 |  | Cielorraso de revestimiento de madera h: 5,90m* | 8d | 2028-03-13 | 2028-03-22 | 121 | 31d |
| 126 |  | Cielorraso de revestimiento de madera h: 2,55m* | 8d | 2028-03-13 | 2028-03-22 | 125FF | 31d |
| 127 |  | Cortinero (estructura + emplacado) | 5d | 2028-03-06 | 2028-03-10 | 121FF | 39d |
| 128 | 1.3.8 | **VARIOS** | 312d | 2026-11-23 | 2028-02-18 |  | 54d |
| 129 |  | Escalera de Hº Aº in situ (huella de madera) - PB a PA | 7d | 2027-05-04 | 2027-05-12 | 60FF | 249d |
| 130 |  | Escalera de Hº Aº Visto con escalones en voladizo - PB a PA | 10d | 2028-02-04 | 2028-02-18 | 109 | 54d |
| 131 |  | Asador + horno (3,00 m de largo) | 5d | 2027-01-13 | 2027-01-19 | 67FF | 327d |
| 132 |  | Veredas Perimetrales con Cordon - Ancho 40cm* | 5d | 2026-11-23 | 2026-11-27 | 81FF | 361d |
| 133 | 1.3.9 | **HERRERIA** | 113d | 2027-01-06 | 2027-06-17 |  | 224d |
| 134 |  | CM01- 2UPN 200 (7 columnas) 3,00 mts de largo | 10d | 2027-01-06 | 2027-01-19 | 67FF | 320d |
| 135 |  | CM02- 2UPN 100 (12 columnas) 3,00 mts de largo | 10d | 2027-01-06 | 2027-01-19 | 134FF | 327d |
| 136 |  | CM02- 2UPN 100 (4 columnas) 3,00 mts de largo | 5d | 2027-06-11 | 2027-06-17 | 69FF | 224d |
| 137 |  | PW - Perfil W360x32,9kg | 7d | 2027-01-20 | 2027-01-28 | 134 | 320d |
| 138 |  | PW - Perfil W360x32,9kg | 7d | 2027-01-20 | 2027-01-28 | 137FF | 320d |
| 139 |  | PW - Perfil W360x32,9kg | 7d | 2027-01-20 | 2027-01-28 | 137FF | 320d |
| 140 |  | Asador - conducto de ventilacion 3,00m - 30 diam. | 3d | 2027-05-07 | 2027-05-11 | 57FF | 250d |

| ID | WBS | Task | Duration | Start | Finish | Predecessors | Total float |
| --- | --- | --- | --- | --- | --- | --- | --- |
| 141 | 1.3.10 | **INSTALACIONES SANITARIAS** | 380d | 2026-11-02 | 2028-05-08 |  | 0d |
| 142 |  | Desagues pluviales (sin zinguería) con colocacion de cámaras de inspección | 12d | 2027-06-15 | 2027-06-30 | 143 | 208d |
| 143 |  | Desagues pluviales vertical | 10d | 2027-06-01 | 2027-06-14 | 60FS+12d | 208d |
| 144 |  | Desagues pluviales vertical | 10d | 2027-09-30 | 2027-10-14 | 63FS+12d | 142d |
| 145 |  | Desagues pluviales - embudos | 3d | 2027-05-07 | 2027-05-11 | 57FF | 250d |
| 146 |  | Desagues pluviales - embudos | 3d | 2027-09-08 | 2027-09-10 | 61FF | 165d |
| 147 |  | Instalación de cloacas para 4 baños (1 completo y 3 sin ducha) en PB, 1 pileta de cocina, 1 pileta de asador, 1 pileta en lavadero, 1 pileta de atelier, lavarropas, lavavajilla, heladera; 3 baños completos en PA.* | 10d | 2026-11-02 | 2026-11-13 | 13 | 370d |
| 148 |  | Instalación de baños planta alta | 10d | 2027-09-14 | 2027-09-27 | 63 | 147d |
| 149 |  | Instalación de jacuzzi (agua y desague cloacal) | 7d | 2027-09-28 | 2027-10-06 | 148 | 147d |
| 150 |  | Desagues de 5 Equipos AA Bajo Silueta en PB, 5 Equipos AA Bajo Silueta en PA. | 3d | 2028-02-14 | 2028-02-16 | 175 | 56d |
| 151 |  | Desague de 5 equipos AA bajo silueta en PA | 3d | 2028-02-21 | 2028-02-23 | 176 | 51d |
| 152 |  | Conexión a red cloacal del barrio | 7d | 2027-07-01 | 2027-07-12 | 142 | 208d |
| 153 |  | Colocacion de artefactos sanitarios PB | 5d | 2028-04-10 | 2028-04-14 | 289FS+15d | 8d |
| 154 |  | Colocacion de artefactos sanitarios PA | 5d | 2028-04-17 | 2028-04-21 | 153 | 8d |
| 155 |  | Instalación de agua para 4 baños (1 completo y 3 sin ducha) en PB, 1 pileta de cocina, 1 pileta de asador, 1 pileta en lavadero, 1 pileta de atelier, lavarropas, lavavajilla, heladera; 3 baños completos en PA.* | 15d | 2027-02-05 | 2027-02-26 | 105 | 300d |
| 156 |  | Instalación de agua para 4 baños (1 completo y 3 sin ducha) en PB, 1 pileta de cocina, 1 pileta de asador, 1 pileta en lavadero, 1 pileta de atelier, lavarropas, lavavajilla, heladera; 3 baños completos en PA.* | 10d | 2027-06-29 | 2027-07-13 | 106 | 160d |
| 157 |  | Alimentación de agua para válvulas de inodoros con descarga directa desde tanques | 10d | 2027-09-22 | 2027-10-05 | 159 | 138d |
| 158 |  | Alimentación de agua para válvulas de inodoros con descarga directa desde tanques PLANTA BAJA | 10d | 2027-10-06 | 2027-10-20 | 157 | 138d |
| 159 |  | Alimentación de agua a tanques de reserva y 6 canillas en patio | 7d | 2027-09-13 | 2027-09-21 | 61 | 31d |
| 160 |  | Instalación de cañería para recirculación de agua caliente | 15d | 2027-07-14 | 2027-08-03 | 156 | 160d |
| 161 |  | Instalación de cañería para recirculación de agua caliente PLANTA ALTA | 12d | 2027-08-04 | 2027-08-20 | 160 | 160d |
| 162 |  | Instalación de bomba hidroneumática bajo tanque | 2d | 2028-04-24 | 2028-04-25 | 154 | 8d |
| 163 |  | Colocacion de griferias PB | 5d | 2028-04-10 | 2028-04-14 | 290 | 0d |
| 164 |  | Colocacion de griferias PA | 5d | 2028-04-17 | 2028-04-21 | 163 | 0d |
| 165 |  | Colocacion de accesorios PB | 5d | 2028-04-24 | 2028-04-28 | 164 | 0d |
| 166 |  | Colocacion de accesorios PA | 5d | 2028-05-02 | 2028-05-08 | 165 | 0d |
| 167 |  | Instalación de gas para anafe, horno cocina, horno quincho, termotanque y caldera en PB, termotanque y caldera en PA* | 15d | 2027-08-23 | 2027-09-10 | 161 | 160d |
| 168 |  | Instalación de gas para anafe, horno cocina, horno quincho, termotanque y caldera en PB, termotanque y caldera en PA* PLANTA ALTA | 15d | 2027-08-23 | 2027-09-10 | 167FF | 165d |
| 169 |  | Ventilaciones para gas. Conductos y rejillas. | 3d | 2028-02-04 | 2028-02-08 | 109 | 61d |
| 170 |  | Factibilidad de gas y plano aprobación de cañerías (se pagan en el momento) | 5d | 2027-09-13 | 2027-09-17 | 167 | 160d |
| 171 |  | Segunda inspección parcial de cañerías y ventilaciones. | 1d | 2028-02-11 | 2028-02-11 | 281 | 59d |
| 172 |  | Solicitud de servicio domiciliario (no incluye aranceles Ecogas). | 1d | 2028-03-23 | 2028-03-23 | 173 | 30d |
| 173 |  | Final de gas con artefactos colocados. | 1d | 2028-03-22 | 2028-03-22 | 174 | 30d |
| 174 |  | Colocacion de artefactos a gas | 3d | 2028-03-17 | 2028-03-21 | 289 | 30d |
| 175 |  | Sistema Bajo Silueta en PB | 5d | 2028-02-04 | 2028-02-11 | 109 | 31d |
| 176 |  | Sistema Bajo Silueta en PA | 5d | 2028-02-14 | 2028-02-18 | 175 | 51d |
| 177 |  | Instalación de cobres | 7d | 2027-09-23 | 2027-10-02 | 99FF-3ed | 150d |
| 178 |  | Losa Radiante - 5 Colectores con 2 zonas - PB | 3d | 2027-10-14 | 2027-10-18 | 63FS+30ed | 2d |
| 179 |  | Losa Radiante - 3 Colectores con 1 zona - PA | 3d | 2027-10-28 | 2027-11-01 | 180 | 63d |
| 180 |  | Piso Radiante - PB | 7d | 2027-10-19 | 2027-10-27 | 178 | 2d |
| 181 |  | Piso Radiante - PA | 5d | 2027-11-02 | 2027-11-08 | 179 | 63d |
| 182 | 1.3.11 | **INSTALACIONES ELECTRICAS Y SEÑALES DEBILES** | 449d? | 2026-07-13 | 2028-04-24 |  | 9d |
| 183 |  | Bocas p/iluminacion techo | 3d | 2027-05-10 | 2027-05-12 | 60FF | 249d |
| 184 |  | Bocas p/iluminacion pared | 10d | 2027-02-05 | 2027-02-19 | 105 | 303d |
| 185 |  | Bocas p/iluminacion piso | 3d | 2026-11-24 | 2026-11-26 | 79FF | 362d |
| 186 |  | Bocas p/ dicroica embutida interior | 3d | 2027-05-10 | 2027-05-12 | 60FF | 249d |
| 187 |  | Bocas p/ dicroica embutida exterior | 3d | 2027-05-10 | 2027-05-12 | 60FF | 249d |
| 188 |  | Tablero (por T.M y disyuntores) | 2d | 2027-02-22 | 2027-02-23 | 184 | 303d |
| 189 |  | Tablero para Ascensor (por T.M y disyuntores) | 2d | 2027-02-22 | 2027-02-23 | 188FF | 303d |
| 190 |  | Instalación de Jabalina | 1d | 2028-02-03 | 2028-02-03 | 197 | 54d |
| 191 |  | Toma individul A.A | 5d | 2028-02-04 | 2028-02-11 | 190 | 54d |
| 192 |  | Toma simple 20A | 5d | 2028-02-04 | 2028-02-11 | 191FF | 59d |
| 193 |  | Toma doble 20A | 5d | 2028-02-04 | 2028-02-11 | 191FF | 59d |
| 194 |  | Termostatos | 2d | 2027-02-18 | 2027-02-19 | 184FF | 305d |
| 195 |  | Tiras Led aleros/nichos/espejos/placares/baso alacena mesada, etc | 5d | 2028-03-17 | 2028-03-23 | 289 | 9d |
| 196 |  | Instalación artefactos comunes* | 8d | 2028-03-27 | 2028-04-05 | 195 | 9d |
| 197 |  | Conexión de acometida a Tablero | 5d | 2028-01-27 | 2028-02-02 | 208 | 54d |
| 198 |  | Cableado planta baja | 10d | 2027-12-30 | 2028-01-12 | 283 | 54d |
| 199 |  | Bocas p/iluminacion techo | 3d | 2027-09-09 | 2027-09-13 | 63FF | 164d |
| 200 |  | Bocas p/iluminacion pared | 7d | 2027-06-29 | 2027-07-07 | 106 | 208d |
| 201 |  | Bocas p/iluminacion piso | 3d | 2027-10-28 | 2027-11-02 | 181SF | 130d |
| 202 |  | Bocas p/ dicroica embutida interior | 3d | 2027-09-09 | 2027-09-13 | 199FF | 164d |
| 203 |  | Bocas p/ dicroica embutida exterior | 3d | 2027-09-09 | 2027-09-13 | 199FF | 164d |
| 204 |  | Tablero seccional (por T.M y disyuntores) | 2d | 2027-07-08 | 2027-07-12 | 200 | 208d |
| 205 |  | Toma individul A.A | 5d | 2028-02-14 | 2028-02-18 | 191 | 54d |
| 206 |  | Toma doble 20A | 5d | 2028-02-14 | 2028-02-18 | 205FF | 54d |
| 207 |  | Termostatos | 3d | 2027-07-05 | 2027-07-07 | 200FF | 210d |
| 208 |  | Cableado planta alta | 10d | 2028-01-13 | 2028-01-26 | 198 | 54d |
| 209 |  | Tiras Led aleros/nichos/espejos/placares/baso alacena mesada, etc | 5d | 2028-04-06 | 2028-04-12 | 196 | 9d |
| 210 |  | Instalación artefactos comunes* | 8d | 2028-04-13 | 2028-04-24 | 209 | 9d |

| ID | WBS | Task | Duration | Start | Finish | Predecessors | Total float |
| --- | --- | --- | --- | --- | --- | --- | --- |
| 211 | 1.3.11.29 | **Instalación y configuración de Cámaras (Señales Débiles)*** | 434d? | 2026-07-13 | 2028-04-03 |  | 24d |
| 212 |  | Instalación de Cámara IP - PB | 10d | 2028-03-17 | 2028-03-31 | 289 | 24d |
| 213 |  | Central de Cámaras NVR | 1d | 2028-04-03 | 2028-04-03 | 212 | 24d |
| 214 |  | Instalación de camara IP - PB | 5d | 2028-01-03 | 2028-01-07 | 282 | 83d |
| 215 |  | Instalación y configuración de Portero (Señales Débiles)* | 1d? | 2026-07-13 | 2026-07-13 |  | 457d |
| 216 |  | Instalación de Video Portero Visor con pantalla (ver ubicación de pantalla) - PB | 5d | 2028-03-27 | 2028-03-31 | 212FF | 25d |
| 217 |  | Instalación y configuración de Alarma (Señales Débiles)** | 1d? | 2026-07-13 | 2026-07-13 |  | 457d |
| 218 |  | Instalación de sensor inalámbrico - PB | 7d | 2028-03-22 | 2028-03-31 | 212FF | 25d |
| 219 |  | Central de Alarma | 2d | 2028-03-30 | 2028-03-31 | 212FF | 25d |
| 220 |  | Tablero Alarma | 2d | 2028-03-30 | 2028-03-31 | 212FF | 25d |
| 221 |  | Sirena | 1d | 2028-03-31 | 2028-03-31 | 212FF | 25d |
| 222 |  | Instalación de sensor inalámbrico - PA | 7d | 2028-03-22 | 2028-03-31 | 212FF | 25d |
| 223 |  | Tablero Alarma | 2d | 2028-03-30 | 2028-03-31 | 212FF | 25d |
| 224 |  | Instalación y configuración de Red de Datos (Señales Débiles) | 1d? | 2026-07-13 | 2026-07-13 |  | 457d |
| 225 |  | Instalación de Acces Point (repetidor) - PB | 5d | 2028-03-27 | 2028-03-31 | 212FF | 25d |
| 226 |  | Instalación de Switch POE (central derivador de datos)* | 5d | 2028-03-27 | 2028-03-31 | 212FF | 25d |
| 227 |  | Instalación de Rack para NVR, central y switches | 2d | 2028-03-30 | 2028-03-31 | 212FF | 25d |
| 228 |  | Instalación de Acces Point (repetidor) - PA | 5d | 2028-03-27 | 2028-03-31 | 212FF | 25d |
| 229 | 1.3.12 | **PISOS Y REVESTIMIENTOS** | 456d | 2026-07-13 | 2028-05-04 |  | 2d |
| 230 | 1.3.12.1 | **Pisos Interiores** | 52d | 2027-11-11 | 2028-01-25 |  | 2d |
| 231 |  | S1 - Porcelanato 20x120 Simil Madera (interior casa) | 20d | 2027-11-11 | 2027-12-10 | 91 | 2d |
| 232 |  | S3 - Porcelanato 60x60 a definir (baños y lavadero) | 10d | 2027-12-13 | 2027-12-24 | 231 | 2d |
| 233 |  | S11 - Cemento alisado (interior de casa) | 12d | 2027-12-27 | 2028-01-11 | 232 | 2d |
| 234 |  | S3 - Porcelanato 60x60 a definir (baños) | 10d | 2028-01-12 | 2028-01-25 | 233 | 2d |
| 235 | 1.3.12.2 | **Pisos Exteriores** | 456d | 2026-07-13 | 2028-05-04 |  | 2d |
| 236 |  | S2 - Porcelanato Travertino (galería-atelier-quincho-pasillos exteriores) | 15d | 2028-01-26 | 2028-02-16 | 234 | 2d |
| 237 |  | S4 - Porcelanato 60x60 Simil Hormigon (cochera) | 12d | 2028-02-17 | 2028-03-03 | 236 | 2d |
| 238 |  | S5 - Cemento alisado de alto transito exterior (escalones de ingreso peatonal) | 7d | 2028-01-13 | 2028-01-21 | 85FF | 73d |
| 239 |  | S6 - Corteza de madera (canteros y bordes de veredas) | 5d | 2026-07-13 | 2026-07-17 |  | 453d |
| 240 |  | S7 - Laja de piedra tipo Pirca (ingreso cochera-estacionamiento vehicular-expansión quincho-fogonero) | 30d | 2028-03-06 | 2028-04-17 | 237 | 2d |
| 241 |  | S8 - Deck de madera exterior (deck solarium-deck fogonero) | 7d | 2027-12-30 | 2028-01-07 | 283 | 49d |
| 242 |  | S9 - Durmientes de madera | 5d | 2028-01-10 | 2028-01-14 | 241 | 49d |
| 243 |  | S10 - Porcelanato 20x20 Bali Stone (pileta) | 0d | 2028-01-14 | 2028-01-14 | 242 | 78d |
| 244 |  | S12 - Revestimiento de madera (escalera) | 12d | 2028-01-17 | 2028-02-01 | 242 | 49d |
| 245 |  | S2 - Porcelanato Travertino (terraza) | 12d | 2028-04-18 | 2028-05-04 | 240 | 2d |
| 246 |  | S6 - Corteza de madera (estar-cubierta no accesible) | 5d | 2028-02-02 | 2028-02-08 | 244 | 49d |
| 247 |  | S8 - Deck de madera exterior (deck terraza) | 5d | 2028-02-09 | 2028-02-16 | 246 | 49d |
| 248 |  | S9 - Durmientes de madera | 7d | 2028-02-17 | 2028-02-25 | 247 | 49d |
| 249 |  | Zócalo Porcelanato (Interior PB) | 10d | 2027-12-30 | 2028-01-12 | 283 | 80d |
| 250 |  | Zócalo Porcelanato (Interior PA) | 10d | 2027-12-30 | 2028-01-12 | 283 | 80d |
| 251 |  | Bajo cocina e isla PB - H: 0,12cm (11,30 m2) | 5d | 2027-11-11 | 2027-11-17 | 91 | 118d |
| 252 |  | Bajo lavadero PB - H: 0,12cm (2,75 m2) | 5d | 2027-11-11 | 2027-11-17 | 251FF | 118d |
| 253 |  | Bajo mesada estar PB - H: 0,12cm (1,90 m2) | 5d | 2027-11-11 | 2027-11-17 | 251FF | 118d |
| 254 |  | Bajo atelier PB - H: 0,12cm (2,40 m2) | 5d | 2027-11-11 | 2027-11-17 | 251FF | 118d |
| 255 |  | Bajo mesada quincho PB - H: 0,12cm (4,65 m2) | 5d | 2027-11-11 | 2027-11-17 | 251FF | 118d |
| 256 | 1.3.12.10 | **Revestimientos Interiores** | 90d | 2027-12-16 | 2028-04-21 |  | 10d |
| 257 |  | Porcelanato - Cocina, baños y lavadero (definir medidas y tipo) | 7d | 2027-12-16 | 2027-12-24 | 232FF | 91d |
| 258 |  | Revestimiento Marmol Simil Piedra (a proveedor) | 10d | 2028-04-10 | 2028-04-21 | 290 | 10d |
| 259 |  | Revestimiento Ladrillos Refractarios | 2d | 2027-12-27 | 2027-12-28 | 257 | 91d |
| 260 |  | Porcelanato - Baños (definir medidas y tipo) | 7d | 2028-01-17 | 2028-01-25 | 234FF | 71d |
| 261 |  | Revestimiento Marmol Simil Piedra (a proveedor) | 10d | 2028-04-10 | 2028-04-21 | 290 | 10d |
| 262 | 1.3.12.11 | **Revestimientos Exteriores** | 208d | 2027-03-30 | 2028-01-24 |  | 72d |
| 263 |  | Revestimiento plástico en vigas y aleros - (definir color) | 10d | 2027-12-14 | 2027-12-27 | 108 | 63d |
| 264 |  | Revestimiento de Piedra - (Tipo pirca) | 20d | 2027-03-30 | 2027-04-27 | 76 | 260d |
| 265 |  | Revestimiento de Hormigón Visto | 25d | 2027-04-08 | 2027-05-12 | 60FF | 249d |
| 266 |  | Revestimiento WPC Simil Madera* | 10d | 2027-12-28 | 2028-01-10 | 263 | 82d |
| 267 |  | Revestimiento WPC Varillado* | 10d | 2027-12-28 | 2028-01-10 | 266FF | 82d |
| 268 |  | Revestimiento plástico en muros - (definir color) | 10d | 2027-12-28 | 2028-01-10 | 263 | 63d |
| 269 |  | Revestimiento plástico en vigas y aleros - (definir color) | 7d | 2028-01-11 | 2028-01-19 | 268 | 63d |
| 270 |  | Revestimiento de Piedra - (Tipo pirca) | 10d | 2027-07-30 | 2027-08-12 | 77 | 185d |
| 271 |  | Revestimiento de Hormigón Visto | 15d | 2027-08-24 | 2027-09-13 | 63FF | 164d |
| 272 |  | Revestimiento WPC Simil Madera* | 10d | 2028-01-11 | 2028-01-24 | 268 | 72d |
| 273 |  | Revestimiento WPC Varillado* | 10d | 2028-01-11 | 2028-01-24 | 272FF | 72d |
| 274 | 1.3.13 | **PINTURA** | 277d | 2027-01-26 | 2028-03-01 |  | 46d |
| 275 |  | Latex Interior PB | 18d | 2028-02-04 | 2028-03-01 | 109 | 46d |
| 276 |  | Latex Interior PA | 12d | 2028-01-12 | 2028-01-27 | 110FS+10d | 69d |
| 277 |  | Esmalte Sintetico en columnas y vigas metalicas* | 3d | 2027-01-26 | 2027-01-28 | 139FF | 320d |
| 278 |  | Esmalte Sintetico en conductos metalicos* | 1d | 2027-05-11 | 2027-05-11 | 140FF | 250d |
| 279 | 1.3.14 | **CARPINTERIAS** | 157d | 2027-06-29 | 2028-02-09 |  | 0d |
| 280 |  | Vanos / premarcos | 7d | 2027-06-29 | 2027-07-07 | 106 | 0d |

| ID | WBS | Task | Duration | Start | Finish | Predecessors | Total float |
| --- | --- | --- | --- | --- | --- | --- | --- |
| 281 |  | Puertas de madera* | 150d | 2027-07-08 | 2028-02-09 | 280 | 59d |
| 282 |  | Puertas de aluminio* | 2d | 2027-12-30 | 2027-12-31 | 283 | 83d |
| 283 |  | Aberturas de PVC* | 120d | 2027-07-08 | 2027-12-29 | 280 | 0d |
| 284 | 1.3.15 | **VARIOS** | 314d | 2026-07-13 | 2027-10-11 |  | 144d |
| 285 | 1.3.15.1 | **Pileta** | 20d | 2027-09-14 | 2027-10-11 |  | 144d |
| 286 |  | Piscina con desborde infinito + solarium húmedo* | 20d | 2027-09-14 | 2027-10-11 | 63 | 144d |
| 287 | 1.3.15.2 | **Sistema de bombeo cloacal** | 1d | 2026-07-13 | 2026-07-13 |  | 457d |
| 288 |  | Sistema de bombeo cloacal (en caso de necesitarlo) | 1d | 2026-07-13 | 2026-07-13 |  | 457d |
| 289 |  | Muebles | 15d | 2028-02-25 | 2028-03-16 | 283FS+40d | 0d |
| 290 |  | Mesadas | 15d | 2028-03-17 | 2028-04-07 | 289 | 0d |
| 291 |  | Firma Acta recepcion Provisoria | 0d | 2028-05-08 | 2028-05-08 | 4 | 0d |
| 292 |  | Posventa | 12emo | 2028-05-08 | 2029-05-03 | 291 | 0d |

## Version 2 (data date 2026-07-28, saved 2026-10-07)

Last finish 2029-05-03 → 2029-05-11 (+8d).

Changed:

| ID | Task | Start | Finish | Duration | Total float |
| --- | --- | --- | --- | --- | --- |
| 4 | **OBRA VIVIENDA CAROLA RUDA** |  | 2028-05-08 → 2028-05-16 (+8d) | 458d? → 464d? |  |
| 11 | **CONFORMACIÓN DE TERRENO** |  | 2026-10-30 → 2026-11-09 (+10d) | 78d → 84d |  |
| 13 | Relleno de terreno | 2026-10-28 → 2026-11-05 (+8d) | 2026-10-30 → 2026-11-09 (+10d) |  |  |
| 14 | **ESTRUCTURA Y ALBAÑILERIA** |  | 2027-09-24 → 2027-10-04 (+10d) | 303d → 309d |  |
| 28 | C1 - (0,18x1,50) - 2 unid - (3,0 m de altura) | 2027-01-11 → 2027-01-19 (+8d) | 2027-01-19 → 2027-01-27 (+8d) |  |  |
| 29 | C2 - (0,18x1,00) - 1 unid - (3,0 m de altura) | 2027-01-11 → 2027-01-19 (+8d) | 2027-01-19 → 2027-01-27 (+8d) |  |  |
| 30 | C3 - (0,18x0,90) - 2 unid - (3,0 m de altura) | 2027-01-11 → 2027-01-19 (+8d) | 2027-01-19 → 2027-01-27 (+8d) |  |  |
| 31 | C4 - (0,18x0,80) - 2 unid - (3,0 m de altura) | 2027-01-11 → 2027-01-19 (+8d) | 2027-01-19 → 2027-01-27 (+8d) |  |  |
| 32 | C5 - (0,18x0,60) - 2 unid - (3,0 m de altura) | 2027-01-11 → 2027-01-19 (+8d) | 2027-01-19 → 2027-01-27 (+8d) |  |  |
| 33 | C6 - (0,18x0,50) - 3 unid - (3,0 m de altura) | 2027-01-11 → 2027-01-19 (+8d) | 2027-01-19 → 2027-01-27 (+8d) |  |  |
| 34 | C7 - (0,18x0,70) - 6 unid - (3,0 m de altura) | 2027-01-11 → 2027-01-19 (+8d) | 2027-01-19 → 2027-01-27 (+8d) |  |  |
| 35 | C9 - (0,18x0,18) - 43 unid - (3,0 m de altura) | 2027-01-11 → 2027-01-19 (+8d) | 2027-01-19 → 2027-01-27 (+8d) |  |  |
| 36 | C10 - (0,18x0,18) - 12 unid - (3,0 m de altura) | 2027-01-11 → 2027-01-19 (+8d) | 2027-01-19 → 2027-01-27 (+8d) |  |  |
| 37 | C11 - (0,12x0,30) - 33 unid - (3,0 m de altura) | 2027-01-11 → 2027-01-19 (+8d) | 2027-01-19 → 2027-01-27 (+8d) |  |  |
| 38 | C1 - (0,18x1,50) - 1 unid - (2,8 m de altura) | 2027-06-09 → 2027-06-17 (+8d) | 2027-06-17 → 2027-06-25 (+8d) |  |  |
| 39 | C4 - (0,18x0,80) - 1 unid - (2,8 m de altura) | 2027-06-09 → 2027-06-17 (+8d) | 2027-06-17 → 2027-06-25 (+8d) |  |  |
| 40 | C7 - (0,18x0,70) - 1 unid - (2,8 m de altura) | 2027-06-09 → 2027-06-17 (+8d) | 2027-06-17 → 2027-06-25 (+8d) |  |  |
| 41 | C9 - (0,18x0,18) - 41 unid - (2,8 m de altura) | 2027-06-09 → 2027-06-17 (+8d) | 2027-06-17 → 2027-06-25 (+8d) |  |  |
| 42 | C10 - (0,18x0,18) - 2 unid - (2,8 m de altura) | 2027-06-09 → 2027-06-17 (+8d) | 2027-06-17 → 2027-06-25 (+8d) |  |  |
| 43 | C11 - (0,12x0,30) - 4 unid - (2,8 m de altura) | 2027-06-09 → 2027-06-17 (+8d) | 2027-06-17 → 2027-06-25 (+8d) |  |  |
| 44 | Ce - (0,18x0,18) - 3 unid - (3,0 m de altura) | 2027-01-11 → 2027-01-19 (+8d) | 2027-01-19 → 2027-01-27 (+8d) |  |  |
| 45 | Ce - (0,18x0,18) - 18 unid - (2,8 m de altura) | 2027-06-09 → 2027-06-17 (+8d) | 2027-06-17 → 2027-06-25 (+8d) |  |  |
| 46 | EH - (0,18x0,30), (0,18x0,40) | 2027-02-22 → 2027-03-02 (+8d) | 2027-02-26 → 2027-03-08 (+10d) |  |  |
| 47 | EH - (0,18x0,30) | 2027-07-06 → 2027-07-15 (+9d) | 2027-07-13 → 2027-07-21 (+8d) |  |  |
| 48 | V - (18x100),(18x120),(30x100),(40x100) | 2027-02-05 → 2027-02-16 (+11d) | 2027-02-26 → 2027-03-08 (+10d) |  |  |
| 49 | V - (18x50) | 2027-02-05 → 2027-02-16 (+11d) | 2027-02-26 → 2027-03-08 (+10d) |  |  |
| 50 | V - (18x30) | 2027-02-05 → 2027-02-16 (+11d) | 2027-02-26 → 2027-03-08 (+10d) |  |  |
| 51 | V - (30x30),(30x40),(40x40) | 2027-02-05 → 2027-02-16 (+11d) | 2027-02-26 → 2027-03-08 (+10d) |  |  |
| 52 | NB - (18x50),(18x40),(40x40) | 2027-02-05 → 2027-02-16 (+11d) | 2027-02-26 → 2027-03-08 (+10d) |  |  |
| 53 | V - (18x50) | 2027-06-29 → 2027-07-07 (+8d) | 2027-07-13 → 2027-07-21 (+8d) |  |  |
| 54 | V - (18x30) | 2027-06-29 → 2027-07-07 (+8d) | 2027-07-13 → 2027-07-21 (+8d) |  |  |
| 55 | V - (40x30),(40x50) | 2027-06-29 → 2027-07-07 (+8d) | 2027-07-13 → 2027-07-21 (+8d) |  |  |
| 56 | NB - (18x50) | 2027-06-29 → 2027-07-07 (+8d) | 2027-07-13 → 2027-07-21 (+8d) |  |  |
| 57 | L1 - Losa Nervurada - 25 cm | 2027-03-08 → 2027-03-16 (+8d) | 2027-05-11 → 2027-05-19 (+8d) |  |  |
| 58 | L2 - Losa Nervurada - 30 cm | 2027-03-08 → 2027-03-16 (+8d) | 2027-05-11 → 2027-05-19 (+8d) |  |  |
| 59 | L3 - Losa Nervurada - 40 cm | 2027-03-08 → 2027-03-16 (+8d) | 2027-05-11 → 2027-05-19 (+8d) |  |  |
| 60 | Hormigon de losa | 2027-05-12 → 2027-05-20 (+8d) | 2027-05-12 → 2027-05-20 (+8d) |  |  |
| 61 | L2 - Losa Nervurada - 30 cm | 2027-07-16 → 2027-07-26 (+10d) | 2027-09-10 → 2027-09-20 (+10d) |  | 4d → 3d |
| 62 | L2 - Losa tanque | 2027-09-13 → 2027-09-21 (+8d) | 2027-09-24 → 2027-10-04 (+10d) |  |  |
| 63 | Hormigon de losa | 2027-09-13 → 2027-09-21 (+8d) | 2027-09-13 → 2027-09-21 (+8d) |  | 4d → 3d |
| 64 | **MAMPOSTERIA** |  | 2027-07-29 → 2027-08-06 (+8d) | 202d → 208d |  |
| 65 | Mamposteria Ladrillo Hueco Portante 12x18x33 | 2026-11-27 → 2026-12-07 (+10d) | 2026-12-15 → 2026-12-23 (+8d) |  |  |
| 66 | Mamposteria Ladrillo Hueco Portante 18x18x33 | 2026-11-27 → 2026-12-07 (+10d) | 2026-12-15 → 2026-12-23 (+8d) |  |  |
| 67 | Mamposteria Ladrillo Hueco Portante 12x18x33 PB | 2026-11-27 → 2026-12-07 (+10d) | 2027-01-19 → 2027-01-27 (+8d) |  |  |
| 68 | Mamposteria Ladrillo Hueco Portante 18x18x33 PB | 2026-11-27 → 2026-12-07 (+10d) | 2027-01-19 → 2027-01-27 (+8d) |  |  |
| 69 | Mamposteria Ladrillo Hueco Portante 12x18x33 PA | 2027-05-13 → 2027-05-21 (+8d) | 2027-06-17 → 2027-06-25 (+8d) |  |  |
| 70 | Mamposteria Ladrillo Hueco Portante 18x18x33 PA | 2027-05-13 → 2027-05-21 (+8d) | 2027-06-17 → 2027-06-25 (+8d) |  |  |
| 71 | Mamposteria de contención |  | 2026-10-23 → 2026-10-28 (+5d) | 12d → 15d |  |
| 72 | Capa Aisladora Vertical Mamposteria de contención | 2026-10-26 → 2026-10-29 (+3d) | 2026-10-27 → 2026-11-04 (+8d) | 2d → 5d |  |
| 73 | Capa Aisladora Horizontal Mampostería | 2026-10-19 → 2026-10-27 (+8d) | 2026-10-27 → 2026-11-04 (+8d) |  |  |
| 74 | Capa Aisladora Horizontal bajo contrapiso | 2026-11-02 → 2026-11-10 (+8d) | 2026-11-03 → 2026-11-11 (+8d) |  |  |
| 75 | Capa Aisladora Vertical Mampostería - H: 50cm | 2026-10-19 → 2026-10-27 (+8d) | 2026-10-27 → 2026-11-04 (+8d) |  |  |
| 76 | Capa Aisladora Vertical Muros revestido de piedra con sika monotop 107 | 2027-03-08 → 2027-03-16 (+8d) | 2027-03-29 → 2027-04-07 (+9d) |  |  |
| 77 | Capa Aisladora Vertical Muros revestido de piedra con sika monotop 107 PLANTA ALTA | 2027-07-16 → 2027-07-26 (+10d) | 2027-07-29 → 2027-08-06 (+8d) |  |  |
| 78 | **CONTRAPISO Y CARPETAS** | 2026-11-02 → 2026-11-10 (+8d) | 2028-01-21 → 2028-01-31 (+10d) |  |  |
| 79 | Hormigón p/contrapiso Interior Casa e=10cm | 2026-11-02 → 2026-11-10 (+8d) | 2026-11-26 → 2026-12-04 (+8d) |  |  |
| 80 | Hormigón p/contrapiso Exterior Galería/Quincho/Atelier/Pasillos exteriores e=10cm | 2026-11-27 → 2026-12-07 (+10d) | 2026-12-07 → 2026-12-16 (+9d) |  |  |
| 81 | Hormigon contrapiso primer etapa | 2026-11-27 → 2026-12-07 (+10d) | 2026-11-27 → 2026-12-07 (+10d) |  |  |
| 82 | Hormigón p/contrapiso Exterior Cochera e=10cm | 2026-11-13 → 2026-11-24 (+11d) | 2026-11-27 → 2026-12-07 (+10d) |  |  |
| 83 | Hormigón p/contrapiso Exterior Escalones Ingreso Peatonal e=10cm | 2028-01-07 → 2028-01-17 (+10d) | 2028-01-20 → 2028-01-28 (+8d) |  |  |
| 84 | Hormigón p/contrapiso Exterior Deck Solarium y deck fogonero e=10cm | 2028-01-07 → 2028-01-17 (+10d) | 2028-01-20 → 2028-01-28 (+8d) |  |  |
| 85 | Hormigon contrapiso segunda etapa | 2028-01-21 → 2028-01-31 (+10d) | 2028-01-21 → 2028-01-31 (+10d) |  |  |
| 86 | Carpeta de Nivelación Interior Casa e=10cm | 2027-10-28 → 2027-11-05 (+8d) | 2027-11-09 → 2027-11-17 (+8d) |  |  |
| 87 | Carpeta de Nivelación Exterior Galería/Quincho/Atelier/Pasillos exteriores e=4cm | 2027-11-03 → 2027-11-11 (+8d) | 2027-11-09 → 2027-11-17 (+8d) |  |  |
| 88 | Carpeta de Nivelación Exterior Cochera e=4cm | 2027-10-27 → 2027-11-04 (+8d) | 2027-11-09 → 2027-11-17 (+8d) |  |  |
| 89 | Carpeta de Nivelación ExteriorEscalones Ingreso Peatonal e=4cm | 2027-11-01 → 2027-11-09 (+8d) | 2027-11-09 → 2027-11-17 (+8d) |  |  |
| 90 | Carpeta de Nivelación ExteriorDeck Solarium y deck fogonero e=4cm | 2027-11-03 → 2027-11-11 (+8d) | 2027-11-09 → 2027-11-17 (+8d) |  |  |
| 91 | Hormigon carpetas planta baja | 2027-11-10 → 2027-11-19 (+9d) | 2027-11-10 → 2027-11-19 (+9d) |  |  |
| 92 | Carpeta de Nievelación Interior Casa e=4cm | 2027-11-09 → 2027-11-17 (+8d) | 2027-11-23 → 2027-12-01 (+8d) |  |  |
| 93 | Carpeta de Nievelación Exterior Terraza e=4cm | 2027-11-12 → 2027-11-23 (+11d) | 2027-11-23 → 2027-12-01 (+8d) |  |  |

| ID | Task | Start | Finish | Total float |
| --- | --- | --- | --- | --- |
| 94 | Carpeta de Nievelación Exterior Deck Terraza e=4cm | 2027-11-12 → 2027-11-23 (+11d) | 2027-11-23 → 2027-12-01 (+8d) |  |
| 95 | Hormigon carpetas planta alta | 2027-11-24 → 2027-12-02 (+8d) | 2027-11-24 → 2027-12-02 (+8d) |  |
| 96 | Carpeta de Nivelación de Cubierta e=4 cm (techo PB) | 2027-10-26 → 2027-11-03 (+8d) | 2027-11-01 → 2027-11-09 (+8d) |  |
| 97 | Carpeta de Nivelación de Cubierta e=4 cm (techo PA) | 2027-10-07 → 2027-10-18 (+11d) | 2027-10-25 → 2027-11-02 (+8d) |  |
| 98 | Cubierta común sobre Losa - Hormigon de Pendiente (carga) - 10 cm (techo PB) | 2027-09-27 → 2027-10-05 (+8d) | 2027-10-05 → 2027-10-14 (+9d) |  |
| 99 | Cubierta común sobre Losa - Hormigon de Pendiente (carga) - 10 cm (techo PA) | 2027-09-22 → 2027-09-30 (+8d) | 2027-10-05 → 2027-10-14 (+9d) |  |
| 100 | Hormigon de carga | 2027-10-06 → 2027-10-15 (+9d) | 2027-10-06 → 2027-10-15 (+9d) |  |
| 101 | Impermeabilización en cubierta total (con parapeto-h:20cm)* | 2027-10-26 → 2027-11-03 (+8d) | 2027-11-08 → 2027-11-16 (+8d) |  |
| 102 | **REVOQUES** | 2027-01-20 → 2027-01-28 (+8d) | 2028-02-03 → 2028-02-14 (+11d) |  |
| 103 | Revoque c/ azotado hidrof. cementicio en mamp. | 2027-02-05 → 2027-02-16 (+11d) | 2027-03-05 → 2027-03-15 (+10d) |  |
| 104 | Revoque c/ azotado hidrof. cementicio en mamp. | 2027-06-29 → 2027-07-07 (+8d) | 2027-07-15 → 2027-07-23 (+8d) | 4d → 3d |
| 105 | Azotado Cementicio Interior | 2027-01-20 → 2027-01-28 (+8d) | 2027-02-04 → 2027-02-15 (+11d) |  |
| 106 | Azotado Cementicio Interior | 2027-06-18 → 2027-06-28 (+10d) | 2027-06-28 → 2027-07-06 (+8d) |  |
| 107 | Revoque Fino Exterior | 2027-12-14 → 2027-12-22 (+8d) | 2028-01-06 → 2028-01-14 (+8d) |  |
| 108 | Revoque Fino Exterior | 2027-11-25 → 2027-12-03 (+8d) | 2027-12-13 → 2027-12-21 (+8d) |  |
| 109 | Engrosado + Enlucido de Yeso | 2028-01-14 → 2028-01-24 (+10d) | 2028-02-03 → 2028-02-14 (+11d) |  |
| 110 | Engrosado + Enlucido de Yeso | 2027-12-15 → 2027-12-23 (+8d) | 2027-12-28 → 2028-01-05 (+8d) |  |
| 111 | **CIELORRASO** | 2027-03-08 → 2027-03-16 (+8d) | 2028-03-22 → 2028-03-31 (+9d) |  |
| 112 | Cielorraso de Yeso (engrosado+enlucido) - interior | 2027-12-29 → 2028-01-06 (+8d) | 2028-01-13 → 2028-01-21 (+8d) |  |
| 113 | Cielorraso de durlock (ubicación equipos AA°) - interior | 2028-02-14 → 2028-02-22 (+8d) | 2028-02-25 → 2028-03-06 (+10d) |  |
| 114 | Cielorraso de Rev. Grueso - Exterior | 2027-03-08 → 2027-03-16 (+8d) | 2027-03-19 → 2027-03-30 (+11d) |  |
| 115 | Cielorraso de Rev. Fino - Exterior | 2028-01-07 → 2028-01-17 (+10d) | 2028-01-24 → 2028-02-01 (+8d) |  |
| 116 | Cielorraso de Rev. plastico - Exterior | 2027-12-28 → 2028-01-05 (+8d) | 2028-01-12 → 2028-01-20 (+8d) |  |
| 117 | Cielorraso de revestimiento de madera (cochera)* | 2028-03-13 → 2028-03-21 (+8d) | 2028-03-22 → 2028-03-31 (+9d) |  |
| 118 | Cortinero (estructura + emplacado) | 2028-02-21 → 2028-02-29 (+8d) | 2028-02-25 → 2028-03-06 (+10d) |  |
| 119 | Cielorraso de Yeso interior (engrosado+enlucido) h: 2,80m | 2027-11-09 → 2027-11-17 (+8d) | 2027-11-23 → 2027-12-01 (+8d) |  |
| 120 | Cielorraso de Yeso interior (engrosado+enlucido) h: 6,00m | 2027-11-24 → 2027-12-02 (+8d) | 2027-12-14 → 2027-12-22 (+8d) |  |
| 121 | Cielorraso de durlock (ubicación equipos AA°) - interior | 2028-02-28 → 2028-03-07 (+8d) | 2028-03-10 → 2028-03-20 (+10d) |  |
| 122 | Cielorraso de Rev. Grueso - Exterior | 2027-07-16 → 2027-07-26 (+10d) | 2027-07-29 → 2027-08-06 (+8d) |  |
| 123 | Cielorraso de Rev. Fino - Exterior | 2027-12-14 → 2027-12-22 (+8d) | 2027-12-29 → 2028-01-06 (+8d) |  |
| 124 | Cielorraso de Rev. plastico - Exterior | 2028-01-20 → 2028-01-28 (+8d) | 2028-02-04 → 2028-02-15 (+11d) |  |
| 125 | Cielorraso de revestimiento de madera h: 5,90m* | 2028-03-13 → 2028-03-21 (+8d) | 2028-03-22 → 2028-03-31 (+9d) |  |
| 126 | Cielorraso de revestimiento de madera h: 2,55m* | 2028-03-13 → 2028-03-21 (+8d) | 2028-03-22 → 2028-03-31 (+9d) |  |
| 127 | Cortinero (estructura + emplacado) | 2028-03-06 → 2028-03-14 (+8d) | 2028-03-10 → 2028-03-20 (+10d) |  |
| 128 | **VARIOS** | 2026-11-23 → 2026-12-01 (+8d) | 2028-02-18 → 2028-02-28 (+10d) |  |
| 129 | Escalera de Hº Aº in situ (huella de madera) - PB a PA | 2027-05-04 → 2027-05-12 (+8d) | 2027-05-12 → 2027-05-20 (+8d) |  |
| 130 | Escalera de Hº Aº Visto con escalones en voladizo - PB a PA | 2028-02-04 → 2028-02-15 (+11d) | 2028-02-18 → 2028-02-28 (+10d) |  |
| 131 | Asador + horno (3,00 m de largo) | 2027-01-13 → 2027-01-21 (+8d) | 2027-01-19 → 2027-01-27 (+8d) |  |
| 132 | Veredas Perimetrales con Cordon - Ancho 40cm* | 2026-11-23 → 2026-12-01 (+8d) | 2026-11-27 → 2026-12-07 (+10d) |  |
| 133 | **HERRERIA** | 2027-01-06 → 2027-01-14 (+8d) | 2027-06-17 → 2027-06-25 (+8d) |  |
| 134 | CM01- 2UPN 200 (7 columnas) 3,00 mts de largo | 2027-01-06 → 2027-01-14 (+8d) | 2027-01-19 → 2027-01-27 (+8d) |  |
| 135 | CM02- 2UPN 100 (12 columnas) 3,00 mts de largo | 2027-01-06 → 2027-01-14 (+8d) | 2027-01-19 → 2027-01-27 (+8d) |  |
| 136 | CM02- 2UPN 100 (4 columnas) 3,00 mts de largo | 2027-06-11 → 2027-06-21 (+10d) | 2027-06-17 → 2027-06-25 (+8d) |  |
| 137 | PW - Perfil W360x32,9kg | 2027-01-20 → 2027-01-28 (+8d) | 2027-01-28 → 2027-02-05 (+8d) |  |
| 138 | PW - Perfil W360x32,9kg | 2027-01-20 → 2027-01-28 (+8d) | 2027-01-28 → 2027-02-05 (+8d) |  |
| 139 | PW - Perfil W360x32,9kg | 2027-01-20 → 2027-01-28 (+8d) | 2027-01-28 → 2027-02-05 (+8d) |  |
| 140 | Asador - conducto de ventilacion 3,00m - 30 diam. | 2027-05-07 → 2027-05-17 (+10d) | 2027-05-11 → 2027-05-19 (+8d) |  |
| 141 | **INSTALACIONES SANITARIAS** | 2026-11-02 → 2026-11-10 (+8d) | 2028-05-08 → 2028-05-16 (+8d) |  |
| 142 | Desagues pluviales (sin zinguería) con colocacion de cámaras de inspección | 2027-06-15 → 2027-06-23 (+8d) | 2027-06-30 → 2027-07-08 (+8d) |  |
| 143 | Desagues pluviales vertical | 2027-06-01 → 2027-06-09 (+8d) | 2027-06-14 → 2027-06-22 (+8d) |  |
| 144 | Desagues pluviales vertical | 2027-09-30 → 2027-10-08 (+8d) | 2027-10-14 → 2027-10-22 (+8d) |  |
| 145 | Desagues pluviales - embudos | 2027-05-07 → 2027-05-17 (+10d) | 2027-05-11 → 2027-05-19 (+8d) |  |
| 146 | Desagues pluviales - embudos | 2027-09-08 → 2027-09-16 (+8d) | 2027-09-10 → 2027-09-20 (+10d) |  |
| 147 | Instalación de cloacas para 4 baños (1 completo y 3 sin ducha) en PB, 1 pileta de cocina, 1 pileta de asador, 1 pileta en lavadero, 1 pileta de atelier, lavarropas, lavavajilla, heladera; 3 baños completos en PA.* | 2026-11-02 → 2026-11-10 (+8d) | 2026-11-13 → 2026-11-24 (+11d) |  |
| 148 | Instalación de baños planta alta | 2027-09-14 → 2027-09-22 (+8d) | 2027-09-27 → 2027-10-05 (+8d) |  |
| 149 | Instalación de jacuzzi (agua y desague cloacal) | 2027-09-28 → 2027-10-06 (+8d) | 2027-10-06 → 2027-10-15 (+9d) |  |
| 150 | Desagues de 5 Equipos AA Bajo Silueta en PB, 5 Equipos AA Bajo Silueta en PA. | 2028-02-14 → 2028-02-22 (+8d) | 2028-02-16 → 2028-02-24 (+8d) |  |
| 151 | Desague de 5 equipos AA bajo silueta en PA | 2028-02-21 → 2028-02-29 (+8d) | 2028-02-23 → 2028-03-02 (+8d) |  |
| 152 | Conexión a red cloacal del barrio | 2027-07-01 → 2027-07-12 (+11d) | 2027-07-12 → 2027-07-20 (+8d) |  |
| 153 | Colocacion de artefactos sanitarios PB | 2028-04-10 → 2028-04-18 (+8d) | 2028-04-14 → 2028-04-24 (+10d) |  |
| 154 | Colocacion de artefactos sanitarios PA | 2028-04-17 → 2028-04-25 (+8d) | 2028-04-21 → 2028-05-02 (+11d) |  |
| 155 | Instalación de agua para 4 baños (1 completo y 3 sin ducha) en PB, 1 pileta de cocina, 1 pileta de asador, 1 pileta en lavadero, 1 pileta de atelier, lavarropas, lavavajilla, heladera; 3 baños completos en PA.* | 2027-02-05 → 2027-02-16 (+11d) | 2027-02-26 → 2027-03-08 (+10d) |  |
| 156 | Instalación de agua para 4 baños (1 completo y 3 sin ducha) en PB, 1 pileta de cocina, 1 pileta de asador, 1 pileta en lavadero, 1 pileta de atelier, lavarropas, lavavajilla, heladera; 3 baños completos en PA.* | 2027-06-29 → 2027-07-07 (+8d) | 2027-07-13 → 2027-07-21 (+8d) |  |
| 157 | Alimentación de agua para válvulas de inodoros con descarga directa desde tanques | 2027-09-22 → 2027-09-30 (+8d) | 2027-10-05 → 2027-10-14 (+9d) |  |
| 158 | Alimentación de agua para válvulas de inodoros con descarga directa desde tanques PLANTA BAJA | 2027-10-06 → 2027-10-15 (+9d) | 2027-10-20 → 2027-10-28 (+8d) |  |
| 159 | Alimentación de agua a tanques de reserva y 6 canillas en patio | 2027-09-13 → 2027-09-21 (+8d) | 2027-09-21 → 2027-09-29 (+8d) |  |
| 160 | Instalación de cañería para recirculación de agua caliente | 2027-07-14 → 2027-07-22 (+8d) | 2027-08-03 → 2027-08-11 (+8d) |  |
| 161 | Instalación de cañería para recirculación de agua caliente PLANTA ALTA | 2027-08-04 → 2027-08-12 (+8d) | 2027-08-20 → 2027-08-30 (+10d) |  |
| 162 | Instalación de bomba hidroneumática bajo tanque | 2028-04-24 → 2028-05-03 (+9d) | 2028-04-25 → 2028-05-04 (+9d) |  |
| 163 | Colocacion de griferias PB | 2028-04-10 → 2028-04-18 (+8d) | 2028-04-14 → 2028-04-24 (+10d) |  |

| ID | Task | Start | Finish | Duration |
| --- | --- | --- | --- | --- |
| 164 | Colocacion de griferias PA | 2028-04-17 → 2028-04-25 (+8d) | 2028-04-21 → 2028-05-02 (+11d) |  |
| 165 | Colocacion de accesorios PB | 2028-04-24 → 2028-05-03 (+9d) | 2028-04-28 → 2028-05-09 (+11d) |  |
| 166 | Colocacion de accesorios PA | 2028-05-02 → 2028-05-10 (+8d) | 2028-05-08 → 2028-05-16 (+8d) |  |
| 167 | Instalación de gas para anafe, horno cocina, horno quincho, termotanque y caldera en PB, termotanque y caldera en PA* | 2027-08-23 → 2027-08-31 (+8d) | 2027-09-10 → 2027-09-20 (+10d) |  |
| 168 | Instalación de gas para anafe, horno cocina, horno quincho, termotanque y caldera en PB, termotanque y caldera en PA* PLANTA ALTA | 2027-08-23 → 2027-08-31 (+8d) | 2027-09-10 → 2027-09-20 (+10d) |  |
| 169 | Ventilaciones para gas. Conductos y rejillas. | 2028-02-04 → 2028-02-15 (+11d) | 2028-02-08 → 2028-02-17 (+9d) |  |
| 170 | Factibilidad de gas y plano aprobación de cañerías (se pagan en el momento) | 2027-09-13 → 2027-09-21 (+8d) | 2027-09-17 → 2027-09-27 (+10d) |  |
| 171 | Segunda inspección parcial de cañerías y ventilaciones. | 2028-02-11 → 2028-02-21 (+10d) | 2028-02-11 → 2028-02-21 (+10d) |  |
| 172 | Solicitud de servicio domiciliario (no incluye aranceles Ecogas). | 2028-03-23 → 2028-04-03 (+11d) | 2028-03-23 → 2028-04-03 (+11d) |  |
| 173 | Final de gas con artefactos colocados. | 2028-03-22 → 2028-03-31 (+9d) | 2028-03-22 → 2028-03-31 (+9d) |  |
| 174 | Colocacion de artefactos a gas | 2028-03-17 → 2028-03-28 (+11d) | 2028-03-21 → 2028-03-30 (+9d) |  |
| 175 | Sistema Bajo Silueta en PB | 2028-02-04 → 2028-02-15 (+11d) | 2028-02-11 → 2028-02-21 (+10d) |  |
| 176 | Sistema Bajo Silueta en PA | 2028-02-14 → 2028-02-22 (+8d) | 2028-02-18 → 2028-02-28 (+10d) |  |
| 177 | Instalación de cobres | 2027-09-23 → 2027-10-01 (+8d) | 2027-10-02 → 2027-10-11 (+9d) |  |
| 178 | Losa Radiante - 5 Colectores con 2 zonas - PB | 2027-10-14 → 2027-10-22 (+8d) | 2027-10-18 → 2027-10-26 (+8d) |  |
| 179 | Losa Radiante - 3 Colectores con 1 zona - PA | 2027-10-28 → 2027-11-05 (+8d) | 2027-11-01 → 2027-11-09 (+8d) |  |
| 180 | Piso Radiante - PB | 2027-10-19 → 2027-10-27 (+8d) | 2027-10-27 → 2027-11-04 (+8d) |  |
| 181 | Piso Radiante - PA | 2027-11-02 → 2027-11-10 (+8d) | 2027-11-08 → 2027-11-16 (+8d) |  |
| 182 | **INSTALACIONES ELECTRICAS Y SEÑALES DEBILES** |  | 2028-04-24 → 2028-05-03 (+9d) | 449d? → 455d? |
| 183 | Bocas p/iluminacion techo | 2027-05-10 → 2027-05-18 (+8d) | 2027-05-12 → 2027-05-20 (+8d) |  |
| 184 | Bocas p/iluminacion pared | 2027-02-05 → 2027-02-16 (+11d) | 2027-02-19 → 2027-03-01 (+10d) |  |
| 185 | Bocas p/iluminacion piso | 2026-11-24 → 2026-12-02 (+8d) | 2026-11-26 → 2026-12-04 (+8d) |  |
| 186 | Bocas p/ dicroica embutida interior | 2027-05-10 → 2027-05-18 (+8d) | 2027-05-12 → 2027-05-20 (+8d) |  |
| 187 | Bocas p/ dicroica embutida exterior | 2027-05-10 → 2027-05-18 (+8d) | 2027-05-12 → 2027-05-20 (+8d) |  |
| 188 | Tablero (por T.M y disyuntores) | 2027-02-22 → 2027-03-02 (+8d) | 2027-02-23 → 2027-03-03 (+8d) |  |
| 189 | Tablero para Ascensor (por T.M y disyuntores) | 2027-02-22 → 2027-03-02 (+8d) | 2027-02-23 → 2027-03-03 (+8d) |  |
| 190 | Instalación de Jabalina | 2028-02-03 → 2028-02-14 (+11d) | 2028-02-03 → 2028-02-14 (+11d) |  |
| 191 | Toma individul A.A | 2028-02-04 → 2028-02-15 (+11d) | 2028-02-11 → 2028-02-21 (+10d) |  |
| 192 | Toma simple 20A | 2028-02-04 → 2028-02-15 (+11d) | 2028-02-11 → 2028-02-21 (+10d) |  |
| 193 | Toma doble 20A | 2028-02-04 → 2028-02-15 (+11d) | 2028-02-11 → 2028-02-21 (+10d) |  |
| 194 | Termostatos | 2027-02-18 → 2027-02-26 (+8d) | 2027-02-19 → 2027-03-01 (+10d) |  |
| 195 | Tiras Led aleros/nichos/espejos/placares/baso alacena mesada, etc | 2028-03-17 → 2028-03-28 (+11d) | 2028-03-23 → 2028-04-03 (+11d) |  |
| 196 | Instalación artefactos comunes* | 2028-03-27 → 2028-04-04 (+8d) | 2028-04-05 → 2028-04-13 (+8d) |  |
| 197 | Conexión de acometida a Tablero | 2028-01-27 → 2028-02-04 (+8d) | 2028-02-02 → 2028-02-11 (+9d) |  |
| 198 | Cableado planta baja | 2027-12-30 → 2028-01-07 (+8d) | 2028-01-12 → 2028-01-20 (+8d) |  |
| 199 | Bocas p/iluminacion techo | 2027-09-09 → 2027-09-17 (+8d) | 2027-09-13 → 2027-09-21 (+8d) |  |
| 200 | Bocas p/iluminacion pared | 2027-06-29 → 2027-07-07 (+8d) | 2027-07-07 → 2027-07-16 (+9d) |  |
| 201 | Bocas p/iluminacion piso | 2027-10-28 → 2027-11-05 (+8d) | 2027-11-02 → 2027-11-10 (+8d) |  |
| 202 | Bocas p/ dicroica embutida interior | 2027-09-09 → 2027-09-17 (+8d) | 2027-09-13 → 2027-09-21 (+8d) |  |
| 203 | Bocas p/ dicroica embutida exterior | 2027-09-09 → 2027-09-17 (+8d) | 2027-09-13 → 2027-09-21 (+8d) |  |
| 204 | Tablero seccional (por T.M y disyuntores) | 2027-07-08 → 2027-07-19 (+11d) | 2027-07-12 → 2027-07-20 (+8d) |  |
| 205 | Toma individul A.A | 2028-02-14 → 2028-02-22 (+8d) | 2028-02-18 → 2028-02-28 (+10d) |  |
| 206 | Toma doble 20A | 2028-02-14 → 2028-02-22 (+8d) | 2028-02-18 → 2028-02-28 (+10d) |  |
| 207 | Termostatos | 2027-07-05 → 2027-07-14 (+9d) | 2027-07-07 → 2027-07-16 (+9d) |  |
| 208 | Cableado planta alta | 2028-01-13 → 2028-01-21 (+8d) | 2028-01-26 → 2028-02-03 (+8d) |  |
| 209 | Tiras Led aleros/nichos/espejos/placares/baso alacena mesada, etc | 2028-04-06 → 2028-04-14 (+8d) | 2028-04-12 → 2028-04-20 (+8d) |  |
| 210 | Instalación artefactos comunes* | 2028-04-13 → 2028-04-21 (+8d) | 2028-04-24 → 2028-05-03 (+9d) |  |
| 211 | **Instalación y configuración de Cámaras (Señales Débiles)*** |  | 2028-04-03 → 2028-04-11 (+8d) | 434d? → 440d? |
| 212 | Instalación de Cámara IP - PB | 2028-03-17 → 2028-03-28 (+11d) | 2028-03-31 → 2028-04-10 (+10d) |  |
| 213 | Central de Cámaras NVR | 2028-04-03 → 2028-04-11 (+8d) | 2028-04-03 → 2028-04-11 (+8d) |  |
| 214 | Instalación de camara IP - PB | 2028-01-03 → 2028-01-11 (+8d) | 2028-01-07 → 2028-01-17 (+10d) |  |
| 216 | Instalación de Video Portero Visor con pantalla (ver ubicación de pantalla) - PB | 2028-03-27 → 2028-04-04 (+8d) | 2028-03-31 → 2028-04-10 (+10d) |  |
| 218 | Instalación de sensor inalámbrico - PB | 2028-03-22 → 2028-03-31 (+9d) | 2028-03-31 → 2028-04-10 (+10d) |  |
| 219 | Central de Alarma | 2028-03-30 → 2028-04-07 (+8d) | 2028-03-31 → 2028-04-10 (+10d) |  |
| 220 | Tablero Alarma | 2028-03-30 → 2028-04-07 (+8d) | 2028-03-31 → 2028-04-10 (+10d) |  |
| 221 | Sirena | 2028-03-31 → 2028-04-10 (+10d) | 2028-03-31 → 2028-04-10 (+10d) |  |
| 222 | Instalación de sensor inalámbrico - PA | 2028-03-22 → 2028-03-31 (+9d) | 2028-03-31 → 2028-04-10 (+10d) |  |
| 223 | Tablero Alarma | 2028-03-30 → 2028-04-07 (+8d) | 2028-03-31 → 2028-04-10 (+10d) |  |
| 225 | Instalación de Acces Point (repetidor) - PB | 2028-03-27 → 2028-04-04 (+8d) | 2028-03-31 → 2028-04-10 (+10d) |  |
| 226 | Instalación de Switch POE (central derivador de datos)* | 2028-03-27 → 2028-04-04 (+8d) | 2028-03-31 → 2028-04-10 (+10d) |  |
| 227 | Instalación de Rack para NVR, central y switches | 2028-03-30 → 2028-04-07 (+8d) | 2028-03-31 → 2028-04-10 (+10d) |  |
| 228 | Instalación de Acces Point (repetidor) - PA | 2028-03-27 → 2028-04-04 (+8d) | 2028-03-31 → 2028-04-10 (+10d) |  |
| 229 | **PISOS Y REVESTIMIENTOS** |  | 2028-05-04 → 2028-05-12 (+8d) | 456d → 462d |
| 230 | **Pisos Interiores** | 2027-11-11 → 2027-11-22 (+11d) | 2028-01-25 → 2028-02-02 (+8d) |  |
| 231 | S1 - Porcelanato 20x120 Simil Madera (interior casa) | 2027-11-11 → 2027-11-22 (+11d) | 2027-12-10 → 2027-12-20 (+10d) |  |
| 232 | S3 - Porcelanato 60x60 a definir (baños y lavadero) | 2027-12-13 → 2027-12-21 (+8d) | 2027-12-24 → 2028-01-03 (+10d) |  |
| 233 | S11 - Cemento alisado (interior de casa) | 2027-12-27 → 2028-01-04 (+8d) | 2028-01-11 → 2028-01-19 (+8d) |  |
| 234 | S3 - Porcelanato 60x60 a definir (baños) | 2028-01-12 → 2028-01-20 (+8d) | 2028-01-25 → 2028-02-02 (+8d) |  |
| 235 | **Pisos Exteriores** |  | 2028-05-04 → 2028-05-12 (+8d) | 456d → 462d |
| 236 | S2 - Porcelanato Travertino (galería-atelier-quincho-pasillos exteriores) | 2028-01-26 → 2028-02-03 (+8d) | 2028-02-16 → 2028-02-24 (+8d) |  |

| ID | Task | Start | Finish | Duration |
| --- | --- | --- | --- | --- |
| 237 | S4 - Porcelanato 60x60 Simil Hormigon (cochera) | 2028-02-17 → 2028-02-25 (+8d) | 2028-03-03 → 2028-03-13 (+10d) |  |
| 238 | S5 - Cemento alisado de alto transito exterior (escalones de ingreso peatonal) | 2028-01-13 → 2028-01-21 (+8d) | 2028-01-21 → 2028-01-31 (+10d) |  |
| 240 | S7 - Laja de piedra tipo Pirca (ingreso cochera-estacionamiento vehicular-expansión quincho-fogonero) | 2028-03-06 → 2028-03-14 (+8d) | 2028-04-17 → 2028-04-25 (+8d) |  |
| 241 | S8 - Deck de madera exterior (deck solarium-deck fogonero) | 2027-12-30 → 2028-01-07 (+8d) | 2028-01-07 → 2028-01-17 (+10d) |  |
| 242 | S9 - Durmientes de madera | 2028-01-10 → 2028-01-18 (+8d) | 2028-01-14 → 2028-01-24 (+10d) |  |
| 243 | S10 - Porcelanato 20x20 Bali Stone (pileta) | 2028-01-14 → 2028-01-24 (+10d) | 2028-01-14 → 2028-01-24 (+10d) |  |
| 244 | S12 - Revestimiento de madera (escalera) | 2028-01-17 → 2028-01-25 (+8d) | 2028-02-01 → 2028-02-09 (+8d) |  |
| 245 | S2 - Porcelanato Travertino (terraza) | 2028-04-18 → 2028-04-26 (+8d) | 2028-05-04 → 2028-05-12 (+8d) |  |
| 246 | S6 - Corteza de madera (estar-cubierta no accesible) | 2028-02-02 → 2028-02-11 (+9d) | 2028-02-08 → 2028-02-17 (+9d) |  |
| 247 | S8 - Deck de madera exterior (deck terraza) | 2028-02-09 → 2028-02-18 (+9d) | 2028-02-16 → 2028-02-24 (+8d) |  |
| 248 | S9 - Durmientes de madera | 2028-02-17 → 2028-02-25 (+8d) | 2028-02-25 → 2028-03-06 (+10d) |  |
| 249 | Zócalo Porcelanato (Interior PB) | 2027-12-30 → 2028-01-07 (+8d) | 2028-01-12 → 2028-01-20 (+8d) |  |
| 250 | Zócalo Porcelanato (Interior PA) | 2027-12-30 → 2028-01-07 (+8d) | 2028-01-12 → 2028-01-20 (+8d) |  |
| 251 | Bajo cocina e isla PB - H: 0,12cm (11,30 m2) | 2027-11-11 → 2027-11-22 (+11d) | 2027-11-17 → 2027-11-26 (+9d) |  |
| 252 | Bajo lavadero PB - H: 0,12cm (2,75 m2) | 2027-11-11 → 2027-11-22 (+11d) | 2027-11-17 → 2027-11-26 (+9d) |  |
| 253 | Bajo mesada estar PB - H: 0,12cm (1,90 m2) | 2027-11-11 → 2027-11-22 (+11d) | 2027-11-17 → 2027-11-26 (+9d) |  |
| 254 | Bajo atelier PB - H: 0,12cm (2,40 m2) | 2027-11-11 → 2027-11-22 (+11d) | 2027-11-17 → 2027-11-26 (+9d) |  |
| 255 | Bajo mesada quincho PB - H: 0,12cm (4,65 m2) | 2027-11-11 → 2027-11-22 (+11d) | 2027-11-17 → 2027-11-26 (+9d) |  |
| 256 | **Revestimientos Interiores** | 2027-12-16 → 2027-12-24 (+8d) | 2028-04-21 → 2028-05-02 (+11d) |  |
| 257 | Porcelanato - Cocina, baños y lavadero (definir medidas y tipo) | 2027-12-16 → 2027-12-24 (+8d) | 2027-12-24 → 2028-01-03 (+10d) |  |
| 258 | Revestimiento Marmol Simil Piedra (a proveedor) | 2028-04-10 → 2028-04-18 (+8d) | 2028-04-21 → 2028-05-02 (+11d) |  |
| 259 | Revestimiento Ladrillos Refractarios | 2027-12-27 → 2028-01-04 (+8d) | 2027-12-28 → 2028-01-05 (+8d) |  |
| 260 | Porcelanato - Baños (definir medidas y tipo) | 2028-01-17 → 2028-01-25 (+8d) | 2028-01-25 → 2028-02-02 (+8d) |  |
| 261 | Revestimiento Marmol Simil Piedra (a proveedor) | 2028-04-10 → 2028-04-18 (+8d) | 2028-04-21 → 2028-05-02 (+11d) |  |
| 262 | **Revestimientos Exteriores** | 2027-03-30 → 2027-04-08 (+9d) | 2028-01-24 → 2028-02-01 (+8d) |  |
| 263 | Revestimiento plástico en vigas y aleros - (definir color) | 2027-12-14 → 2027-12-22 (+8d) | 2027-12-27 → 2028-01-04 (+8d) |  |
| 264 | Revestimiento de Piedra - (Tipo pirca) | 2027-03-30 → 2027-04-08 (+9d) | 2027-04-27 → 2027-05-05 (+8d) |  |
| 265 | Revestimiento de Hormigón Visto | 2027-04-08 → 2027-04-16 (+8d) | 2027-05-12 → 2027-05-20 (+8d) |  |
| 266 | Revestimiento WPC Simil Madera* | 2027-12-28 → 2028-01-05 (+8d) | 2028-01-10 → 2028-01-18 (+8d) |  |
| 267 | Revestimiento WPC Varillado* | 2027-12-28 → 2028-01-05 (+8d) | 2028-01-10 → 2028-01-18 (+8d) |  |
| 268 | Revestimiento plástico en muros - (definir color) | 2027-12-28 → 2028-01-05 (+8d) | 2028-01-10 → 2028-01-18 (+8d) |  |
| 269 | Revestimiento plástico en vigas y aleros - (definir color) | 2028-01-11 → 2028-01-19 (+8d) | 2028-01-19 → 2028-01-27 (+8d) |  |
| 270 | Revestimiento de Piedra - (Tipo pirca) | 2027-07-30 → 2027-08-09 (+10d) | 2027-08-12 → 2027-08-23 (+11d) |  |
| 271 | Revestimiento de Hormigón Visto | 2027-08-24 → 2027-09-01 (+8d) | 2027-09-13 → 2027-09-21 (+8d) |  |
| 272 | Revestimiento WPC Simil Madera* | 2028-01-11 → 2028-01-19 (+8d) | 2028-01-24 → 2028-02-01 (+8d) |  |
| 273 | Revestimiento WPC Varillado* | 2028-01-11 → 2028-01-19 (+8d) | 2028-01-24 → 2028-02-01 (+8d) |  |
| 274 | **PINTURA** | 2027-01-26 → 2027-02-03 (+8d) | 2028-03-01 → 2028-03-09 (+8d) |  |
| 275 | Latex Interior PB | 2028-02-04 → 2028-02-15 (+11d) | 2028-03-01 → 2028-03-09 (+8d) |  |
| 276 | Latex Interior PA | 2028-01-12 → 2028-01-20 (+8d) | 2028-01-27 → 2028-02-04 (+8d) |  |
| 277 | Esmalte Sintetico en columnas y vigas metalicas* | 2027-01-26 → 2027-02-03 (+8d) | 2027-01-28 → 2027-02-05 (+8d) |  |
| 278 | Esmalte Sintetico en conductos metalicos* | 2027-05-11 → 2027-05-19 (+8d) | 2027-05-11 → 2027-05-19 (+8d) |  |
| 279 | **CARPINTERIAS** | 2027-06-29 → 2027-07-07 (+8d) | 2028-02-09 → 2028-02-18 (+9d) |  |
| 280 | Vanos / premarcos | 2027-06-29 → 2027-07-07 (+8d) | 2027-07-07 → 2027-07-16 (+9d) |  |
| 281 | Puertas de madera* | 2027-07-08 → 2027-07-19 (+11d) | 2028-02-09 → 2028-02-18 (+9d) |  |
| 282 | Puertas de aluminio* | 2027-12-30 → 2028-01-07 (+8d) | 2027-12-31 → 2028-01-10 (+10d) |  |
| 283 | Aberturas de PVC* | 2027-07-08 → 2027-07-19 (+11d) | 2027-12-29 → 2028-01-06 (+8d) |  |
| 284 | **VARIOS** |  | 2027-10-11 → 2027-10-20 (+9d) | 314d → 320d |
| 285 | **Pileta** | 2027-09-14 → 2027-09-22 (+8d) | 2027-10-11 → 2027-10-20 (+9d) |  |
| 286 | Piscina con desborde infinito + solarium húmedo* | 2027-09-14 → 2027-09-22 (+8d) | 2027-10-11 → 2027-10-20 (+9d) |  |
| 289 | Muebles | 2028-02-25 → 2028-03-06 (+10d) | 2028-03-16 → 2028-03-27 (+11d) |  |
| 290 | Mesadas | 2028-03-17 → 2028-03-28 (+11d) | 2028-04-07 → 2028-04-17 (+10d) |  |
| 291 | Firma Acta recepcion Provisoria | 2028-05-08 → 2028-05-16 (+8d) | 2028-05-08 → 2028-05-16 (+8d) |  |
| 292 | Posventa | 2028-05-08 → 2028-05-16 (+8d) | 2029-05-03 → 2029-05-11 (+8d) |  |
