# Vivienda Venturelli - Bernal

How a schedule from MS Project XML changed from version to version. A marks actual dates.

## Version 1 (data date 2026-06-25, saved 2026-07-16)

| ID | WBS | Task | Duration | Start | Finish | Predecessors | Complete | Total float | Constraint |
| --- | --- | --- | --- | --- | --- | --- | --- | --- | --- |
| 1 | 1 | **Vivienda Diego Casali** | 755d? | 2026-06-09 A | 2029-06-10 |  |  | 0d |  |
| 2 |  | Obra Vivienda Diego Casali Contratada | 0d | 2026-06-22 | 2026-06-22 | 4SS |  | 746d | start no earlier than 2026-06-22 |
| 3 |  | Obra Vivienda Diego Casali | 0d? | 2028-07-26 | 2028-07-26 | 4FF |  | 219d |  |
| 4 | 1.3 | **OBRA VIVIENDA DIEGO CASALI** | 536d? | 2026-06-09 A | 2028-07-26 |  |  | 219d |  |
| 5 | 1.3.1 | **TAREAS PRELIMINARES** | 18d | 2026-06-09 A | 2026-07-02 A |  | 100% |  |  |
| 6 |  | Estudio de Suelos | 3d | 2026-06-22 A | 2026-06-24 A |  | 100% |  | start no earlier than 2026-06-22 |
| 7 |  | Calculo Estructural | 3d | 2026-06-22 A | 2026-06-24 A |  | 100% |  |  |
| 8 |  | Cerco Perimetral | 2d | 2026-06-22 A | 2026-06-23 A |  | 100% |  |  |
| 9 |  | Replanteo de Obra | 1d | 2026-07-02 A | 2026-07-02 A | 8FS+6d | 100% |  | start no earlier than 2026-04-27 |
| 10 |  | Armado de Pilar con Tablero de Obra | 1d | 2026-06-09 A | 2026-06-09 A |  | 100% |  |  |
| 11 | 1.3.2 | **CONFORMACIÓN DE TERRENO** | 213d | 2026-07-02 | 2027-05-10 |  |  | 0d |  |
| 12 |  | Excavación terreno | 11d | 2026-07-02 | 2026-07-17 | 9SS |  | 0d |  |
| 13 |  | Relleno de terreno | 5d | 2026-09-09 | 2026-09-15 | 110 |  | 0d |  |
| 14 |  | Relleno de terreno | 5d | 2027-05-04 | 2027-05-10 | 111 |  | 0d |  |
| 15 | 1.3.3 | **ESTRUCTURA Y ALBAÑILERIA** | 527d | 2026-06-22 | 2028-07-26 |  |  | 19d |  |
| 16 | 1.3.3.1 | **Bases Aisladas** | 186d | 2026-07-20 | 2027-04-16 |  |  | 0d |  |
| 17 |  | Base Aislada B2 (100x70x35) - PSS | 12d | 2026-07-20 | 2026-08-04 | 12 |  | 0d |  |
| 18 |  | Base Aislada B3 (120x70x35) - PSS | 12d | 2026-07-20 | 2026-08-04 | 12 |  | 715d |  |
| 19 |  | Base Aislada B4 (80x80x35) - PSS | 12d | 2026-07-20 | 2026-08-04 | 12 |  | 715d |  |
| 20 |  | Base Aislada B5 (150x90x35) - PSS | 12d | 2026-07-20 | 2026-08-04 | 12 |  | 715d |  |
| 21 |  | Base Aislada B6 (90x90x35) - PSS | 12d | 2026-07-20 | 2026-08-04 | 12 |  | 715d |  |
| 22 |  | Hormigón de bases | 1d | 2026-08-24 | 2026-08-24 | 31 |  | 687d |  |
| 23 |  | Base Aislada B1 (70x70x35) - PB | 10d | 2027-03-19 | 2027-04-05 | 141 |  | 0d |  |
| 24 |  | Base Aislada B2 (100x70x35) - PB | 10d | 2027-03-19 | 2027-04-05 | 141 |  | 550d |  |
| 25 |  | Base Aislada B3 (120x70x35) - PB | 10d | 2027-03-19 | 2027-04-05 | 141 |  | 550d |  |
| 26 |  | Base Aislada B4 (80x80x35) - PB | 10d | 2027-03-19 | 2027-04-05 | 141 |  | 550d |  |
| 27 |  | Base Aislada B5 (150x90x35) - PB | 10d | 2027-03-19 | 2027-04-05 | 141 |  | 550d |  |
| 28 |  | Base Aislada B6 (90x90x35) - PB | 10d | 2027-03-19 | 2027-04-05 | 141 |  | 550d |  |
| 29 |  | Hormigon de bases | 1d | 2027-04-16 | 2027-04-16 | 33 |  | 541d |  |
| 30 | 1.3.3.2 | **Vigas de Fundación y Riostra** | 173d | 2026-08-05 | 2027-04-15 |  |  | 0d |  |
| 31 |  | Viga Fundación VF (60x25) - PSS | 12d | 2026-08-05 | 2026-08-21 | 17 |  | 0d |  |
| 32 |  | Viga Riostra VR (20x25) - PSS | 12d | 2026-08-05 | 2026-08-21 | 17 |  | 703d |  |
| 33 |  | Viga Fundación VF (60x25) - PB | 8d | 2027-04-06 | 2027-04-15 | 23 |  | 0d |  |
| 34 |  | Viga Riostra VR (20x25) - PB | 8d | 2027-04-06 | 2027-04-15 | 23 |  | 542d |  |
| 35 | 1.3.3.3 | **Columnas.** | 242d | 2026-11-24 | 2027-11-10 |  |  | 397d |  |
| 36 |  | C1 - (0,18x0,30) - 3 unid - (2,8 m de altura) | 5d | 2026-11-24 | 2026-11-30 | 98FF |  | 634d |  |
| 37 |  | C2 - (0,18x0,80) - 1 unid - (2,8 m de altura) | 5d | 2026-11-24 | 2026-11-30 | 98FF |  | 634d |  |
| 38 |  | C3 - (0,18x0,40) - 5 unid - (2,8 m de altura) | 5d | 2026-11-24 | 2026-11-30 | 98FF |  | 634d |  |
| 39 |  | C4 - (0,18x0,50) - 3 unid - (2,8 m de altura) | 5d | 2026-11-24 | 2026-11-30 | 98FF |  | 634d |  |
| 40 |  | C5 - (0,18x1,00) - 1 unid - (2,8 m de altura) | 5d | 2026-11-24 | 2026-11-30 | 98FF |  | 634d |  |
| 41 |  | C6 - (0,18x1,00) - 1 unid - (2,8 m de altura) | 5d | 2026-11-24 | 2026-11-30 | 98FF |  | 634d |  |
| 42 |  | C7 - (0,18x1,00) - 1 unid - (2,8 m de altura) | 5d | 2026-11-24 | 2026-11-30 | 98FF |  | 634d |  |
| 43 |  | C1 - (0,18x0,30) - 2 unid - (2,8 m de altura) | 7d | 2027-06-16 | 2027-06-24 | 102FF |  | 493d |  |
| 44 |  | C2 - (0,18x0,80) - 1 unid - (2,8 m de altura) | 7d | 2027-06-16 | 2027-06-24 | 102FF |  | 493d |  |
| 45 |  | C3 - (0,18x0,40) - 5 unid - (2,8 m de altura) | 7d | 2027-06-16 | 2027-06-24 | 102FF |  | 493d |  |
| 46 |  | C4 - (0,18x0,50) - 7 unid - (2,8 m de altura) | 7d | 2027-06-16 | 2027-06-24 | 102FF |  | 493d |  |
| 47 |  | C5 - (0,18x1,00) - 2 unid - (2,8 m de altura) | 7d | 2027-06-16 | 2027-06-24 | 102FF |  | 493d |  |
| 48 |  | C6 - (0,18x1,00) - 1 unid - (2,8 m de altura) | 7d | 2027-06-16 | 2027-06-24 | 102FF |  | 493d |  |
| 49 |  | C8 - (0,18x1,00) - 1 unid - (2,8 m de altura) | 7d | 2027-06-16 | 2027-06-24 | 102FF |  | 493d |  |
| 50 |  | C2 - (0,18x0,80) - 1 unid - (2,8 m de altura) | 5d | 2027-11-04 | 2027-11-10 | 105FF |  | 397d |  |
| 51 |  | C3 - (0,18x0,40) - 2 unid - (2,8 m de altura) | 5d | 2027-11-04 | 2027-11-10 | 105FF |  | 397d |  |
| 52 |  | C4 - (0,18x0,50) - 4 unid - (2,8 m de altura) | 5d | 2027-11-04 | 2027-11-10 | 105FF |  | 397d |  |
| 53 |  | C5 - (0,18x1,00) - 1 unid - (2,8 m de altura) | 5d | 2027-11-04 | 2027-11-10 | 105FF |  | 397d |  |
| 54 |  | C6 - (0,18x1,00) - 1 unid - (2,8 m de altura) | 5d | 2027-11-04 | 2027-11-10 | 105FF |  | 397d |  |
| 55 | 1.3.3.4 | **Encadenado Vertical** | 247d | 2026-11-16 | 2027-11-10 |  |  | 397d |  |
| 56 |  | Ce - (0,18x0,18) - 24 unid - (2,8 m de altura) | 10d | 2026-11-16 | 2026-11-30 | 98FF |  | 634d |  |
| 57 |  | Ce1 - (0,18x0,18) - 21 unid - (2,8 m de altura) | 10d | 2026-11-16 | 2026-11-30 | 98FF |  | 634d |  |
| 58 |  | Ce2 - (0,18x0,30) - 7 unid - (2,8 m de altura) | 5d | 2026-11-24 | 2026-11-30 | 98FF |  | 634d |  |
| 59 |  | Ce - (0,18x0,18) - 7 unid - (2,8 m de altura) | 7d | 2027-06-16 | 2027-06-24 | 102FF |  | 493d |  |
| 60 |  | Ce1 - (0,18x0,18) - 10 unid - (2,8 m de altura) | 7d | 2027-06-16 | 2027-06-24 | 102FF |  | 493d |  |
| 61 |  | Ce2 - (0,18x0,30) - 8 unid - (2,8 m de altura) | 7d | 2027-06-16 | 2027-06-24 | 102FF |  | 493d |  |
| 62 |  | Ce - (0,18x0,18) - 21 unid - (2,8 m de altura) | 10d | 2027-10-28 | 2027-11-10 | 105FF |  | 397d |  |
| 63 |  | Ce1 - (0,18x0,18) - 21 unid - (2,8 m de altura) | 10d | 2027-10-28 | 2027-11-10 | 105FF |  | 397d |  |
| 64 |  | Ce2 - (0,18x0,30) - 13 unid - (2,8 m de altura) | 7d | 2027-11-02 | 2027-11-10 | 105FF |  | 397d |  |
| 65 | 1.3.3.5 | **Encadenado Horizontal** | 244d | 2026-12-23 | 2027-12-14 |  |  | 375d |  |
| 66 |  | EH - (0,18x0,15) | 10d | 2026-12-23 | 2027-01-07 | 155SS |  | 609d |  |
| 67 |  | EH1 - (0,25x0,15) | 10d | 2026-12-23 | 2027-01-07 | 155SS |  | 609d |  |
| 68 |  | EH - (0,18x0,15) | 7d | 2027-07-26 | 2027-08-03 | 156SS |  | 466d |  |
| 69 |  | EH - (0,18x0,15) | 7d | 2027-12-03 | 2027-12-14 | 158SS |  | 375d |  |
| 70 | 1.3.3.6 | **Vigas Estructurales** | 267d | 2026-12-23 | 2028-01-14 |  |  | 352d |  |

| ID | WBS | Task | Duration | Start | Finish | Predecessors | Total float |
| --- | --- | --- | --- | --- | --- | --- | --- |
| 71 |  | V - (35x40),(35x50),(35x60),(40x40) | 12d | 2026-12-23 | 2027-01-11 | 155SS | 607d |
| 72 |  | V - (18x35) | 12d | 2026-12-23 | 2027-01-11 | 155SS | 607d |
| 73 |  | V - (35x70),(35x85),(35x100) | 12d | 2026-12-23 | 2027-01-11 | 155SS | 607d |
| 74 |  | NB - (15x40)-(20x40) - Hormigón Visto | 12d | 2026-12-23 | 2027-01-11 | 155SS | 607d |
| 75 |  | V - (30x35),(35x40),(35x50),(35x60),(40x40),(40x60) | 21d | 2027-07-26 | 2027-08-24 | 156SS | 452d |
| 76 |  | V - (18x35),(25x40) | 21d | 2027-07-26 | 2027-08-24 | 156SS | 452d |
| 77 |  | V - (18x70),(35x80),(35x70),(35x80) | 21d | 2027-07-26 | 2027-08-24 | 156SS | 452d |
| 78 |  | NB - (15x40)-(20x40) | 21d | 2027-07-26 | 2027-08-24 | 156SS | 452d |
| 79 |  | NB1 - (20x40) | 21d | 2027-07-26 | 2027-08-24 | 156SS | 452d |
| 80 |  | V - (30x35),(30x45),(45x60),(40x40),(40x45),(40x60) | 30d | 2027-12-03 | 2028-01-14 | 158SS | 352d |
| 81 |  | V - (18x35),(20x45) | 30d | 2027-12-03 | 2028-01-14 | 158SS | 352d |
| 82 |  | V - (40x70) | 30d | 2027-12-03 | 2028-01-14 | 158SS | 352d |
| 83 |  | NB - (15x40)-(20x40) | 30d | 2027-12-03 | 2028-01-14 | 158SS | 352d |
| 84 | 1.3.3.7 | **Losas** | 286d | 2027-01-12 | 2028-02-29 |  | 0d |
| 85 |  | L1 - Losa Nervurada - 35 cm (cieloraso de yeso o madera) | 30d | 2027-01-12 | 2027-02-23 | 155 | 0d |
| 86 |  | L2 - Losa Nervurada VISTA - 35 cm | 15d | 2027-02-02 | 2027-02-23 | 85FF | 577d |
| 87 |  | Losa Maciza - 15 cm | 15d | 2027-02-02 | 2027-02-23 | 85FF | 577d |
| 88 |  | Hormigón losa SS | 1d | 2027-02-24 | 2027-02-24 | 85 | 541d |
| 89 |  | L1 - Losa Nervurada - 35 cm (cieloraso de yeso o madera) | 35d | 2027-08-16 | 2027-10-04 | 156 | 0d |
| 90 |  | L2 - Losa Nervurada VISTA - 35 cm | 15d | 2027-09-14 | 2027-10-04 | 89FF | 423d |
| 91 |  | Losa Maciza - 15 cm | 15d | 2027-09-14 | 2027-10-04 | 89FF | 423d |
| 92 |  | Hormigón de losa PB | 1d | 2027-10-05 | 2027-10-05 | 89 | 0d |
| 93 |  | L1 - Losa Nervurada - 35 cm (cieloraso de yeso o madera) | 45d | 2027-12-27 | 2028-02-28 | 158 | 241d |
| 94 |  | L2 - Losa Nervurada VISTA - 35 cm | 10d | 2028-02-15 | 2028-02-28 | 93FF | 322d |
| 95 |  | Losa Maciza - 15 cm - LOSA TANQUE | 10d | 2028-02-15 | 2028-02-28 | 93FF | 322d |
| 96 |  | Hormigón de losa PA | 1d | 2028-02-29 | 2028-02-29 | 93 | 241d |
| 97 | 1.3.3.8 | **Mampostería** | 306d | 2026-08-24 | 2027-11-10 |  | 0d |
| 98 |  | Muro Armado con bloque de hormigón (llenado y armado) 19x19x39 | 35d | 2026-10-09 | 2026-11-30 | 124 | 0d |
| 99 |  | Mamposteria Ladrillo Hueco Portante 12x18x33 | 15d | 2026-10-09 | 2026-10-30 | 124 | 654d |
| 100 |  | Mamposteria Ladrillo Hueco Portante 18x18x33 | 10d | 2026-10-09 | 2026-10-23 | 124 | 649d |
| 101 |  | Mampostería de fundación/elevación | 5d | 2026-08-24 | 2026-08-28 | 31 | 0d |
| 102 |  | Mamposteria Ladrillo Hueco Portante 12x18x33 PB | 20d | 2027-05-28 | 2027-06-24 | 126 | 0d |
| 103 |  | Mamposteria Ladrillo Hueco Portante 18x18x33 PB | 10d | 2027-06-11 | 2027-06-24 | 102FF | 493d |
| 104 |  | Mampostería de fundación/elevación | 5d | 2027-04-16 | 2027-04-22 | 33 | 0d |
| 105 |  | Mamposteria Ladrillo Hueco Portante 12x18x33 PA | 25d | 2027-10-06 | 2027-11-10 | 92 | 0d |
| 106 |  | Mamposteria Ladrillo Hueco Portante 18x18x33 PA | 10d | 2027-10-28 | 2027-11-10 | 105FF | 397d |
| 107 | 1.3.3.9 | **Muro de Contención** | 12d | 2026-10-09 | 2026-10-27 |  | 657d |
| 108 |  | Muro de contencion de bloque de hormigón según detalle muro armado - PSS - Costado del quincho y fogonero* | 12d | 2026-10-09 | 2026-10-27 | 124 | 657d |
| 109 | 1.3.3.10 | **Aislación en Muros y Contrapiso** | 320d | 2026-08-31 | 2027-12-09 |  | 0d |
| 110 |  | Capa Aisladora Horizontal Mampostería | 7d | 2026-08-31 | 2026-09-08 | 101 | 0d |
| 111 |  | Capa Aisladora Horizontal Mampostería PB | 7d | 2027-04-23 | 2027-05-03 | 104 | 0d |
| 112 |  | Capa Aisladora Horizontal bajo contrapiso | 5d | 2026-09-16 | 2026-09-22 | 13 | 0d |
| 113 |  | Capa Aisladora Horizontal bajo contrapiso PB | 5d | 2027-05-11 | 2027-05-17 | 14 | 0d |
| 114 |  | Capa Aisladora Vertical Mampostería - H: 50cm | 10d | 2026-08-31 | 2026-09-11 | 101 | 688d |
| 115 |  | Capa Aisladora Vertical Mampostería - H: 50cm PB | 7d | 2027-04-23 | 2027-05-03 | 104 | 530d |
| 116 |  | Capa Aisladora Vertical Muros revestido de piedra con sika monotop 107 | 5d | 2026-12-23 | 2026-12-30 | 151 | 614d |
| 117 |  | Capa Aisladora Vertical Muros revestido de piedra con sika monotop 107 PB | 5d | 2027-07-26 | 2027-07-30 | 152 | 468d |
| 118 |  | Capa Aisladora Vertical Muros revestido de piedra con sika monotop 107 PA | 5d | 2027-12-03 | 2027-12-09 | 153 | 377d |
| 119 |  | Capa Aisladora Vertical en Muros Armados - Cara exterior (membrana geo) | 10d | 2026-12-09 | 2026-12-22 | 151FF | 612d |
| 120 |  | Capa Aisladora Vertical en Muros Armados - Cara exterior (rafa de ladrillos)** | 7d | 2026-12-23 | 2027-01-04 | 119 | 612d |
| 121 | 1.3.3.11 | **Contrapiso** | 416d | 2026-09-23 | 2028-05-19 |  | 0d |
| 122 |  | Hormigón p/contrapiso Interior Casa e=10cm (PSS) | 7d | 2026-09-23 | 2026-10-01 | 112 | 0d |
| 123 |  | Hormigón p/contrapiso Exterior Cochera e=10cm (PSS) | 5d | 2026-09-25 | 2026-10-01 | 122FF | 0d |
| 124 |  | Hormigón p/contrapiso Exterior Vereda Perimetral + Borde Fogonero e=10cm (PSS) | 5d | 2026-10-02 | 2026-10-08 | 123 | 0d |
| 125 |  | Hormigón p/contrapiso Exterior Solarium e=10cm (PSS) | 5d | 2026-10-02 | 2026-10-08 | 124FF | 669d |
| 126 |  | Hormigón p/contrapiso Interior Casa e=10cm (PB) | 7d | 2027-05-18 | 2027-05-27 | 113 | 0d |
| 127 |  | Hormigón p/contrapiso ARMADO Interior Casa e=10cm (PB) | 5d | 2027-05-20 | 2027-05-27 | 126FF | 513d |
| 128 |  | Hormigón p/contrapiso Exterior Ingreso Peatonal e=10cm (PB) | 5d | 2028-05-15 | 2028-05-19 | 163 | 255d |
| 129 |  | Hormigón p/contrapiso Exterior Ingreso Cochera Secundario e=10cm | 8d | 2027-05-17 | 2027-05-27 | 126FF | 513d |
| 130 | 1.3.3.12 | **Carpeta de Nivelación** | 312d | 2027-03-10 | 2028-06-05 |  | 0d |
| 131 |  | Carpeta de Nivelación Interior Casa e=10cm (PSS) | 12d | 2028-03-10 | 2028-03-28 | 256 | 242d |
| 132 |  | Carpeta de Nivelación Exterior Cochera e=10cm (PSS) | 10d | 2028-03-14 | 2028-03-28 | 131FF | 292d |
| 133 |  | Carpeta de Nivelación Exterior Vereda Perimetral + Borde Fogonero e=10cm (PSS) | 10d | 2028-03-29 | 2028-04-11 | 132 | 292d |
| 134 |  | Carpeta de Nivelación Exterior Solarium e=10cm (PSS) | 10d | 2028-03-29 | 2028-04-11 | 133FF | 292d |
| 135 |  | Carpeta de Nivelación Interior Casa e=10cm (PB) | 12d | 2028-03-21 | 2028-04-06 | 257 | 285d |
| 136 |  | Carpeta de Nivelación Exterior Ingreso Peatonal e=10cm (PB) | 10d | 2028-05-22 | 2028-06-05 | 128 | 255d |
| 137 |  | Carpeta de Nivelación Exterior Ingreso Cochera Secundario e=10cm (PB) | 10d | 2028-04-07 | 2028-04-20 | 135 | 285d |
| 138 |  | Carpeta de Nievelación Interior Casa e=4cm (PA) | 12d | 2028-03-31 | 2028-04-17 | 258 | 280d |
| 139 |  | Carpeta de Nievelación Alero e=4cm (PA) | 5d | 2028-04-18 | 2028-04-24 | 138 | 283d |
| 140 |  | Carpeta de Nievelación Estar Exterior e=4cm (PA) | 8d | 2028-04-18 | 2028-04-27 | 138 | 280d |

| ID | WBS | Task | Duration | Start | Finish | Predecessors | Total float |
| --- | --- | --- | --- | --- | --- | --- | --- |
| 141 |  | Carpeta de Nivelación de Cubierta e= 4 cm | 7d | 2027-03-10 | 2027-03-18 | 144 | 0d |
| 142 |  | Carpeta de Nivelación de Cubierta e= 4 cm PA | 10d | 2028-03-24 | 2028-04-06 | 145 | 245d |
| 143 | 1.3.3.13 | **Cubierta** | 289d | 2027-02-24 | 2028-04-17 |  | 0d |
| 144 |  | Cubierta común sobre Losa - Hormigon de Pendiente (carga) - 10 cm | 7d | 2027-03-01 | 2027-03-09 | 148 | 0d |
| 145 |  | Cubierta común sobre Losa - Hormigon de Pendiente (carga) - 10 cm PA | 10d | 2028-03-10 | 2028-03-23 | 149 | 245d |
| 146 |  | Impermeabilización en cubierta* (con parapeto-h:20cm) | 7d | 2027-03-19 | 2027-03-30 | 141 | 553d |
| 147 |  | Impermeabilización en cubierta* (con parapeto-h:20cm) PA | 7d | 2028-04-07 | 2028-04-17 | 142 | 288d |
| 148 |  | Parapeto SS | 3d | 2027-02-24 | 2027-02-26 | 85 | 0d |
| 149 |  | Parapeto PA + tanque | 7d | 2028-03-01 | 2028-03-09 | 96 | 245d |
| 150 | 1.3.3.14 | **Azotado Hidrófugo + Revoque Grueso exterior** | 252d | 2026-12-01 | 2027-12-02 |  | 0d |
| 151 |  | Revoque c/ azotado hidrof. cementicio en mamp. | 15d | 2026-12-01 | 2026-12-22 | 98 | 0d |
| 152 |  | Revoque c/ azotado hidrof. cementicio en mamp. | 20d | 2027-06-25 | 2027-07-23 | 102 | 0d |
| 153 |  | Revoque c/ azotado hidrof. cementicio en mamp. | 15d | 2027-11-11 | 2027-12-02 | 105 | 0d |
| 154 | 1.3.3.15 | **Azotado Cementicio Interior** | 466d | 2026-06-22 | 2028-04-27 |  | 127d |
| 155 |  | Azotado Cementicio Interior | 12d | 2026-12-23 | 2027-01-11 | 151 | 0d |
| 156 |  | Azotado Cementicio Interior | 15d | 2027-07-26 | 2027-08-13 | 152 | 0d |
| 157 |  | Azotado Cementicio Cieloraso | 15d | 2026-06-22 | 2026-07-13 |  | 731d |
| 158 |  | Azotado Cementicio Interior | 15d | 2027-12-03 | 2027-12-24 | 153 | 0d |
| 159 |  | Azotado Cementicio Cieloraso | 15d | 2028-04-07 | 2028-04-27 | 142 | 246d |
| 160 | 1.3.3.16 | **Revoque Fino Exterior** | 20d | 2028-04-28 | 2028-05-29 |  | 246d |
| 161 |  | Revoque Fino Exterior | 3d | 2028-05-24 | 2028-05-29 | 162 | 260d |
| 162 |  | Revoque Fino Exterior | 7d | 2028-05-15 | 2028-05-23 | 163 | 246d |
| 163 |  | Revoque Fino Exterior | 10d | 2028-04-28 | 2028-05-12 | 159 | 246d |
| 164 | 1.3.3.17 | **Engrosado + Enlucido de Yeso** | 270d | 2027-04-05 | 2028-04-26 |  | 281d |
| 165 |  | Engrosado + Enlucido de Yeso | 10d | 2027-04-05 | 2027-04-16 | 88FS+25d | 541d |
| 166 |  | Engrosado + Enlucido de Yeso | 10d | 2027-11-11 | 2027-11-25 | 92FS+25d | 387d |
| 167 |  | Engrosado + Enlucido de Yeso | 15d | 2028-04-06 | 2028-04-26 | 96FS+25d | 241d |
| 168 | 1.3.3.18 | **Cielorrasos** | 527d | 2026-06-22 | 2028-07-26 |  | 219d |
| 169 |  | Cielorraso de Placa de Yeso Suspendido (estructura + emplacado) | 5d | 2028-05-05 | 2028-05-11 | 249 | 241d |
| 170 |  | Cielorraso de Madera | 25d | 2028-04-28 | 2028-06-05 | 361 | 219d |
| 171 |  | Cortinero (estructura + emplacado) | 10d | 2028-05-12 | 2028-05-26 | 169 | 241d |
| 172 |  | Cielorraso de Placa de Yeso Suspendido (estructura + emplacado) | 7d | 2028-06-01 | 2028-06-09 | 176FF | 251d |
| 173 |  | Cielorraso de Madera | 18d | 2028-06-06 | 2028-06-30 | 170 | 219d |
| 174 |  | Cielorraso de Yeso Aplicado | 12d | 2026-06-22 | 2026-07-07 |  | 722d |
| 175 |  | Cielorraso de Lona Camuflada | 5d | 2028-06-13 | 2028-06-19 | 367 | 245d |
| 176 |  | Cortinero (estructura + emplacado) | 10d | 2028-05-29 | 2028-06-09 | 171 | 241d |
| 177 |  | Cielorraso de Placa de Yeso Suspendido (estructura + emplacado) | 10d | 2028-06-12 | 2028-06-26 | 176 | 241d |
| 178 |  | Cielorraso de Madera | 18d | 2028-07-03 | 2028-07-26 | 173 | 219d |
| 179 |  | Cielorraso de Yeso Aplicado | 12d | 2026-07-08 | 2026-07-24 | 174 | 722d |
| 180 |  | Cortinero (estructura + emplacado) | 10d | 2028-06-12 | 2028-06-26 | 177FF | 241d |
| 181 | 1.3.3.19 | **Escaleras** | 262d | 2026-09-18 | 2027-10-05 |  | 422d |
| 182 |  | Escalera de Hormigon in situ - PSS a PA | 15d | 2027-09-15 | 2027-10-05 | 92FF | 422d |
| 183 |  | Escalera de Hormigon in situ - PSS a PB | 15d | 2027-02-03 | 2027-02-24 | 88FF | 576d |
| 184 |  | Escalera Ext. de Hormigon in situ - (Costado Quincho) - PSS a Patio PB | 10d | 2026-09-18 | 2026-10-01 | 123FF | 674d |
| 185 |  | Escalera Ext. de Hormigon in situ - (Galería a patio solarium)* | 10d | 2027-05-13 | 2027-05-27 | 126FF | 513d |
| 186 | 1.3.3.20 | **Asador** | 10d | 2026-10-26 | 2026-11-06 |  | 649d |
| 187 |  | Asador + horno (3,00 m de largo) | 10d | 2026-10-26 | 2026-11-06 | 100 | 649d |
| 188 | 1.3.3.21 | **Veredas Perimetrales** | 8d | 2027-05-17 | 2027-05-27 |  | 513d |
| 189 |  | Veredas Perimetrales con Cordon - Ancho 40cm* | 8d | 2027-05-17 | 2027-05-27 | 127FF | 513d |
| 190 | 1.3.4 | **HERRERIA** | 331d | 2026-06-22 | 2027-10-15 |  | 415d |
| 191 | 1.3.4.1 | **Columnas Metálicas** | 288d | 2026-08-24 | 2027-10-15 |  | 415d |
| 192 |  | CM- 2UPN 100 (1 columna) 2,80 mts de largo | 3d | 2026-08-24 | 2026-08-26 | 31 | 700d |
| 193 |  | CM1- 2UPN 120 (2 columnas) 2,80 mts de largo | 3d | 2026-08-24 | 2026-08-26 | 31 | 700d |
| 194 |  | CM- 2UPN 100 (18 columna) 2,80 mts de largo | 10d | 2027-04-16 | 2027-04-29 | 33 | 517d |
| 195 |  | CM1- 2UPN 120 (1 columna) 2,80 mts de largo | 10d | 2027-04-16 | 2027-04-29 | 33 | 532d |
| 196 |  | CM2- 2UPN 140 (2 columnas) 2,80 mts de largo | 10d | 2027-04-16 | 2027-04-29 | 33 | 532d |
| 197 |  | CM3- 2UPN 160 (3 columnas) 2,80 mts de largo | 10d | 2027-04-16 | 2027-04-29 | 33 | 532d |
| 198 |  | CM- 2UPN 100 (6 columna) 2,80 mts de largo | 7d | 2027-10-06 | 2027-10-15 | 92 | 415d |
| 199 | 1.3.4.2 | **Vigas Metálicas** | 156.5d | 2027-01-26 | 2027-09-09 |  | 440.5d |
| 200 |  | IPN 240 - Viga de Borde en Piso D1 Principal | 5d | 2027-01-26 | 2027-02-01 | 85SF+5% | 592d |
| 201 |  | IPN 240 - Viga de Borde en Losa Dº Principal | 5d | 2027-09-02 | 2027-09-09 | 89SF+5% | 440.5d |
| 202 |  | IPN 160 - Viga entre ventanas de dos alturas (Living Estar) | 5d | 2027-09-02 | 2027-09-09 | 89SF+5% | 440.5d |
| 203 |  | IPN 140 - Viga de anclaje de escalera | 5d | 2027-09-02 | 2027-09-09 | 89SF+5% | 440.5d |
| 204 | 1.3.4.3 | **Pergola Metálica** | 15d | 2027-04-30 | 2027-05-20 |  | 517d |
| 205 |  | Pergola Metálica de Cochera Secundaria - Perfiles de borde de IPN160 (21 mts de borde) - Correas según el peso del material a colocar. | 15d | 2027-04-30 | 2027-05-20 | 194 | 517d |
| 206 |  | Pergola Metálica de Estar Exterior - Perfiles de borde de IPN240 (30 mts de borde) - 33 mts de IPN160 como correas de la pérgola según detalle. | 10d | 2027-04-30 | 2027-05-13 | 194 | 522d |
| 207 | 1.3.4.4 | **Barandas Metálicas** | 10d | 2026-06-22 | 2026-07-03 |  | 736d |
| 208 |  | Barandas metálicas y de vidrio (22 mts según 3D) sobre balcon PA* | 10d | 2026-06-22 | 2026-07-03 |  | 736d |
| 209 | 1.3.4.5 | **Conductos Metálicos** | 3d | 2027-02-18 | 2027-02-22 |  | 576d |
| 210 |  | Asador - conducto de ventilacion 3,00m - 30 diam. | 3d | 2027-02-18 | 2027-02-22 | 88FS-5d | 576d |

| ID | WBS | Task | Duration | Start | Finish | Predecessors | Total float |
| --- | --- | --- | --- | --- | --- | --- | --- |
| 211 | 1.3.5 | **INSTALACIONES SANITARIAS** | 463d | 2026-08-25 | 2028-06-28 |  | 239d |
| 212 | 1.3.5.1 | **Instalaciones Pluviales** | 426d | 2026-08-25 | 2028-05-04 |  | 276d |
| 213 |  | Desagues pluviales (sin zinguería) con colocacion de cámaras de inspección SS contrapiso | 7d | 2026-08-25 | 2026-09-02 | 22 | 695d |
| 214 |  | Desagues pluviales (sin zinguería) con colocacion de cámaras de inspección SS pared | 7d | 2027-03-26 | 2027-04-05 | 88FS+20d | 549d |
| 215 |  | Desagues pluviales (sin zinguería) con colocacion de cámaras de inspección PB contrapiso | 7d | 2027-04-16 | 2027-04-26 | 33 | 535d |
| 216 |  | Desagues pluviales (sin zinguería) con colocacion de cámaras de inspección PB pared | 7d | 2027-11-04 | 2027-11-12 | 92FS+20d | 395d |
| 217 |  | Desagues pluviales (sin zinguería) con colocacion de cámaras de inspección PA contrapiso | 7d | 2028-03-30 | 2028-04-07 | 96FS+20d | 243d |
| 218 |  | Desagues pluviales (sin zinguería) con colocacion de cámaras de inspección PA pared | 7d | 2028-04-10 | 2028-04-18 | 217 | 242d |
| 219 |  | Conexión exterior de pluviales | 12d | 2028-04-19 | 2028-05-04 | 218 | 242d |
| 220 | 1.3.5.2 | **Instalaciones Cloacales** | 458d | 2026-08-25 | 2028-06-21 |  | 244d |
| 221 |  | Instalación de cloacas para 2 baños completos en PSS, 1 cocina, 1 pileta de asador; 1 toilete y 1 baño completo con bañera en suite, 1 cocina con isla, pileta de cocina y 1 pileta en lavadero, lavarropas, lavavajilla, heladera y dispenser en PB; 2 baños c | 15d | 2026-08-25 | 2026-09-14 | 22 | 687d |
| 222 |  | Cloaca en suelo PB | 12d | 2027-04-16 | 2027-05-03 | 33 | 530d |
| 223 |  | Cloaca en suelo PA | 12d | 2028-03-30 | 2028-04-14 | 96FS+20d | 289d |
| 224 |  | Conexiones exteriores | 15d | 2028-04-20 | 2028-05-10 | 219FS-10d | 243d |
| 225 |  | Desagues de 3 AA Central en PSS, 6 AA Central en PB y 6 AA Central en PA | 3d | 2028-04-12 | 2028-04-14 | 223FF | 289d |
| 226 |  | Colocación de cámaras de inspección (según detalle técnico) | 3d | 2028-05-11 | 2028-05-15 | 224 | 244d |
| 227 |  | Instalación de 2 camaras sépticas (según plano técnico) | 5d | 2028-05-16 | 2028-05-22 | 226 | 244d |
| 228 |  | Armado de 2 Sangrías desde camara septica (coloc. de caños p/ filtrado) | 20d | 2028-05-23 | 2028-06-21 | 227 | 244d |
| 229 | 1.3.5.3 | **Instalaciones de Agua** | 358d | 2027-01-12 | 2028-06-13 |  | 249d |
| 230 |  | Instalación de agua para 2 baños completos en PSS, 1 cocina, 1 pileta de asador; 1 toilete y 1 baño completo con bañera en suite, 1 cocina con isla, pileta de cocina y 1 pileta en lavadero, lavarropas, lavavajilla, heladera y dispenser en PB; 2 baños comp | 10d | 2027-01-12 | 2027-01-25 | 155 | 590d |
| 231 |  | Agua en PB | 10d | 2027-08-16 | 2027-08-27 | 156 | 436d |
| 232 |  | Agua PA | 10d | 2027-12-27 | 2028-01-07 | 158 | 352d |
| 233 |  | Agua Cubierta previo a pendiente de hormigon | 5d | 2028-03-01 | 2028-03-07 | 96 | 316d |
| 234 |  | Alimentación de agua para válvulas de inodoros desde tanques | 5d | 2028-01-10 | 2028-01-14 | 232 | 352d |
| 235 |  | Alimentación de agua a tanques y 6 canillas en patio | 10d | 2027-12-27 | 2028-01-07 | 93SS | 357d |
| 236 |  | Instalación de bomba hidroneumática bajo tanque | 1d | 2028-06-13 | 2028-06-13 | 367 | 249d |
| 237 | 1.3.5.4 | **Instalaciones de Gas** | 358d | 2027-01-26 | 2028-06-28 |  | 239d |
| 238 |  | Instalación de gas para anafe PSS, anafe y horno, termotanque y caldera en Pb* | 7d | 2027-01-26 | 2027-02-03 | 230 | 590d |
| 239 |  | Gas PB | 7d | 2027-08-30 | 2027-09-07 | 231 | 436d |
| 240 |  | Gas exterior y casilla | 3d | 2027-09-08 | 2027-09-10 | 239 | 436d |
| 241 |  | Ventilaciones para gas. Conductos y rejillas. | 3d | 2027-09-03 | 2027-09-07 | 239FF | 442d |
| 242 |  | Factibilidad de gas y plano aprobación de cañerías (se pagan en el momento) | 3d | 2027-09-13 | 2027-09-15 | 240 | 436d |
| 243 |  | Segunda inspección parcial de cañerías y ventilaciones. | 3d | 2028-06-16 | 2028-06-21 | 245 | 239d |
| 244 |  | Solicitud de servicio domiciliario (no incluye aranceles Ecogas). | 5d | 2028-06-22 | 2028-06-28 | 243 | 239d |
| 245 |  | Final de gas con artefactos colocados. | 3d | 2028-06-13 | 2028-06-15 | 367 | 0d |
| 246 | 1.3.5.5 | **Instalaciones de Aire Acondicionado** | 358d | 2027-01-12 | 2028-06-13 |  | 249d |
| 247 |  | 3 equipos de AA Split en PSS (Kit de preinstalacion) | 1d | 2027-01-12 | 2027-01-12 | 155 | 606d |
| 248 |  | 3 equipos de AA Split en PSS | 1d | 2028-06-13 | 2028-06-13 | 367 | 249d |
| 249 |  | Sistema por conducto (1 equipo) en PSS | 5d | 2028-04-27 | 2028-05-04 | 167 | 241d |
| 250 |  | Sistema por conducto (6 equipos) en PB | 5d | 2028-04-27 | 2028-05-04 | 167 | 276d |
| 251 |  | Sistema por conducto (6 equipos) en PA | 5d | 2028-04-27 | 2028-05-04 | 167 | 276d |
| 252 | 1.3.5.6 | **Instalación de Calefacción*** | 21d | 2028-03-01 | 2028-03-30 |  | 242d |
| 253 |  | Losa Radiante - 2 Colectores con 1 zona - PSS | 2d | 2028-03-01 | 2028-03-02 | 96 | 242d |
| 254 |  | Losa Radiante - 4 Colectores con 2 zona - PB | 2d | 2028-03-10 | 2028-03-13 | 256 | 280d |
| 255 |  | Losa Radiante - 2 Colectores con 1 zona - PA | 2d | 2028-03-21 | 2028-03-22 | 257 | 280d |
| 256 |  | Piso Radiante - PSS | 5d | 2028-03-03 | 2028-03-09 | 253 | 242d |
| 257 |  | Piso Radiante - PB | 5d | 2028-03-14 | 2028-03-20 | 254 | 280d |
| 258 |  | Piso Radiante - PA | 5d | 2028-03-23 | 2028-03-30 | 255 | 280d |
| 259 | 1.3.6 | **INSTALACIONES ELECTRICAS Y SEÑALES DEBILES** | 503d? | 2026-06-22 | 2028-06-22 |  | 243d |
| 260 | 1.3.6.1 | **Canalización, cableado y armado (electricidad)** | 501d? | 2026-06-22 | 2028-06-19 |  | 245d |
| 261 |  | Cableado SS | 10d | 2028-04-28 | 2028-05-11 | 361 | 243d |
| 262 |  | Bocas p/iluminacion techo | 2d | 2027-02-22 | 2027-02-23 | 88FS-3d | 577d |
| 263 |  | Bocas p/iluminacion pared | 10d | 2027-01-12 | 2027-01-25 | 155 | 597d |
| 264 |  | Tablero (por T.M y disyuntores) | 3d | 2028-05-12 | 2028-05-16 | 261 | 268d |
| 265 |  | Borneta puesta a tierra por tablero | 1d? | 2026-06-22 | 2026-06-22 |  | 745d |
| 266 |  | Instalación de Jabalina | 1d? | 2026-06-22 | 2026-06-22 |  | 745d |
| 267 |  | Toma individul A.A | 1d? | 2026-06-22 | 2026-06-22 |  | 745d |
| 268 |  | Termostatos | 1d? | 2026-06-22 | 2026-06-22 |  | 745d |
| 269 |  | Tiras Led aleros/nichos/espejos/placares/baso alacena mesada, etc | 1d? | 2026-06-22 | 2026-06-22 |  | 745d |
| 270 |  | Instalación artefactos comunes* | 3d | 2028-06-13 | 2028-06-15 | 367 | 246d |
| 271 |  | Bocas p/iluminacion techo | 3d | 2027-09-30 | 2027-10-04 | 89FS-3d | 423d |
| 272 |  | Bocas p/iluminacion pared | 12d | 2027-08-16 | 2027-09-01 | 156 | 446d |
| 273 |  | Cableado PB | 12d | 2028-05-12 | 2028-05-29 | 261 | 244d |
| 274 |  | Bocas p/iluminacion piso | 1d? | 2026-06-22 | 2026-06-22 |  | 745d |
| 275 |  | Tablero (por T.M y disyuntores) | 3d | 2028-05-30 | 2028-06-01 | 273 | 254d |
| 276 |  | Instalación de Jabalina | 1d? | 2026-06-22 | 2026-06-22 |  | 745d |
| 277 |  | Toma individul A.A | 1d? | 2026-06-22 | 2026-06-22 |  | 745d |
| 278 |  | Termostatos | 1d? | 2026-06-22 | 2026-06-22 |  | 745d |
| 279 |  | Tiras Led aleros/nichos/espejos/placares/baso alacena mesada, etc | 1d? | 2026-06-22 | 2026-06-22 |  | 745d |
| 280 |  | Instalación artefactos comunes* | 1d? | 2028-06-16 | 2028-06-16 | 270 | 246d |

| ID | WBS | Task | Duration | Start | Finish | Predecessors | Total float |
| --- | --- | --- | --- | --- | --- | --- | --- |
| 281 |  | Instalación artefactos rieles grandes | 1d? | 2026-06-22 | 2026-06-22 |  | 745d |
| 282 |  | Conexión de acometida a Tablero | 3d | 2028-06-02 | 2028-06-06 | 275 | 254d |
| 283 |  | Bocas p/iluminacion techo | 3d | 2028-02-24 | 2028-02-28 | 93FS-3d | 322d |
| 284 |  | Bocas p/iluminacion pared | 12d | 2027-12-27 | 2028-01-11 | 158 | 355d |
| 285 |  | Cableado PA | 12d | 2028-05-30 | 2028-06-14 | 273 | 243d |
| 286 |  | Tablero (por T.M y disyuntores) | 3d | 2028-06-15 | 2028-06-19 | 285 | 245d |
| 287 |  | Toma individul A.A | 1d? | 2026-06-22 | 2026-06-22 |  | 745d |
| 288 |  | Termostatos | 1d? | 2026-06-22 | 2026-06-22 |  | 745d |
| 289 |  | Tiras Led aleros/nichos/espejos/placares/baso alacena mesada, etc* | 1d? | 2026-06-22 | 2026-06-22 |  | 745d |
| 290 |  | Instalación artefactos comunes* | 1d? | 2028-06-15 | 2028-06-15 | 285 | 247d |
| 291 | 1.3.6.2 | **Instalación y configuración de Alarma (Señales Débiles)*** | 5d | 2028-06-15 | 2028-06-22 |  | 243d |
| 292 |  | Instalación de sensor inalámbrico - PSS | 5d | 2028-06-15 | 2028-06-22 | 285 | 243d |
| 293 |  | Instalación de sensor inalámbrico - PB | 5d | 2028-06-15 | 2028-06-22 | 285 | 243d |
| 294 |  | Central de Alarma | 5d | 2028-06-15 | 2028-06-22 | 285 | 243d |
| 295 |  | Instalación de sensor inalámbrico - PA | 5d | 2028-06-15 | 2028-06-22 | 285 | 243d |
| 296 |  | Sirena | 5d | 2028-06-15 | 2028-06-22 | 285 | 243d |
| 297 | 1.3.6.3 | **Instalación y configuración de Red de Datos (Señales Débiles)** | 5d | 2028-06-15 | 2028-06-22 |  | 243d |
| 298 |  | Instalación de Acces Point (repetidor) - PSS | 5d | 2028-06-15 | 2028-06-22 | 285 | 243d |
| 299 |  | Instalación de Acces Point (repetidor) - PB | 5d | 2028-06-15 | 2028-06-22 | 285 | 243d |
| 300 |  | Instalación de Switch POE (central derivador de datos)* | 5d | 2028-06-15 | 2028-06-22 | 285 | 243d |
| 301 |  | Instalación de Acces Point (repetidor) - PSS | 5d | 2028-06-15 | 2028-06-22 | 285 | 243d |
| 302 | 1.3.7 | **PISOS Y REVESTIMIENTOS** | 520d? | 2026-06-22 | 2028-07-17 |  | 226d |
| 303 | 1.3.7.1 | **Pisos Interiores** | 486d | 2026-06-22 | 2028-05-29 |  | 260d |
| 304 |  | S11 - Porcelanato Gris - (Cochera/ingreso/cine/gym/dºservicio/quincho) | 20d | 2028-03-29 | 2028-04-25 | 131 | 242d |
| 305 |  | S1 - Porcelanato Gris (interior y exterior de casa) | 30d | 2028-04-12 | 2028-05-24 | 304FS-10d | 242d |
| 306 |  | S4 - Entablonado PVC Simil Madera (estar exterior) | 10d | 2026-06-22 | 2026-07-03 |  | 736d |
| 307 |  | S1 - Porcelanato Gris (interior de casa) | 5d | 2028-05-04 | 2028-05-10 | 305FS-15d | 250d |
| 308 |  | S3 - Porcelanato Simil Madera (interior de casa) | 12d | 2028-05-11 | 2028-05-29 | 307 | 260d |
| 309 | 1.3.7.2 | **Pisos Exteriores** | 12d | 2026-06-22 | 2026-07-07 |  | 734d |
| 310 |  | S1 - Porcelanato Gris (galeria quincho/fogonero) | 12d | 2026-06-22 | 2026-07-07 |  | 734d |
| 311 |  | S4 - Entablonado PVC Simil Madera (deck pileta) | 7d | 2026-06-22 | 2026-06-30 |  | 739d |
| 312 |  | S8 - Adoquines (ingreso cochera) | 7d | 2026-06-22 | 2026-06-30 |  | 739d |
| 313 |  | S12 - Piedra Bola (patio interior y fogon) | 5d | 2026-06-22 | 2026-06-26 |  | 741d |
| 314 |  | S2 - Hormigon alisado (Ingreso peatonal/ingreso secundario cochera) | 7d | 2026-06-22 | 2026-06-30 |  | 739d |
| 315 |  | S4 - Entablonado PVC Simil Madera (terraza balcon) | 7d | 2026-06-22 | 2026-06-30 |  | 739d |
| 316 |  | S7 - Granza Exterior (terraza balcon) | 5d | 2026-06-22 | 2026-06-26 |  | 741d |
| 317 | 1.3.7.3 | **Zócalos** | 10d | 2028-04-26 | 2028-05-10 |  | 272d |
| 318 |  | Zócalo en Interior PSS - Porcelanato | 7d | 2028-05-02 | 2028-05-10 | 361FF+8d | 272d |
| 319 |  | Zócalo en (Interior PB/interior quincho/exterior galeria/veredas) | 10d | 2028-04-26 | 2028-05-10 | 318FF | 272d |
| 320 |  | Zócalo en (Interior PA) - Porcelanato Simil Madera | 10d | 2028-04-26 | 2028-05-10 | 318FF | 272d |
| 321 | 1.3.7.4 | **Banquina** | 12d | 2028-03-21 | 2028-04-06 |  | 295d |
| 322 |  | Bajo cocina e isla PSS - H: 0,12cm (6,20 m2) | 5d | 2028-03-21 | 2028-03-28 | 131FF | 302d |
| 323 |  | Bajo cocina e isla PB - H: 0,12cm (12,30 m2) | 5d | 2028-03-31 | 2028-04-06 | 135FF | 295d |
| 324 |  | Bajo lavadero PB - H: 0,12cm (3,10 m2) | 5d | 2028-03-31 | 2028-04-06 | 135FF | 295d |
| 325 | 1.3.7.5 | **Revestimientos Interiores** | 56d | 2028-04-26 | 2028-07-17 |  | 226d |
| 326 |  | Porcelanato - Baños y cocina quincho (definir medidas y tipo) | 10d | 2028-04-26 | 2028-05-10 | 304 | 269d |
| 327 |  | Revestimiento Simil Madera | 5d | 2028-04-28 | 2028-05-05 | 361 | 245d |
| 328 |  | Porcelanato - Cocina, baños y lavadero (definir medidas y tipo) | 12d | 2028-05-26 | 2028-06-12 | 305 | 243d |
| 329 |  | Revestimiento Microcemento | 7d | 2028-06-13 | 2028-06-22 | 328 | 243d |
| 330 |  | Revestimiento Simil Madera | 15d | 2028-05-08 | 2028-05-29 | 327 | 245d |
| 331 |  | Revestimiento Simil Roca Viva | 12d | 2028-06-13 | 2028-06-29 | 367 | 226d |
| 332 |  | Porcelanato - Baños (definir medidas y tipo) | 15d | 2028-05-11 | 2028-06-01 | 307 | 250d |
| 333 |  | Revestimiento Microcemento | 7d | 2028-06-02 | 2028-06-12 | 332 | 250d |
| 334 |  | Revestimiento Simil Madera | 5d | 2028-05-30 | 2028-06-05 | 330 | 245d |
| 335 |  | Revestimiento Simil Roca Viva | 12d | 2028-06-30 | 2028-07-17 | 331 | 226d |
| 336 | 1.3.7.6 | **Revestimientos Exteriores** | 374d | 2026-12-23 | 2028-06-19 |  | 245d |
| 337 |  | Revestimiento de Piedra - (definir tipo) | 35d | 2026-12-23 | 2027-02-12 | 151 | 564d |
| 338 |  | Revestimiento de Ladrillos Refractarios - (Asador) | 3d | 2028-05-11 | 2028-05-15 | 326 | 269d |
| 339 |  | Revestimiento de Piedra en muro de contención - (definir tipo) | 20d | 2027-02-15 | 2027-03-12 | 337 | 564d |
| 340 |  | Revestimiento plástico - (definir color) | 3d | 2028-05-24 | 2028-05-29 | 162 | 246d |
| 341 |  | Revestimiento de Piedra - (definir tipo) | 15d | 2027-07-26 | 2027-08-13 | 152 | 458d |
| 342 |  | Revestimiento de Hormigón Visto | 30d | 2027-06-25 | 2027-08-06 | 102 | 463d |
| 343 |  | Revestimiento plástico en tanque de agua - (definir color) | 7d | 2028-05-30 | 2028-06-07 | 340 | 246d |
| 344 |  | Revestimiento plástico en canteros - (definir color) | 7d | 2028-06-08 | 2028-06-16 | 343 | 246d |
| 345 |  | Revestimiento de Piedra - (definir tipo) | 15d | 2027-12-03 | 2027-12-24 | 153 | 367d |
| 346 |  | Revestimiento de Hormigón Visto | 50d | 2027-11-11 | 2028-01-21 | 105 | 347d |
| 347 |  | Revestimiento de Alistonado WPC* | 10d | 2028-06-06 | 2028-06-19 | 334 | 245d |
| 348 | 1.3.7.7 | **PINTURA** | 336d | 2027-02-23 | 2028-06-23 |  | 242d |
| 349 | 1.3.7.7.1 | **Pintura Interior en pared y cielorraso** | 40d | 2028-04-26 | 2028-06-23 |  | 242d |
| 350 |  | Latex Interior PSS | 15d | 2028-04-26 | 2028-05-17 | 304 | 267d |

| ID | WBS | Task | Duration | Start | Finish | Predecessors | Total float |
| --- | --- | --- | --- | --- | --- | --- | --- |
| 351 |  | Latex Interior PB | 20d | 2028-05-26 | 2028-06-23 | 305 | 242d |
| 352 |  | Latex Interior PA | 20d | 2028-05-11 | 2028-06-08 | 307 | 252d |
| 353 | 1.3.7.7.2 | **Pintura Exterior** | 137.5d | 2027-02-23 | 2027-09-09 |  | 440.5d |
| 354 |  | Esmalte Sintetico en columnas y vigas metalicas* | 10d | 2027-08-26 | 2027-09-09 | 201FF | 440.5d |
| 355 |  | Esmalte Sintetico en pérgola* | 10d | 2027-05-07 | 2027-05-20 | 205FF | 517d |
| 356 |  | Esmalte Sintetico en conductos metalicos* | 2d | 2027-02-23 | 2027-02-24 | 210 | 576d |
| 357 | 1.3.7.8 | **CARPINTERIAS** | 135d | 2027-12-27 | 2028-07-07 |  | 0d |
| 358 |  | Colocación de premarcos | 10d | 2027-12-27 | 2028-01-07 | 158 | 0d |
| 359 |  | Puertas de madera* | 15d | 2028-06-16 | 2028-07-07 | 158FS+120d | 232d |
| 360 |  | Puertas de aluminio* | 5d | 2028-04-28 | 2028-05-05 | 361 | 275d |
| 361 |  | Aberturas de aluminio* | 15d | 2028-04-07 | 2028-04-27 | 358FS+90ed | 0d |
| 362 | 1.3.7.9 | **LIMPIEZA DE OBRA** | 503d? | 2026-06-22 | 2028-06-22 |  | 243d |
| 363 |  | Limpieza periodica | 1d? | 2026-06-22 | 2026-06-22 |  | 745d |
| 364 |  | Limpieza final | 4d | 2028-06-16 | 2028-06-22 | 245 | 243d |
| 365 | 1.3.7.10 | **VARIOS** | 15d | 2028-05-22 | 2028-06-12 |  | 0d |
| 366 |  | Muebles | 10d | 2028-05-22 | 2028-06-05 | 361FS+15d | 0d |
| 367 |  | Mesadas | 5d | 2028-06-06 | 2028-06-12 | 366 | 0d |
| 368 |  | Firma Acta recepcion Provisoria | 0d | 2028-06-15 | 2028-06-15 | 245 | 0d |
| 369 |  | Posventa | 12emo | 2028-06-15 | 2029-06-10 | 368 | 0d |

## Version 2 (data date 2026-06-25, saved 2026-09-26)

Last finish 2029-06-10 → 2028-09-23 (-260d). Complete tasks 5 → 18.

Added:

| ID | Task | Duration | Start | Finish | Predecessors | Constraint | Resources |
| --- | --- | --- | --- | --- | --- | --- | --- |
| 12 | Aprobación de niveles por parte del barrio | 16d | 2026-07-07 A | 2026-07-29 A |  | start no earlier than 2026-07-07 |  |
| 13 | Excavación Terreno 2da Etapa | 23d | 2026-08-03 A | 2026-09-02 A | 11 | start no earlier than 2026-08-03 | Mariana V |
| 31 | Hormigon de bases Etapa 2 | 1d | 2026-09-04 A | 2026-09-04 A | 24FF |  | Mariana V |

Removed: 3 Obra Vivienda Diego Casali

Changed:

| ID | Task | Start | Finish | Duration | Complete | Total float | Predecessors | Other |
| --- | --- | --- | --- | --- | --- | --- | --- | --- |
| 1 | **Vivienda Diego Casali** |  | 2029-06-10 → 2028-09-23 (-260d) | 755d? → 577d? | 0% → 3% |  |  | baseline start none → 2026-06-09; baseline finish none → 2028-09-23 |
| 2 | Obra Vivienda Diego Casali Contratada | 2026-06-22 → 2026-06-24 (+2d) | 2026-06-22 → 2028-06-24 (+733d) | 0d → 731ed |  | 746d → 274.25d |  | constraint start no earlier than 2026-06-22 → start no earlier than 2026-06-24; baseline start none → 2026-06-22; baseline finish none → 2028-06-22 |
| 3 | Armado de Pilar con Tablero de Obra |  | 2026-06-09 A → 2026-06-23 (+14d) | 1d → 11d | 100% → 9% | none → 566d |  | baseline start none → 2026-06-09; baseline finish none → 2026-06-09 |
| 4 | **OBRA VIVIENDA DIEGO CASALI** | 2026-06-09 A → 2026-06-24 A (+15d) | 2028-07-26 → 2027-11-09 (-260d) | 536d? → 346d? | 0% → 6% | 219d → 220d |  | constraint none → start no earlier than 2026-06-24; baseline start none → 2026-06-09; baseline finish none → 2027-11-09 |
| 5 | **TAREAS PRELIMINARES** | 2026-06-09 A → 2026-06-24 A (+15d) |  | 18d → 7d |  |  |  | baseline start none → 2026-06-09; baseline finish none → 2026-07-02 |
| 6 | Estudio de Suelos | 2026-06-22 A → 2026-06-24 A (+2d) | 2026-06-24 A → 2026-06-26 A (+2d) |  |  |  |  | baseline start none → 2026-06-22; baseline finish none → 2026-06-24 |
| 7 | Calculo Estructural | 2026-06-22 A → 2026-06-24 A (+2d) | 2026-06-24 A → 2026-06-26 A (+2d) |  |  |  |  | baseline start none → 2026-06-22; baseline finish none → 2026-06-24 |
| 8 | Cerco Perimetral | 2026-06-22 A → 2026-06-24 A (+2d) | 2026-06-23 A → 2026-06-25 A (+2d) |  |  |  |  | baseline start none → 2026-06-22; baseline finish none → 2026-06-23 |
| 9 | Replanteo de Obra |  |  |  |  |  |  | baseline start none → 2026-07-02; baseline finish none → 2026-07-02 |
| 10 | **CONFORMACIÓN DE TERRENO** | 2026-07-02 A | 2027-05-10 → 2026-10-05 (-217d) | 213d → 66d | 0% → 85% | 0d → 460d |  | baseline start none → 2026-07-02; baseline finish none → 2026-09-25 |
| 11 | Excavación terreno | 2026-07-02 A | 2026-07-17 → 2026-07-24 A (+7d) | 11d → 16d | 0% → 100% | 0d → none |  | baseline start none → 2026-07-02; baseline finish none → 2026-07-24 |
| 14 | Relleno de terreno | 2026-09-09 → 2026-09-29 (+20d) | 2026-09-15 → 2026-10-05 (+20d) |  |  | 0d → 460d |  | baseline start none → 2026-09-21; baseline finish none → 2026-09-25 |
| 15 | Relleno de terreno | 2027-05-04 → 2026-08-13 (-264d) | 2027-05-10 → 2026-08-20 (-263d) |  |  |  |  | baseline start none → 2026-08-13; baseline finish none → 2026-08-20 |
| 16 | **ESTRUCTURA Y ALBAÑILERIA** | 2026-06-22 → 2026-06-24 A (+2d) | 2028-07-26 → 2027-11-09 (-260d) | 527d → 346d | 0% → 7% | 19d → 220d |  | baseline start none → 2026-06-22; baseline finish none → 2027-11-09 |
| 17 | **Bases Aisladas** | 2026-07-20 → 2026-07-13 A (-7d) | 2027-04-16 → 2026-09-18 (-210d) | 186d → 49d | 0% → 48% | 0d → 505d |  | baseline start none → 2026-07-13; baseline finish none → 2026-09-10 |
| 18 | Base Aislada B2 (100x70x35) - PSS | 2026-07-20 → 2026-09-03 (+45d) | 2026-08-04 → 2026-09-18 (+45d) |  |  | 0d → 505d | 11 → 13 | baseline start none → 2026-08-26; baseline finish none → 2026-09-10 |
| 19 | Base Aislada B3 (120x70x35) - PSS | 2026-07-20 → 2026-09-03 (+45d) | 2026-08-04 → 2026-09-18 (+45d) |  |  | 715d → 505d | 11 → 13 | baseline start none → 2026-08-26; baseline finish none → 2026-09-10 |
| 20 | Base Aislada B4 (80x80x35) - PSS | 2026-07-20 → 2026-09-03 (+45d) | 2026-08-04 → 2026-09-18 (+45d) |  |  | 715d → 505d | 11 → 13 | baseline start none → 2026-08-26; baseline finish none → 2026-09-10 |
| 21 | Base Aislada B5 (150x90x35) - PSS | 2026-07-20 → 2026-09-03 (+45d) | 2026-08-04 → 2026-09-18 (+45d) |  |  | 715d → 505d | 11 → 13 | baseline start none → 2026-08-26; baseline finish none → 2026-09-10 |
| 22 | Base Aislada B6 (90x90x35) - PSS | 2026-07-20 → 2026-09-03 (+45d) | 2026-08-04 → 2026-09-18 (+45d) |  |  | 715d → 505d | 11 → 13 | baseline start none → 2026-08-26; baseline finish none → 2026-09-10 |
| 23 | Hormigón de bases | 2026-08-24 → 2026-09-02 (+9d) | 2026-08-24 → 2026-09-02 (+9d) |  |  | 687d → 502d | 33 → none | constraint none → start no earlier than 2026-09-02; baseline start none → 2026-09-02; baseline finish none → 2026-09-02 |
| 24 | Base Aislada B1 (70x70x35) - PB | 2027-03-19 → 2026-08-26 A (-205d) | 2027-04-05 → 2026-09-04 A (-213d) | 10d → 8d | 0% → 100% | 0d → none | 143 → 124 | baseline start none → 2026-07-13; baseline finish none → 2026-09-04 |
| 25 | Base Aislada B2 (100x70x35) - PB | 2027-03-19 → 2026-08-26 A (-205d) | 2027-04-05 → 2026-09-04 A (-213d) | 10d → 8d | 0% → 100% | 550d → none | 143 → 124 | baseline start none → 2026-07-13; baseline finish none → 2026-09-04 |
| 26 | Base Aislada B3 (120x70x35) - PB | 2027-03-19 → 2026-07-13 A (-249d) | 2027-04-05 → 2026-07-24 A (-255d) |  | 0% → 100% | 550d → none | 143 → 30FF | baseline start none → 2026-07-13; baseline finish none → 2026-07-24 |
| 27 | Base Aislada B4 (80x80x35) - PB | 2027-03-19 → 2026-07-13 A (-249d) | 2027-04-05 → 2026-07-24 A (-255d) |  | 0% → 100% | 550d → none | 143 → 30FF | baseline start none → 2026-07-13; baseline finish none → 2026-07-24 |
| 28 | Base Aislada B5 (150x90x35) - PB | 2027-03-19 → 2026-08-26 A (-205d) | 2027-04-05 → 2026-09-04 A (-213d) | 10d → 8d | 0% → 100% | 550d → none | 143 → 124 | baseline start none → 2026-08-26; baseline finish none → 2026-09-04 |
| 29 | Base Aislada B6 (90x90x35) - PB | 2027-03-19 → 2026-07-13 A (-249d) | 2027-04-05 → 2026-07-24 A (-255d) |  | 0% → 100% | 550d → none | 143 → 30FF | baseline start none → 2026-07-13; baseline finish none → 2026-07-24 |
| 30 | Hormigon de bases Etapa 1 | 2027-04-16 → 2026-07-27 A (-263d) | 2027-04-16 → 2026-07-27 A (-263d) |  | 0% → 100% | 541d → none | 35 → 11 | was named Hormigon de bases; baseline start none → 2026-07-27; baseline finish none → 2026-07-27 |
| 32 | **Vigas de Fundación y Riostra** | 2026-08-05 → 2026-07-16 A (-20d) | 2027-04-15 → 2026-09-10 (-217d) | 173d → 40d | 0% → 40% | 0d → 511d |  | baseline start none → 2026-07-16; baseline finish none → 2026-09-02 |
| 33 | Viga Fundación VF (60x25) - PSS | 2026-08-05 → 2026-08-26 (+21d) | 2026-08-21 → 2026-09-10 (+20d) |  |  | 0d → 460d | 18 → 13FS-6d | baseline start none → 2026-08-17; baseline finish none → 2026-09-02 |
| 34 | Viga Riostra VR (20x25) - PSS | 2026-08-05 → 2026-08-26 (+21d) | 2026-08-21 → 2026-09-10 (+20d) |  |  | 703d → 511d | 18 → 13FS-6d | baseline start none → 2026-08-17; baseline finish none → 2026-09-02 |
| 35 | Viga Fundación VF (60x25) - PB | 2027-04-06 → 2026-07-16 A (-264d) | 2027-04-15 → 2026-07-27 A (-262d) |  | 0% → 100% | 0d → none | 24 → 30FF | baseline start none → 2026-07-16; baseline finish none → 2026-07-27 |
| 36 | Viga Riostra VR (20x25) - PB | 2027-04-06 → 2026-07-16 A (-264d) | 2027-04-15 → 2026-07-27 A (-262d) |  | 0% → 100% | 542d → none | 24 → 30FF | baseline start none → 2026-07-16; baseline finish none → 2026-07-27 |
| 37 | **Columnas.** | 2026-11-24 → 2026-09-25 A (-60d) | 2027-11-10 → 2027-02-24 (-259d) | 242d → 103d | 0% → 23% | 397d → 398d |  | baseline start none → 2026-09-25; baseline finish none → 2027-02-24 |
| 38 | C1 - (0,18x0,30) - 3 unid - (2,8 m de altura) | 2026-11-24 → 2026-10-16 A (-39d) | 2026-11-30 → 2026-10-22 (-39d) |  | 0% → 30% | 634d → 482d |  | baseline start none → 2026-10-16; baseline finish none → 2026-10-22 |
| 39 | C2 - (0,18x0,80) - 1 unid - (2,8 m de altura) | 2026-11-24 → 2026-10-16 A (-39d) | 2026-11-30 → 2026-10-22 (-39d) |  | 0% → 30% | 634d → 482d |  | baseline start none → 2026-10-16; baseline finish none → 2026-10-22 |
| 40 | C3 - (0,18x0,40) - 5 unid - (2,8 m de altura) | 2026-11-24 → 2026-10-16 A (-39d) | 2026-11-30 → 2026-10-22 (-39d) |  | 0% → 30% | 634d → 482d |  | baseline start none → 2026-10-16; baseline finish none → 2026-10-22 |
| 41 | C4 - (0,18x0,50) - 3 unid - (2,8 m de altura) | 2026-11-24 → 2026-10-16 A (-39d) | 2026-11-30 → 2026-10-22 (-39d) |  | 0% → 30% | 634d → 482d |  | baseline start none → 2026-10-16; baseline finish none → 2026-10-22 |
| 42 | C5 - (0,18x1,00) - 1 unid - (2,8 m de altura) | 2026-11-24 → 2026-10-16 A (-39d) | 2026-11-30 → 2026-10-22 (-39d) |  | 0% → 30% | 634d → 482d |  | baseline start none → 2026-10-16; baseline finish none → 2026-10-22 |
| 43 | C6 - (0,18x1,00) - 1 unid - (2,8 m de altura) | 2026-11-24 → 2026-10-16 A (-39d) | 2026-11-30 → 2026-10-22 (-39d) |  | 0% → 30% | 634d → 482d |  | baseline start none → 2026-10-16; baseline finish none → 2026-10-22 |
| 44 | C7 - (0,18x1,00) - 1 unid - (2,8 m de altura) | 2026-11-24 → 2026-10-16 A (-39d) | 2026-11-30 → 2026-10-22 (-39d) |  | 0% → 30% | 634d → 482d |  | baseline start none → 2026-10-16; baseline finish none → 2026-10-22 |
| 45 | C1 - (0,18x0,30) - 2 unid - (2,8 m de altura) | 2027-06-16 → 2026-09-25 A (-264d) | 2027-06-24 → 2026-10-05 (-262d) |  | 0% → 30% | 493d → 494d |  | baseline start none → 2026-09-25; baseline finish none → 2026-10-05 |
| 46 | C2 - (0,18x0,80) - 1 unid - (2,8 m de altura) | 2027-06-16 → 2026-09-25 A (-264d) | 2027-06-24 → 2026-10-05 (-262d) |  | 0% → 30% | 493d → 494d |  | baseline start none → 2026-09-25; baseline finish none → 2026-10-05 |
| 47 | C3 - (0,18x0,40) - 5 unid - (2,8 m de altura) | 2027-06-16 → 2026-09-25 A (-264d) | 2027-06-24 → 2026-10-05 (-262d) |  | 0% → 30% | 493d → 494d |  | baseline start none → 2026-09-25; baseline finish none → 2026-10-05 |
| 48 | C4 - (0,18x0,50) - 7 unid - (2,8 m de altura) | 2027-06-16 → 2026-09-25 A (-264d) | 2027-06-24 → 2026-10-05 (-262d) |  | 0% → 30% | 493d → 494d |  | baseline start none → 2026-09-25; baseline finish none → 2026-10-05 |
| 49 | C5 - (0,18x1,00) - 2 unid - (2,8 m de altura) | 2027-06-16 → 2026-09-25 A (-264d) | 2027-06-24 → 2026-10-05 (-262d) |  | 0% → 30% | 493d → 494d |  | baseline start none → 2026-09-25; baseline finish none → 2026-10-05 |
| 50 | C6 - (0,18x1,00) - 1 unid - (2,8 m de altura) | 2027-06-16 → 2026-09-25 A (-264d) | 2027-06-24 → 2026-10-05 (-262d) |  | 0% → 30% | 493d → 494d |  | baseline start none → 2026-09-25; baseline finish none → 2026-10-05 |
| 51 | C8 - (0,18x1,00) - 1 unid - (2,8 m de altura) | 2027-06-16 → 2026-09-25 A (-264d) | 2027-06-24 → 2026-10-05 (-262d) |  | 0% → 30% | 493d → 494d |  | baseline start none → 2026-09-25; baseline finish none → 2026-10-05 |
| 52 | C2 - (0,18x0,80) - 1 unid - (2,8 m de altura) | 2027-11-04 → 2027-02-18 (-259d) | 2027-11-10 → 2027-02-24 (-259d) |  |  | 397d → 398d |  | baseline start none → 2027-02-18; baseline finish none → 2027-02-24 |
| 53 | C3 - (0,18x0,40) - 2 unid - (2,8 m de altura) | 2027-11-04 → 2027-02-18 (-259d) | 2027-11-10 → 2027-02-24 (-259d) |  |  | 397d → 398d |  | baseline start none → 2027-02-18; baseline finish none → 2027-02-24 |
| 54 | C4 - (0,18x0,50) - 4 unid - (2,8 m de altura) | 2027-11-04 → 2027-02-18 (-259d) | 2027-11-10 → 2027-02-24 (-259d) |  |  | 397d → 398d |  | baseline start none → 2027-02-18; baseline finish none → 2027-02-24 |
| 55 | C5 - (0,18x1,00) - 1 unid - (2,8 m de altura) | 2027-11-04 → 2027-02-18 (-259d) | 2027-11-10 → 2027-02-24 (-259d) |  |  | 397d → 398d |  | baseline start none → 2027-02-18; baseline finish none → 2027-02-24 |
| 56 | C6 - (0,18x1,00) - 1 unid - (2,8 m de altura) | 2027-11-04 → 2027-02-18 (-259d) | 2027-11-10 → 2027-02-24 (-259d) |  |  | 397d → 398d |  | baseline start none → 2027-02-18; baseline finish none → 2027-02-24 |
| 57 | **Encadenado Vertical** | 2026-11-16 → 2026-09-25 A (-52d) | 2027-11-10 → 2027-02-24 (-259d) | 247d → 103d | 0% → 19% | 397d → 398d |  | baseline start none → 2026-09-25; baseline finish none → 2027-02-24 |
| 58 | Ce - (0,18x0,18) - 24 unid - (2,8 m de altura) | 2026-11-16 → 2026-10-08 A (-39d) | 2026-11-30 → 2026-10-22 (-39d) |  | 0% → 30% | 634d → 482d |  | baseline start none → 2026-10-08; baseline finish none → 2026-10-22 |
| 59 | Ce1 - (0,18x0,18) - 21 unid - (2,8 m de altura) | 2026-11-16 → 2026-10-08 A (-39d) | 2026-11-30 → 2026-10-22 (-39d) |  | 0% → 30% | 634d → 482d |  | baseline start none → 2026-10-08; baseline finish none → 2026-10-22 |
| 60 | Ce2 - (0,18x0,30) - 7 unid - (2,8 m de altura) | 2026-11-24 → 2026-10-16 A (-39d) | 2026-11-30 → 2026-10-22 (-39d) |  | 0% → 30% | 634d → 482d |  | baseline start none → 2026-10-16; baseline finish none → 2026-10-22 |
| 61 | Ce - (0,18x0,18) - 7 unid - (2,8 m de altura) | 2027-06-16 → 2026-09-25 A (-264d) | 2027-06-24 → 2026-10-05 (-262d) |  | 0% → 30% | 493d → 494d |  | baseline start none → 2026-09-25; baseline finish none → 2026-10-05 |
| 62 | Ce1 - (0,18x0,18) - 10 unid - (2,8 m de altura) | 2027-06-16 → 2026-09-25 A (-264d) | 2027-06-24 → 2026-10-05 (-262d) |  | 0% → 30% | 493d → 494d |  | baseline start none → 2026-09-25; baseline finish none → 2026-10-05 |
| 63 | Ce2 - (0,18x0,30) - 8 unid - (2,8 m de altura) | 2027-06-16 → 2026-09-25 A (-264d) | 2027-06-24 → 2026-10-05 (-262d) |  | 0% → 30% | 493d → 494d |  | baseline start none → 2026-09-25; baseline finish none → 2026-10-05 |
| 64 | Ce - (0,18x0,18) - 21 unid - (2,8 m de altura) | 2027-10-28 → 2027-02-11 (-259d) | 2027-11-10 → 2027-02-24 (-259d) |  |  | 397d → 398d |  | baseline start none → 2027-02-11; baseline finish none → 2027-02-24 |
| 65 | Ce1 - (0,18x0,18) - 21 unid - (2,8 m de altura) | 2027-10-28 → 2027-02-11 (-259d) | 2027-11-10 → 2027-02-24 (-259d) |  |  | 397d → 398d |  | baseline start none → 2027-02-11; baseline finish none → 2027-02-24 |
| 66 | Ce2 - (0,18x0,30) - 13 unid - (2,8 m de altura) | 2027-11-02 → 2027-02-16 (-259d) | 2027-11-10 → 2027-02-24 (-259d) |  |  | 397d → 398d |  | baseline start none → 2027-02-16; baseline finish none → 2027-02-24 |
| 67 | **Encadenado Horizontal** | 2026-12-23 → 2026-11-04 (-49d) | 2027-12-14 → 2027-03-29 (-260d) | 244d → 98d |  | 375d → 376d |  | baseline start none → 2026-11-04; baseline finish none → 2027-03-29 |
| 68 | EH - (0,18x0,15) | 2026-12-23 → 2026-11-05 (-48d) | 2027-01-07 → 2026-11-19 (-49d) |  |  | 609d → 463d |  | baseline start none → 2026-11-13; baseline finish none → 2026-11-27 |
| 69 | EH1 - (0,25x0,15) | 2026-12-23 → 2026-11-05 (-48d) | 2027-01-07 → 2026-11-19 (-49d) |  |  | 609d → 463d |  | baseline start none → 2026-11-13; baseline finish none → 2026-11-27 |
| 70 | EH - (0,18x0,15) | 2027-07-26 → 2026-11-04 (-264d) | 2027-08-03 → 2026-11-12 (-264d) |  |  | 466d → 467d |  | baseline start none → 2026-11-04; baseline finish none → 2026-11-12 |
| 71 | EH - (0,18x0,15) | 2027-12-03 → 2027-03-18 (-260d) | 2027-12-14 → 2027-03-29 (-260d) |  |  | 375d → 376d |  | baseline start none → 2027-03-18; baseline finish none → 2027-03-29 |
| 72 | **Vigas Estructurales** | 2026-12-23 → 2026-11-04 (-49d) | 2028-01-14 → 2027-04-30 (-259d) | 267d → 121d |  | 352d → 353d |  | baseline start none → 2026-11-04; baseline finish none → 2027-04-30 |
| 73 | V - (35x40),(35x50),(35x60),(40x40) | 2026-12-23 → 2026-11-05 (-48d) | 2027-01-11 → 2026-11-23 (-49d) |  |  | 607d → 461d |  | baseline start none → 2026-11-13; baseline finish none → 2026-12-01 |

| ID | Task | Start | Finish | Duration | Complete | Total float | Predecessors | Other |
| --- | --- | --- | --- | --- | --- | --- | --- | --- |
| 74 | V - (18x35) | 2026-12-23 → 2026-11-05 (-48d) | 2027-01-11 → 2026-11-23 (-49d) |  |  | 607d → 461d |  | baseline start none → 2026-11-13; baseline finish none → 2026-12-01 |
| 75 | V - (35x70),(35x85),(35x100) | 2026-12-23 → 2026-11-05 (-48d) | 2027-01-11 → 2026-11-23 (-49d) |  |  | 607d → 461d |  | baseline start none → 2026-11-13; baseline finish none → 2026-12-01 |
| 76 | NB - (15x40)-(20x40) - Hormigón Visto | 2026-12-23 → 2026-11-05 (-48d) | 2027-01-11 → 2026-11-23 (-49d) |  |  | 607d → 461d |  | baseline start none → 2026-11-13; baseline finish none → 2026-12-01 |
| 77 | V - (30x35),(35x40),(35x50),(35x60),(40x40),(40x60) | 2027-07-26 → 2026-11-04 (-264d) | 2027-08-24 → 2026-12-03 (-264d) |  |  | 452d → 453d |  | baseline start none → 2026-11-04; baseline finish none → 2026-12-03 |
| 78 | V - (18x35),(25x40) | 2027-07-26 → 2026-11-04 (-264d) | 2027-08-24 → 2026-12-03 (-264d) |  |  | 452d → 453d |  | baseline start none → 2026-11-04; baseline finish none → 2026-12-03 |
| 79 | V - (18x70),(35x80),(35x70),(35x80) | 2027-07-26 → 2026-11-04 (-264d) | 2027-08-24 → 2026-12-03 (-264d) |  |  | 452d → 453d |  | baseline start none → 2026-11-04; baseline finish none → 2026-12-03 |
| 80 | NB - (15x40)-(20x40) | 2027-07-26 → 2026-11-04 (-264d) | 2027-08-24 → 2026-12-03 (-264d) |  |  | 452d → 453d |  | baseline start none → 2026-11-04; baseline finish none → 2026-12-03 |
| 81 | NB1 - (20x40) | 2027-07-26 → 2026-11-04 (-264d) | 2027-08-24 → 2026-12-03 (-264d) |  |  | 452d → 453d |  | baseline start none → 2026-11-04; baseline finish none → 2026-12-03 |
| 82 | V - (30x35),(30x45),(45x60),(40x40),(40x45),(40x60) | 2027-12-03 → 2027-03-18 (-260d) | 2028-01-14 → 2027-04-30 (-259d) |  |  | 352d → 353d |  | baseline start none → 2027-03-18; baseline finish none → 2027-04-30 |
| 83 | V - (18x35),(20x45) | 2027-12-03 → 2027-03-18 (-260d) | 2028-01-14 → 2027-04-30 (-259d) |  |  | 352d → 353d |  | baseline start none → 2027-03-18; baseline finish none → 2027-04-30 |
| 84 | V - (40x70) | 2027-12-03 → 2027-03-18 (-260d) | 2028-01-14 → 2027-04-30 (-259d) |  |  | 352d → 353d |  | baseline start none → 2027-03-18; baseline finish none → 2027-04-30 |
| 85 | NB - (15x40)-(20x40) | 2027-12-03 → 2027-03-18 (-260d) | 2028-01-14 → 2027-04-30 (-259d) |  |  | 352d → 353d |  | baseline start none → 2027-03-18; baseline finish none → 2027-04-30 |
| 86 | **Losas** | 2027-01-12 → 2026-11-24 (-49d) | 2028-02-29 → 2027-06-15 (-259d) | 286d → 139d |  | 0d → 2d |  | baseline start none → 2026-11-26; baseline finish none → 2027-06-15 |
| 87 | L1 - Losa Nervurada - 35 cm (cieloraso de yeso o madera) | 2027-01-12 → 2026-11-24 (-49d) | 2027-02-23 → 2027-01-07 (-47d) |  |  | 0d → 395d |  | baseline start none → 2026-12-02; baseline finish none → 2027-01-15 |
| 88 | L2 - Losa Nervurada VISTA - 35 cm | 2027-02-02 → 2026-12-16 (-48d) | 2027-02-23 → 2027-01-07 (-47d) |  |  | 577d → 431d |  | baseline start none → 2026-12-24; baseline finish none → 2027-01-15 |
| 89 | Losa Maciza - 15 cm | 2027-02-02 → 2026-12-16 (-48d) | 2027-02-23 → 2027-01-07 (-47d) |  |  | 577d → 431d |  | baseline start none → 2026-12-24; baseline finish none → 2027-01-15 |
| 90 | Hormigón losa SS | 2027-02-24 → 2027-01-08 (-47d) | 2027-02-24 → 2027-01-08 (-47d) |  |  | 541d → 395d |  | baseline start none → 2027-01-18; baseline finish none → 2027-01-18 |
| 91 | L1 - Losa Nervurada - 35 cm (cieloraso de yeso o madera) | 2027-08-16 → 2026-11-26 (-263d) | 2027-10-04 → 2027-01-18 (-259d) |  |  |  |  | baseline start none → 2026-11-26; baseline finish none → 2027-01-18 |
| 92 | L2 - Losa Nervurada VISTA - 35 cm | 2027-09-14 → 2026-12-28 (-260d) | 2027-10-04 → 2027-01-18 (-259d) |  |  | 423d → 424d |  | baseline start none → 2026-12-28; baseline finish none → 2027-01-18 |
| 93 | Losa Maciza - 15 cm | 2027-09-14 → 2026-12-28 (-260d) | 2027-10-04 → 2027-01-18 (-259d) |  |  | 423d → 424d |  | baseline start none → 2026-12-28; baseline finish none → 2027-01-18 |
| 94 | Hormigón de losa PB | 2027-10-05 → 2027-01-19 (-259d) | 2027-10-05 → 2027-01-19 (-259d) |  |  |  |  | baseline start none → 2027-01-19; baseline finish none → 2027-01-19 |
| 95 | L1 - Losa Nervurada - 35 cm (cieloraso de yeso o madera) | 2027-12-27 → 2027-04-12 (-259d) | 2028-02-28 → 2027-06-14 (-259d) |  |  | 241d → 242d |  | baseline start none → 2027-04-12; baseline finish none → 2027-06-14 |
| 96 | L2 - Losa Nervurada VISTA - 35 cm | 2028-02-15 → 2027-06-01 (-259d) | 2028-02-28 → 2027-06-14 (-259d) |  |  | 322d → 323d |  | baseline start none → 2027-06-01; baseline finish none → 2027-06-14 |
| 97 | Losa Maciza - 15 cm - LOSA TANQUE | 2028-02-15 → 2027-06-01 (-259d) | 2028-02-28 → 2027-06-14 (-259d) |  |  | 322d → 323d |  | baseline start none → 2027-06-01; baseline finish none → 2027-06-14 |
| 98 | Hormigón de losa PA | 2028-02-29 → 2027-06-15 (-259d) | 2028-02-29 → 2027-06-15 (-259d) |  |  | 241d → 242d |  | baseline start none → 2027-06-15; baseline finish none → 2027-06-15 |
| 99 | **Mampostería** | 2026-08-24 → 2026-07-28 (-27d) | 2027-11-10 → 2027-02-24 (-259d) | 306d → 145d |  |  |  | baseline start none → 2026-07-28; baseline finish none → 2027-02-24 |
| 100 | Muro Armado con bloque de hormigón (llenado y armado) 19x19x39 | 2026-10-09 → 2026-08-26 (-44d) | 2026-11-30 → 2026-10-14 (-47d) |  |  | 0d → 395d | 126 → 124 | baseline start none → 2026-09-03; baseline finish none → 2026-10-22 |
| 101 | Mamposteria Ladrillo Hueco Portante 12x18x33 | 2026-10-09 → 2026-08-26 (-44d) | 2026-10-30 → 2026-09-15 (-45d) |  |  | 654d → 508d | 126 → 124 | baseline start none → 2026-09-03; baseline finish none → 2026-09-23 |
| 102 | Mamposteria Ladrillo Hueco Portante 18x18x33 | 2026-10-09 → 2026-08-26 (-44d) | 2026-10-23 → 2026-09-08 (-45d) |  |  | 649d → 503d | 126 → 124 | baseline start none → 2026-09-03; baseline finish none → 2026-09-16 |
| 103 | Mampostería de fundación/elevación | 2026-08-24 → 2026-09-11 (+18d) | 2026-08-28 → 2026-09-17 (+20d) |  |  | 0d → 460d |  | baseline start none → 2026-09-03; baseline finish none → 2026-09-09 |
| 104 | Mamposteria Ladrillo Hueco Portante 12x18x33 PB | 2027-05-28 → 2026-09-08 (-262d) | 2027-06-24 → 2026-10-05 (-262d) |  |  |  |  | baseline start none → 2026-09-08; baseline finish none → 2026-10-05 |
| 105 | Mamposteria Ladrillo Hueco Portante 18x18x33 PB | 2027-06-11 → 2026-09-22 (-262d) | 2027-06-24 → 2026-10-05 (-262d) |  |  | 493d → 494d |  | baseline start none → 2026-09-22; baseline finish none → 2026-10-05 |
| 106 | Mampostería de fundación/elevación | 2027-04-16 → 2026-07-28 (-262d) | 2027-04-22 → 2026-08-03 (-262d) |  |  |  |  | baseline start none → 2026-07-28; baseline finish none → 2026-08-03 |
| 107 | Mamposteria Ladrillo Hueco Portante 12x18x33 PA | 2027-10-06 → 2027-01-20 (-259d) | 2027-11-10 → 2027-02-24 (-259d) |  |  |  |  | baseline start none → 2027-01-20; baseline finish none → 2027-02-24 |
| 108 | Mamposteria Ladrillo Hueco Portante 18x18x33 PA | 2027-10-28 → 2027-02-11 (-259d) | 2027-11-10 → 2027-02-24 (-259d) |  |  | 397d → 398d |  | baseline start none → 2027-02-11; baseline finish none → 2027-02-24 |
| 109 | **Muro de Contención** | 2026-10-09 → 2026-11-06 (+28d) | 2026-10-27 → 2026-11-24 (+28d) |  |  | 657d → 460d |  | baseline start none → 2026-10-29; baseline finish none → 2026-11-13 |
| 110 | Muro de contencion de bloque de hormigón según detalle muro armado - PSS - Costado del quincho y fogonero* | 2026-10-09 → 2026-11-06 (+28d) | 2026-10-27 → 2026-11-24 (+28d) |  |  | 657d → 460d |  | baseline start none → 2026-10-29; baseline finish none → 2026-11-13 |
| 111 | **Aislación en Muros y Contrapiso** | 2026-08-31 → 2026-08-04 (-27d) | 2027-12-09 → 2027-03-24 (-260d) | 320d → 159d |  |  |  | baseline start none → 2026-08-04; baseline finish none → 2027-03-24 |
| 112 | Capa Aisladora Horizontal Mampostería | 2026-08-31 → 2026-09-18 (+18d) | 2026-09-08 → 2026-09-28 (+20d) |  |  | 0d → 460d |  | baseline start none → 2026-09-10; baseline finish none → 2026-09-18 |
| 113 | Capa Aisladora Horizontal Mampostería PB | 2027-04-23 → 2026-08-04 (-262d) | 2027-05-03 → 2026-08-12 (-264d) |  |  |  |  | baseline start none → 2026-08-04; baseline finish none → 2026-08-12 |
| 114 | Capa Aisladora Horizontal bajo contrapiso | 2026-09-16 → 2026-10-06 (+20d) | 2026-09-22 → 2026-10-12 (+20d) |  |  | 0d → 460d |  | baseline start none → 2026-09-28; baseline finish none → 2026-10-02 |
| 115 | Capa Aisladora Horizontal bajo contrapiso PB | 2027-05-11 → 2026-08-21 (-263d) | 2027-05-17 → 2026-08-27 (-263d) |  |  |  |  | baseline start none → 2026-08-21; baseline finish none → 2026-08-27 |
| 116 | Capa Aisladora Vertical Mampostería - H: 50cm | 2026-08-31 → 2026-09-18 (+18d) | 2026-09-11 → 2026-10-01 (+20d) |  |  | 688d → 496d |  | baseline start none → 2026-09-10; baseline finish none → 2026-09-23 |
| 117 | Capa Aisladora Vertical Mampostería - H: 50cm PB | 2027-04-23 → 2026-08-04 (-262d) | 2027-05-03 → 2026-08-12 (-264d) |  |  | 530d → 531d |  | baseline start none → 2026-08-04; baseline finish none → 2026-08-12 |
| 118 | Capa Aisladora Vertical Muros revestido de piedra con sika monotop 107 | 2026-12-23 → 2026-11-05 (-48d) | 2026-12-30 → 2026-11-11 (-49d) |  |  | 614d → 468d |  | baseline start none → 2026-11-13; baseline finish none → 2026-11-20 |
| 119 | Capa Aisladora Vertical Muros revestido de piedra con sika monotop 107 PB | 2027-07-26 → 2026-11-04 (-264d) | 2027-07-30 → 2026-11-10 (-262d) |  |  | 468d → 469d |  | baseline start none → 2026-11-04; baseline finish none → 2026-11-10 |
| 120 | Capa Aisladora Vertical Muros revestido de piedra con sika monotop 107 PA | 2027-12-03 → 2027-03-18 (-260d) | 2027-12-09 → 2027-03-24 (-260d) |  |  | 377d → 378d |  | baseline start none → 2027-03-18; baseline finish none → 2027-03-24 |
| 121 | Capa Aisladora Vertical en Muros Armados - Cara exterior (membrana geo) | 2026-12-09 → 2026-10-22 (-48d) | 2026-12-22 → 2026-11-04 (-48d) |  |  | 612d → 466d |  | baseline start none → 2026-10-30; baseline finish none → 2026-11-12 |
| 122 | Capa Aisladora Vertical en Muros Armados - Cara exterior (rafa de ladrillos)** | 2026-12-23 → 2026-11-05 (-48d) | 2027-01-04 → 2026-11-13 (-52d) |  |  | 612d → 466d |  | baseline start none → 2026-11-13; baseline finish none → 2026-11-24 |
| 123 | **Contrapiso** | 2026-09-23 → 2026-08-14 A (-40d) | 2028-05-19 → 2027-09-03 (-259d) | 416d → 264d | 0% → 15% | 0d → 266d |  | baseline start none → 2026-08-25; baseline finish none → 2027-09-03 |
| 124 | Hormigón p/contrapiso Interior Casa e=10cm (PSS) | 2026-09-23 → 2026-08-14 A (-40d) | 2026-10-01 → 2026-08-25 A (-37d) |  | 0% → 100% | 0d → none | 114 → 26FS+14d | baseline start none → 2026-08-25; baseline finish none → 2026-09-02 |
| 125 | Hormigón p/contrapiso Exterior Cochera e=10cm (PSS) | 2026-09-25 → 2026-10-23 (+28d) | 2026-10-01 → 2026-10-29 (+28d) |  |  | 0d → 460d | 124FF → 114FS+7d | baseline start none → 2026-10-15; baseline finish none → 2026-10-21 |
| 126 | Hormigón p/contrapiso Exterior Vereda Perimetral + Borde Fogonero e=10cm (PSS) | 2026-10-02 → 2026-10-30 (+28d) | 2026-10-08 → 2026-11-05 (+28d) |  |  | 0d → 460d |  | baseline start none → 2026-10-22; baseline finish none → 2026-10-28 |
| 127 | Hormigón p/contrapiso Exterior Solarium e=10cm (PSS) | 2026-10-02 → 2026-10-30 (+28d) | 2026-10-08 → 2026-11-05 (+28d) |  |  | 669d → 472d |  | baseline start none → 2026-10-22; baseline finish none → 2026-10-28 |
| 128 | Hormigón p/contrapiso Interior Casa e=10cm (PB) | 2027-05-18 → 2026-08-28 (-263d) | 2027-05-27 → 2026-09-07 (-262d) |  |  |  |  | baseline start none → 2026-08-28; baseline finish none → 2026-09-07 |
| 129 | Hormigón p/contrapiso ARMADO Interior Casa e=10cm (PB) | 2027-05-20 → 2026-09-01 (-261d) | 2027-05-27 → 2026-09-07 (-262d) |  |  | 513d → 514d |  | baseline start none → 2026-09-01; baseline finish none → 2026-09-07 |
| 130 | Hormigón p/contrapiso Exterior Ingreso Peatonal e=10cm (PB) | 2028-05-15 → 2027-08-30 (-259d) | 2028-05-19 → 2027-09-03 (-259d) |  |  | 255d → 256d |  | baseline start none → 2027-08-30; baseline finish none → 2027-09-03 |
| 131 | Hormigón p/contrapiso Exterior Ingreso Cochera Secundario e=10cm | 2027-05-17 → 2026-08-27 (-263d) | 2027-05-27 → 2026-09-07 (-262d) |  |  | 513d → 514d |  | baseline start none → 2026-08-27; baseline finish none → 2026-09-07 |
| 132 | **Carpeta de Nivelación** | 2027-03-10 → 2027-01-22 (-47d) | 2028-06-05 → 2027-09-17 (-262d) | 312d → 165d |  | 0d → 256d |  | baseline start none → 2027-02-01; baseline finish none → 2027-09-17 |
| 133 | Carpeta de Nivelación Interior Casa e=10cm (PSS) | 2028-03-10 → 2027-06-25 (-259d) | 2028-03-28 → 2027-07-13 (-259d) |  |  | 242d → 243d |  | baseline start none → 2027-06-25; baseline finish none → 2027-07-13 |
| 134 | Carpeta de Nivelación Exterior Cochera e=10cm (PSS) | 2028-03-14 → 2027-06-29 (-259d) | 2028-03-28 → 2027-07-13 (-259d) |  |  | 292d → 293d |  | baseline start none → 2027-06-29; baseline finish none → 2027-07-13 |
| 135 | Carpeta de Nivelación Exterior Vereda Perimetral + Borde Fogonero e=10cm (PSS) | 2028-03-29 → 2027-07-14 (-259d) | 2028-04-11 → 2027-07-27 (-259d) |  |  | 292d → 293d |  | baseline start none → 2027-07-14; baseline finish none → 2027-07-27 |
| 136 | Carpeta de Nivelación Exterior Solarium e=10cm (PSS) | 2028-03-29 → 2027-07-14 (-259d) | 2028-04-11 → 2027-07-27 (-259d) |  |  | 292d → 293d |  | baseline start none → 2027-07-14; baseline finish none → 2027-07-27 |
| 137 | Carpeta de Nivelación Interior Casa e=10cm (PB) | 2028-03-21 → 2027-07-06 (-259d) | 2028-04-06 → 2027-07-22 (-259d) |  |  | 285d → 286d |  | baseline start none → 2027-07-06; baseline finish none → 2027-07-22 |
| 138 | Carpeta de Nivelación Exterior Ingreso Peatonal e=10cm (PB) | 2028-05-22 → 2027-09-06 (-259d) | 2028-06-05 → 2027-09-17 (-262d) |  |  | 255d → 256d |  | baseline start none → 2027-09-06; baseline finish none → 2027-09-17 |
| 139 | Carpeta de Nivelación Exterior Ingreso Cochera Secundario e=10cm (PB) | 2028-04-07 → 2027-07-23 (-259d) | 2028-04-20 → 2027-08-05 (-259d) |  |  | 285d → 286d |  | baseline start none → 2027-07-23; baseline finish none → 2027-08-05 |
| 140 | Carpeta de Nievelación Interior Casa e=4cm (PA) | 2028-03-31 → 2027-07-16 (-259d) | 2028-04-17 → 2027-08-02 (-259d) |  |  | 280d → 281d |  | baseline start none → 2027-07-16; baseline finish none → 2027-08-02 |
| 141 | Carpeta de Nievelación Alero e=4cm (PA) | 2028-04-18 → 2027-08-03 (-259d) | 2028-04-24 → 2027-08-09 (-259d) |  |  | 283d → 284d |  | baseline start none → 2027-08-03; baseline finish none → 2027-08-09 |
| 142 | Carpeta de Nievelación Estar Exterior e=4cm (PA) | 2028-04-18 → 2027-08-03 (-259d) | 2028-04-27 → 2027-08-12 (-259d) |  |  | 280d → 281d |  | baseline start none → 2027-08-03; baseline finish none → 2027-08-12 |
| 143 | Carpeta de Nivelación de Cubierta e= 4 cm | 2027-03-10 → 2027-01-22 (-47d) | 2027-03-18 → 2027-02-01 (-45d) |  |  | 0d → 407d |  | baseline start none → 2027-02-01; baseline finish none → 2027-02-09 |

| ID | Task | Start | Finish | Duration | Total float | Other |
| --- | --- | --- | --- | --- | --- | --- |
| 144 | Carpeta de Nivelación de Cubierta e= 4 cm PA | 2028-03-24 → 2027-07-09 (-259d) | 2028-04-06 → 2027-07-22 (-259d) |  | 245d → 246d | baseline start none → 2027-07-09; baseline finish none → 2027-07-22 |
| 145 | **Cubierta** | 2027-02-24 → 2027-01-08 (-47d) | 2028-04-17 → 2027-08-02 (-259d) | 289d → 142d | 0d → 289d | baseline start none → 2027-01-18; baseline finish none → 2027-08-02 |
| 146 | Cubierta común sobre Losa - Hormigon de Pendiente (carga) - 10 cm | 2027-03-01 → 2027-01-13 (-47d) | 2027-03-09 → 2027-01-21 (-47d) |  | 0d → 407d | baseline start none → 2027-01-21; baseline finish none → 2027-01-29 |
| 147 | Cubierta común sobre Losa - Hormigon de Pendiente (carga) - 10 cm PA | 2028-03-10 → 2027-06-25 (-259d) | 2028-03-23 → 2027-07-08 (-259d) |  | 245d → 246d | baseline start none → 2027-06-25; baseline finish none → 2027-07-08 |
| 148 | Impermeabilización en cubierta* (con parapeto-h:20cm) | 2027-03-19 → 2027-02-02 (-45d) | 2027-03-30 → 2027-02-11 (-47d) |  | 553d → 407d | baseline start none → 2027-02-11; baseline finish none → 2027-02-19 |
| 149 | Impermeabilización en cubierta* (con parapeto-h:20cm) PA | 2028-04-07 → 2027-07-23 (-259d) | 2028-04-17 → 2027-08-02 (-259d) |  | 288d → 289d | baseline start none → 2027-07-23; baseline finish none → 2027-08-02 |
| 150 | Parapeto SS | 2027-02-24 → 2027-01-08 (-47d) | 2027-02-26 → 2027-01-12 (-45d) |  | 0d → 407d | baseline start none → 2027-01-18; baseline finish none → 2027-01-20 |
| 151 | Parapeto PA + tanque | 2028-03-01 → 2027-06-16 (-259d) | 2028-03-09 → 2027-06-24 (-259d) |  | 245d → 247d | baseline start none → 2027-06-16; baseline finish none → 2027-06-24 |
| 152 | **Azotado Hidrófugo + Revoque Grueso exterior** | 2026-12-01 → 2026-10-06 (-56d) | 2027-12-02 → 2027-03-17 (-260d) | 252d → 111d |  | baseline start none → 2026-10-06; baseline finish none → 2027-03-17 |
| 153 | Revoque c/ azotado hidrof. cementicio en mamp. | 2026-12-01 → 2026-10-15 (-47d) | 2026-12-22 → 2026-11-04 (-48d) |  | 0d → 395d | baseline start none → 2026-10-23; baseline finish none → 2026-11-12 |
| 154 | Revoque c/ azotado hidrof. cementicio en mamp. | 2027-06-25 → 2026-10-06 (-262d) | 2027-07-23 → 2026-11-03 (-262d) |  |  | baseline start none → 2026-10-06; baseline finish none → 2026-11-03 |
| 155 | Revoque c/ azotado hidrof. cementicio en mamp. | 2027-11-11 → 2027-02-25 (-259d) | 2027-12-02 → 2027-03-17 (-260d) |  |  | baseline start none → 2027-02-25; baseline finish none → 2027-03-17 |
| 156 | **Azotado Cementicio Interior** | 2026-06-22 → 2026-06-24 (+2d) | 2028-04-27 → 2027-08-12 (-259d) | 466d → 285d | 127d → 92d | baseline start none → 2026-06-22; baseline finish none → 2027-08-12 |
| 157 | Azotado Cementicio Interior | 2026-12-23 → 2026-11-05 (-48d) | 2027-01-11 → 2026-11-23 (-49d) |  | 0d → 395d | baseline start none → 2026-11-13; baseline finish none → 2026-12-01 |
| 158 | Azotado Cementicio Interior | 2027-07-26 → 2026-11-04 (-264d) | 2027-08-13 → 2026-11-25 (-261d) |  |  | baseline start none → 2026-11-04; baseline finish none → 2026-11-25 |
| 159 | Azotado Cementicio Cieloraso | 2026-06-22 → 2026-06-24 (+2d) | 2026-07-13 → 2026-07-15 (+2d) |  | 731d → 551d | baseline start none → 2026-06-22; baseline finish none → 2026-07-13 |
| 160 | Azotado Cementicio Interior | 2027-12-03 → 2027-03-18 (-260d) | 2027-12-24 → 2027-04-09 (-259d) |  |  | baseline start none → 2027-03-18; baseline finish none → 2027-04-09 |
| 161 | Azotado Cementicio Cieloraso | 2028-04-07 → 2027-07-23 (-259d) | 2028-04-27 → 2027-08-12 (-259d) |  | 246d → 247d | baseline start none → 2027-07-23; baseline finish none → 2027-08-12 |
| 162 | **Revoque Fino Exterior** | 2028-04-28 → 2027-08-13 (-259d) | 2028-05-29 → 2027-09-10 (-262d) |  | 246d → 247d | baseline start none → 2027-08-13; baseline finish none → 2027-09-10 |
| 163 | Revoque Fino Exterior | 2028-05-24 → 2027-09-08 (-259d) | 2028-05-29 → 2027-09-10 (-262d) |  | 260d → 261d | baseline start none → 2027-09-08; baseline finish none → 2027-09-10 |
| 164 | Revoque Fino Exterior | 2028-05-15 → 2027-08-30 (-259d) | 2028-05-23 → 2027-09-07 (-259d) |  | 246d → 247d | baseline start none → 2027-08-30; baseline finish none → 2027-09-07 |
| 165 | Revoque Fino Exterior | 2028-04-28 → 2027-08-13 (-259d) | 2028-05-12 → 2027-08-27 (-259d) |  | 246d → 247d | baseline start none → 2027-08-13; baseline finish none → 2027-08-27 |
| 166 | **Engrosado + Enlucido de Yeso** | 2027-04-05 → 2027-02-16 (-48d) | 2028-04-26 → 2027-08-11 (-259d) | 270d → 123d | 281d → 282d | baseline start none → 2027-02-24; baseline finish none → 2027-08-11 |
| 167 | Engrosado + Enlucido de Yeso | 2027-04-05 → 2027-02-16 (-48d) | 2027-04-16 → 2027-03-01 (-46d) |  | 541d → 395d | baseline start none → 2027-02-24; baseline finish none → 2027-03-09 |
| 168 | Engrosado + Enlucido de Yeso | 2027-11-11 → 2027-02-25 (-259d) | 2027-11-25 → 2027-03-10 (-260d) |  | 387d → 388d | baseline start none → 2027-02-25; baseline finish none → 2027-03-10 |
| 169 | Engrosado + Enlucido de Yeso | 2028-04-06 → 2027-07-22 (-259d) | 2028-04-26 → 2027-08-11 (-259d) |  | 241d → 242d | baseline start none → 2027-07-22; baseline finish none → 2027-08-11 |
| 170 | **Cielorrasos** | 2026-06-22 → 2026-06-24 (+2d) | 2028-07-26 → 2027-11-09 (-260d) | 527d → 346d | 219d → 220d | baseline start none → 2026-06-22; baseline finish none → 2027-11-09 |
| 171 | Cielorraso de Placa de Yeso Suspendido (estructura + emplacado) | 2028-05-05 → 2027-08-20 (-259d) | 2028-05-11 → 2027-08-26 (-259d) |  | 241d → 242d | baseline start none → 2027-08-20; baseline finish none → 2027-08-26 |
| 172 | Cielorraso de Madera | 2028-04-28 → 2027-08-13 (-259d) | 2028-06-05 → 2027-09-17 (-262d) |  | 219d → 220d | baseline start none → 2027-08-13; baseline finish none → 2027-09-17 |
| 173 | Cortinero (estructura + emplacado) | 2028-05-12 → 2027-08-27 (-259d) | 2028-05-26 → 2027-09-09 (-260d) |  | 241d → 242d | baseline start none → 2027-08-27; baseline finish none → 2027-09-09 |
| 174 | Cielorraso de Placa de Yeso Suspendido (estructura + emplacado) | 2028-06-01 → 2027-09-15 (-260d) | 2028-06-09 → 2027-09-23 (-260d) |  | 251d → 252d | baseline start none → 2027-09-15; baseline finish none → 2027-09-23 |
| 175 | Cielorraso de Madera | 2028-06-06 → 2027-09-20 (-260d) | 2028-06-30 → 2027-10-14 (-260d) |  | 219d → 220d | baseline start none → 2027-09-20; baseline finish none → 2027-10-14 |
| 176 | Cielorraso de Yeso Aplicado | 2026-06-22 → 2026-06-24 (+2d) | 2026-07-07 → 2026-07-10 (+3d) |  | 722d → 542d | baseline start none → 2026-06-22; baseline finish none → 2026-07-07 |
| 177 | Cielorraso de Lona Camuflada | 2028-06-13 → 2027-09-27 (-260d) | 2028-06-19 → 2027-10-01 (-262d) |  | 245d → 246d | baseline start none → 2027-09-27; baseline finish none → 2027-10-01 |
| 178 | Cortinero (estructura + emplacado) | 2028-05-29 → 2027-09-10 (-262d) | 2028-06-09 → 2027-09-23 (-260d) |  | 241d → 242d | baseline start none → 2027-09-10; baseline finish none → 2027-09-23 |
| 179 | Cielorraso de Placa de Yeso Suspendido (estructura + emplacado) | 2028-06-12 → 2027-09-24 (-262d) | 2028-06-26 → 2027-10-07 (-263d) |  | 241d → 242d | baseline start none → 2027-09-24; baseline finish none → 2027-10-07 |
| 180 | Cielorraso de Madera | 2028-07-03 → 2027-10-15 (-262d) | 2028-07-26 → 2027-11-09 (-260d) |  | 219d → 220d | baseline start none → 2027-10-15; baseline finish none → 2027-11-09 |
| 181 | Cielorraso de Yeso Aplicado | 2026-07-08 → 2026-07-13 (+5d) | 2026-07-24 → 2026-07-28 (+4d) |  | 722d → 542d | baseline start none → 2026-07-08; baseline finish none → 2026-07-24 |
| 182 | Cortinero (estructura + emplacado) | 2028-06-12 → 2027-09-24 (-262d) | 2028-06-26 → 2027-10-07 (-263d) |  | 241d → 242d | baseline start none → 2027-09-24; baseline finish none → 2027-10-07 |
| 183 | **Escaleras** | 2026-09-18 → 2026-08-25 (-24d) | 2027-10-05 → 2027-01-19 (-259d) | 262d → 101d | 422d → 423d | baseline start none → 2026-08-25; baseline finish none → 2027-01-19 |
| 184 | Escalera de Hormigon in situ - PSS a PA | 2027-09-15 → 2026-12-29 (-260d) | 2027-10-05 → 2027-01-19 (-259d) |  | 422d → 423d | baseline start none → 2026-12-29; baseline finish none → 2027-01-19 |
| 185 | Escalera de Hormigon in situ - PSS a PB | 2027-02-03 → 2026-12-17 (-48d) | 2027-02-24 → 2027-01-08 (-47d) |  | 576d → 430d | baseline start none → 2026-12-28; baseline finish none → 2027-01-18 |
| 186 | Escalera Ext. de Hormigon in situ - (Costado Quincho) - PSS a Patio PB | 2026-09-18 → 2026-10-16 (+28d) | 2026-10-01 → 2026-10-29 (+28d) |  | 674d → 477d | baseline start none → 2026-10-07; baseline finish none → 2026-10-21 |
| 187 | Escalera Ext. de Hormigon in situ - (Galería a patio solarium)* | 2027-05-13 → 2026-08-25 (-261d) | 2027-05-27 → 2026-09-07 (-262d) |  | 513d → 514d | baseline start none → 2026-08-25; baseline finish none → 2026-09-07 |
| 188 | **Asador** | 2026-10-26 → 2026-09-09 (-47d) | 2026-11-06 → 2026-09-22 (-45d) |  | 649d → 503d | baseline start none → 2026-09-17; baseline finish none → 2026-09-30 |
| 189 | Asador + horno (3,00 m de largo) | 2026-10-26 → 2026-09-09 (-47d) | 2026-11-06 → 2026-09-22 (-45d) |  | 649d → 503d | baseline start none → 2026-09-17; baseline finish none → 2026-09-30 |
| 190 | **Veredas Perimetrales** | 2027-05-17 → 2026-08-27 (-263d) | 2027-05-27 → 2026-09-07 (-262d) |  | 513d → 514d | baseline start none → 2026-08-27; baseline finish none → 2026-09-07 |
| 191 | Veredas Perimetrales con Cordon - Ancho 40cm* | 2027-05-17 → 2026-08-27 (-263d) | 2027-05-27 → 2026-09-07 (-262d) |  | 513d → 514d | baseline start none → 2026-08-27; baseline finish none → 2026-09-07 |
| 192 | **HERRERIA** | 2026-06-22 → 2026-06-24 (+2d) | 2027-10-15 → 2027-01-28 (-260d) | 331d → 150d | 415d → 416d | baseline start none → 2026-06-22; baseline finish none → 2027-01-28 |
| 193 | **Columnas Metálicas** | 2026-08-24 → 2026-07-28 (-27d) | 2027-10-15 → 2027-01-28 (-260d) | 288d → 127d | 415d → 416d | baseline start none → 2026-07-28; baseline finish none → 2027-01-28 |
| 194 | CM- 2UPN 100 (1 columna) 2,80 mts de largo | 2026-08-24 → 2026-09-11 (+18d) | 2026-08-26 → 2026-09-15 (+20d) |  | 700d → 508d | baseline start none → 2026-09-03; baseline finish none → 2026-09-07 |
| 195 | CM1- 2UPN 120 (2 columnas) 2,80 mts de largo | 2026-08-24 → 2026-09-11 (+18d) | 2026-08-26 → 2026-09-15 (+20d) |  | 700d → 508d | baseline start none → 2026-09-03; baseline finish none → 2026-09-07 |
| 196 | CM- 2UPN 100 (18 columna) 2,80 mts de largo | 2027-04-16 → 2026-07-28 (-262d) | 2027-04-29 → 2026-08-10 (-262d) |  | 517d → 518d | baseline start none → 2026-07-28; baseline finish none → 2026-08-10 |
| 197 | CM1- 2UPN 120 (1 columna) 2,80 mts de largo | 2027-04-16 → 2026-07-28 (-262d) | 2027-04-29 → 2026-08-10 (-262d) |  | 532d → 533d | baseline start none → 2026-07-28; baseline finish none → 2026-08-10 |
| 198 | CM2- 2UPN 140 (2 columnas) 2,80 mts de largo | 2027-04-16 → 2026-07-28 (-262d) | 2027-04-29 → 2026-08-10 (-262d) |  | 532d → 533d | baseline start none → 2026-07-28; baseline finish none → 2026-08-10 |
| 199 | CM3- 2UPN 160 (3 columnas) 2,80 mts de largo | 2027-04-16 → 2026-07-28 (-262d) | 2027-04-29 → 2026-08-10 (-262d) |  | 532d → 533d | baseline start none → 2026-07-28; baseline finish none → 2026-08-10 |
| 200 | CM- 2UPN 100 (6 columna) 2,80 mts de largo | 2027-10-06 → 2027-01-20 (-259d) | 2027-10-15 → 2027-01-28 (-260d) |  | 415d → 416d | baseline start none → 2027-01-20; baseline finish none → 2027-01-28 |
| 201 | **Vigas Metálicas** | 2027-01-26 → 2026-12-09 (-48d) | 2027-09-09 → 2026-12-22 (-261d) | 156.5d → 9.5d | 440.5d → 441.5d | baseline start none → 2026-12-15; baseline finish none → 2026-12-23 |
| 202 | IPN 240 - Viga de Borde en Piso D1 Principal | 2027-01-26 → 2026-12-09 (-48d) | 2027-02-01 → 2026-12-15 (-48d) |  | 592d → 446d | baseline start none → 2026-12-17; baseline finish none → 2026-12-23 |
| 203 | IPN 240 - Viga de Borde en Losa Dº Principal | 2027-09-02 → 2026-12-15 (-261d) | 2027-09-09 → 2026-12-22 (-261d) |  | 440.5d → 441.5d | baseline start none → 2026-12-15; baseline finish none → 2026-12-22 |
| 204 | IPN 160 - Viga entre ventanas de dos alturas (Living Estar) | 2027-09-02 → 2026-12-15 (-261d) | 2027-09-09 → 2026-12-22 (-261d) |  | 440.5d → 441.5d | baseline start none → 2026-12-15; baseline finish none → 2026-12-22 |
| 205 | IPN 140 - Viga de anclaje de escalera | 2027-09-02 → 2026-12-15 (-261d) | 2027-09-09 → 2026-12-22 (-261d) |  | 440.5d → 441.5d | baseline start none → 2026-12-15; baseline finish none → 2026-12-22 |
| 206 | **Pergola Metálica** | 2027-04-30 → 2026-08-11 (-262d) | 2027-05-20 → 2026-09-01 (-261d) |  | 517d → 518d | baseline start none → 2026-08-11; baseline finish none → 2026-09-01 |
| 207 | Pergola Metálica de Cochera Secundaria - Perfiles de borde de IPN160 (21 mts de borde) - Correas según el peso del material a colocar. | 2027-04-30 → 2026-08-11 (-262d) | 2027-05-20 → 2026-09-01 (-261d) |  | 517d → 518d | baseline start none → 2026-08-11; baseline finish none → 2026-09-01 |
| 208 | Pergola Metálica de Estar Exterior - Perfiles de borde de IPN240 (30 mts de borde) - 33 mts de IPN160 como correas de la pérgola según detalle. | 2027-04-30 → 2026-08-11 (-262d) | 2027-05-13 → 2026-08-25 (-261d) |  | 522d → 523d | baseline start none → 2026-08-11; baseline finish none → 2026-08-25 |
| 209 | **Barandas Metálicas** | 2026-06-22 → 2026-06-24 (+2d) | 2026-07-03 → 2026-07-07 (+4d) |  | 736d → 556d | baseline start none → 2026-06-22; baseline finish none → 2026-07-03 |
| 210 | Barandas metálicas y de vidrio (22 mts según 3D) sobre balcon PA* | 2026-06-22 → 2026-06-24 (+2d) | 2026-07-03 → 2026-07-07 (+4d) |  | 736d → 556d | baseline start none → 2026-06-22; baseline finish none → 2026-07-03 |
| 211 | **Conductos Metálicos** | 2027-02-18 → 2027-01-04 (-45d) | 2027-02-22 → 2027-01-06 (-47d) |  | 576d → 430d | baseline start none → 2027-01-12; baseline finish none → 2027-01-14 |
| 212 | Asador - conducto de ventilacion 3,00m - 30 diam. | 2027-02-18 → 2027-01-04 (-45d) | 2027-02-22 → 2027-01-06 (-47d) |  | 576d → 430d | baseline start none → 2027-01-12; baseline finish none → 2027-01-14 |
| 213 | **INSTALACIONES SANITARIAS** | 2026-08-25 → 2026-07-28 (-28d) | 2028-06-28 → 2027-10-11 (-261d) | 463d → 303d | 239d → 240d | baseline start none → 2026-07-28; baseline finish none → 2027-10-11 |

| ID | Task | Start | Finish | Duration | Total float | Other |
| --- | --- | --- | --- | --- | --- | --- |
| 214 | **Instalaciones Pluviales** | 2026-08-25 → 2026-07-28 (-28d) | 2028-05-04 → 2027-08-19 (-259d) | 426d → 266d | 276d → 277d | baseline start none → 2026-07-28; baseline finish none → 2027-08-19 |
| 215 | Desagues pluviales (sin zinguería) con colocacion de cámaras de inspección SS contrapiso | 2026-08-25 → 2026-09-03 (+9d) | 2026-09-02 → 2026-09-11 (+9d) |  | 695d → 510d | baseline start none → 2026-09-03; baseline finish none → 2026-09-11 |
| 216 | Desagues pluviales (sin zinguería) con colocacion de cámaras de inspección SS pared | 2027-03-26 → 2027-02-08 (-46d) | 2027-04-05 → 2027-02-16 (-48d) |  | 549d → 403d | baseline start none → 2027-02-17; baseline finish none → 2027-02-25 |
| 217 | Desagues pluviales (sin zinguería) con colocacion de cámaras de inspección PB contrapiso | 2027-04-16 → 2026-07-28 (-262d) | 2027-04-26 → 2026-08-05 (-264d) |  | 535d → 536d | baseline start none → 2026-07-28; baseline finish none → 2026-08-05 |
| 218 | Desagues pluviales (sin zinguería) con colocacion de cámaras de inspección PB pared | 2027-11-04 → 2027-02-18 (-259d) | 2027-11-12 → 2027-02-26 (-259d) |  | 395d → 396d | baseline start none → 2027-02-18; baseline finish none → 2027-02-26 |
| 219 | Desagues pluviales (sin zinguería) con colocacion de cámaras de inspección PA contrapiso | 2028-03-30 → 2027-07-15 (-259d) | 2028-04-07 → 2027-07-23 (-259d) |  |  | baseline start none → 2027-07-15; baseline finish none → 2027-07-23 |
| 220 | Desagues pluviales (sin zinguería) con colocacion de cámaras de inspección PA pared | 2028-04-10 → 2027-07-26 (-259d) | 2028-04-18 → 2027-08-03 (-259d) |  | 242d → 243d | baseline start none → 2027-07-26; baseline finish none → 2027-08-03 |
| 221 | Conexión exterior de pluviales | 2028-04-19 → 2027-08-04 (-259d) | 2028-05-04 → 2027-08-19 (-259d) |  | 242d → 243d | baseline start none → 2027-08-04; baseline finish none → 2027-08-19 |
| 222 | **Instalaciones Cloacales** | 2026-08-25 → 2026-07-28 (-28d) | 2028-06-21 → 2027-10-04 (-261d) | 458d → 298d | 244d → 245d | baseline start none → 2026-07-28; baseline finish none → 2027-10-04 |
| 223 | Instalación de cloacas para 2 baños completos en PSS, 1 cocina, 1 pileta de asador; 1 toilete y 1 baño completo con bañera en suite, 1 cocina con isla, pileta de cocina y 1 pileta en lavadero, lavarropas, lavavajilla, heladera y dispenser en PB; 2 baños c | 2026-08-25 → 2026-09-03 (+9d) | 2026-09-14 → 2026-09-23 (+9d) |  | 687d → 502d | baseline start none → 2026-09-03; baseline finish none → 2026-09-23 |
| 224 | Cloaca en suelo PB | 2027-04-16 → 2026-07-28 (-262d) | 2027-05-03 → 2026-08-12 (-264d) |  | 530d → 531d | baseline start none → 2026-07-28; baseline finish none → 2026-08-12 |
| 225 | Cloaca en suelo PA | 2028-03-30 → 2027-07-15 (-259d) | 2028-04-14 → 2027-07-30 (-259d) |  | 289d → 290d | baseline start none → 2027-07-15; baseline finish none → 2027-07-30 |
| 226 | Conexiones exteriores | 2028-04-20 → 2027-08-05 (-259d) | 2028-05-10 → 2027-08-25 (-259d) |  | 243d → 244d | baseline start none → 2027-08-05; baseline finish none → 2027-08-25 |
| 227 | Desagues de 3 AA Central en PSS, 6 AA Central en PB y 6 AA Central en PA | 2028-04-12 → 2027-07-28 (-259d) | 2028-04-14 → 2027-07-30 (-259d) |  | 289d → 290d | baseline start none → 2027-07-28; baseline finish none → 2027-07-30 |
| 228 | Colocación de cámaras de inspección (según detalle técnico) | 2028-05-11 → 2027-08-26 (-259d) | 2028-05-15 → 2027-08-30 (-259d) |  | 244d → 245d | baseline start none → 2027-08-26; baseline finish none → 2027-08-30 |
| 229 | Instalación de 2 camaras sépticas (según plano técnico) | 2028-05-16 → 2027-08-31 (-259d) | 2028-05-22 → 2027-09-06 (-259d) |  | 244d → 245d | baseline start none → 2027-08-31; baseline finish none → 2027-09-06 |
| 230 | Armado de 2 Sangrías desde camara septica (coloc. de caños p/ filtrado) | 2028-05-23 → 2027-09-07 (-259d) | 2028-06-21 → 2027-10-04 (-261d) |  | 244d → 245d | baseline start none → 2027-09-07; baseline finish none → 2027-10-04 |
| 231 | **Instalaciones de Agua** | 2027-01-12 → 2026-11-24 (-49d) | 2028-06-13 → 2027-09-27 (-260d) | 358d → 211d | 249d → 250d | baseline start none → 2026-11-26; baseline finish none → 2027-09-27 |
| 232 | Instalación de agua para 2 baños completos en PSS, 1 cocina, 1 pileta de asador; 1 toilete y 1 baño completo con bañera en suite, 1 cocina con isla, pileta de cocina y 1 pileta en lavadero, lavarropas, lavavajilla, heladera y dispenser en PB; 2 baños comp | 2027-01-12 → 2026-11-24 (-49d) | 2027-01-25 → 2026-12-07 (-49d) |  | 590d → 444d | baseline start none → 2026-12-02; baseline finish none → 2026-12-16 |
| 233 | Agua en PB | 2027-08-16 → 2026-11-26 (-263d) | 2027-08-27 → 2026-12-09 (-261d) |  |  | baseline start none → 2026-11-26; baseline finish none → 2026-12-09 |
| 234 | Agua PA | 2027-12-27 → 2027-04-12 (-259d) | 2028-01-07 → 2027-04-23 (-259d) |  | 352d → 353d | baseline start none → 2027-04-12; baseline finish none → 2027-04-23 |
| 235 | Agua Cubierta previo a pendiente de hormigon | 2028-03-01 → 2027-06-16 (-259d) | 2028-03-07 → 2027-06-22 (-259d) |  | 316d → 317d | baseline start none → 2027-06-16; baseline finish none → 2027-06-22 |
| 236 | Alimentación de agua para válvulas de inodoros desde tanques | 2028-01-10 → 2027-04-26 (-259d) | 2028-01-14 → 2027-04-30 (-259d) |  | 352d → 353d | baseline start none → 2027-04-26; baseline finish none → 2027-04-30 |
| 237 | Alimentación de agua a tanques y 6 canillas en patio | 2027-12-27 → 2027-04-12 (-259d) | 2028-01-07 → 2027-04-23 (-259d) |  | 357d → 358d | baseline start none → 2027-04-12; baseline finish none → 2027-04-23 |
| 238 | Instalación de bomba hidroneumática bajo tanque | 2028-06-13 → 2027-09-27 (-260d) | 2028-06-13 → 2027-09-27 (-260d) |  | 249d → 250d | baseline start none → 2027-09-27; baseline finish none → 2027-09-27 |
| 239 | **Instalaciones de Gas** | 2027-01-26 → 2026-12-09 (-48d) | 2028-06-28 → 2027-10-11 (-261d) | 358d → 211d | 239d → 200d | baseline start none → 2026-12-10; baseline finish none → 2027-10-11 |
| 240 | Instalación de gas para anafe PSS, anafe y horno, termotanque y caldera en Pb* | 2027-01-26 → 2026-12-09 (-48d) | 2027-02-03 → 2026-12-17 (-48d) |  | 590d → 444d | baseline start none → 2026-12-17; baseline finish none → 2026-12-28 |
| 241 | Gas PB | 2027-08-30 → 2026-12-10 (-263d) | 2027-09-07 → 2026-12-18 (-263d) |  | 436d → 437d | baseline start none → 2026-12-10; baseline finish none → 2026-12-18 |
| 242 | Gas exterior y casilla | 2027-09-08 → 2026-12-21 (-261d) | 2027-09-10 → 2026-12-23 (-261d) |  | 436d → 437d | baseline start none → 2026-12-21; baseline finish none → 2026-12-23 |
| 243 | Ventilaciones para gas. Conductos y rejillas. | 2027-09-03 → 2026-12-16 (-261d) | 2027-09-07 → 2026-12-18 (-263d) |  | 442d → 443d | baseline start none → 2026-12-16; baseline finish none → 2026-12-18 |
| 244 | Factibilidad de gas y plano aprobación de cañerías (se pagan en el momento) | 2027-09-13 → 2026-12-24 (-263d) | 2027-09-15 → 2026-12-29 (-260d) |  | 436d → 437d | baseline start none → 2026-12-24; baseline finish none → 2026-12-29 |
| 245 | Segunda inspección parcial de cañerías y ventilaciones. | 2028-06-16 → 2027-09-30 (-260d) | 2028-06-21 → 2027-10-04 (-261d) |  | 239d → 240d | baseline start none → 2027-09-30; baseline finish none → 2027-10-04 |
| 246 | Solicitud de servicio domiciliario (no incluye aranceles Ecogas). | 2028-06-22 → 2027-10-05 (-261d) | 2028-06-28 → 2027-10-11 (-261d) |  | 239d → 240d | baseline start none → 2027-10-05; baseline finish none → 2027-10-11 |
| 247 | Final de gas con artefactos colocados. | 2028-06-13 → 2027-09-27 (-260d) | 2028-06-15 → 2027-09-29 (-260d) |  |  | baseline start none → 2027-09-27; baseline finish none → 2027-09-29 |
| 248 | **Instalaciones de Aire Acondicionado** | 2027-01-12 → 2026-11-24 (-49d) | 2028-06-13 → 2027-09-27 (-260d) | 358d → 211d | 249d → 250d | baseline start none → 2026-12-02; baseline finish none → 2027-09-27 |
| 249 | 3 equipos de AA Split en PSS (Kit de preinstalacion) | 2027-01-12 → 2026-11-24 (-49d) | 2027-01-12 → 2026-11-24 (-49d) |  | 606d → 460d | baseline start none → 2026-12-02; baseline finish none → 2026-12-02 |
| 250 | 3 equipos de AA Split en PSS | 2028-06-13 → 2027-09-27 (-260d) | 2028-06-13 → 2027-09-27 (-260d) |  | 249d → 250d | baseline start none → 2027-09-27; baseline finish none → 2027-09-27 |
| 251 | Sistema por conducto (1 equipo) en PSS | 2028-04-27 → 2027-08-12 (-259d) | 2028-05-04 → 2027-08-19 (-259d) |  | 241d → 242d | baseline start none → 2027-08-12; baseline finish none → 2027-08-19 |
| 252 | Sistema por conducto (6 equipos) en PB | 2028-04-27 → 2027-08-12 (-259d) | 2028-05-04 → 2027-08-19 (-259d) |  | 276d → 277d | baseline start none → 2027-08-12; baseline finish none → 2027-08-19 |
| 253 | Sistema por conducto (6 equipos) en PA | 2028-04-27 → 2027-08-12 (-259d) | 2028-05-04 → 2027-08-19 (-259d) |  | 276d → 277d | baseline start none → 2027-08-12; baseline finish none → 2027-08-19 |
| 254 | **Instalación de Calefacción*** | 2028-03-01 → 2027-06-16 (-259d) | 2028-03-30 → 2027-07-15 (-259d) |  | 242d → 243d | baseline start none → 2027-06-16; baseline finish none → 2027-07-15 |
| 255 | Losa Radiante - 2 Colectores con 1 zona - PSS | 2028-03-01 → 2027-06-16 (-259d) | 2028-03-02 → 2027-06-17 (-259d) |  | 242d → 243d | baseline start none → 2027-06-16; baseline finish none → 2027-06-17 |
| 256 | Losa Radiante - 4 Colectores con 2 zona - PB | 2028-03-10 → 2027-06-25 (-259d) | 2028-03-13 → 2027-06-28 (-259d) |  | 280d → 281d | baseline start none → 2027-06-25; baseline finish none → 2027-06-28 |
| 257 | Losa Radiante - 2 Colectores con 1 zona - PA | 2028-03-21 → 2027-07-06 (-259d) | 2028-03-22 → 2027-07-07 (-259d) |  | 280d → 281d | baseline start none → 2027-07-06; baseline finish none → 2027-07-07 |
| 258 | Piso Radiante - PSS | 2028-03-03 → 2027-06-18 (-259d) | 2028-03-09 → 2027-06-24 (-259d) |  | 242d → 243d | baseline start none → 2027-06-18; baseline finish none → 2027-06-24 |
| 259 | Piso Radiante - PB | 2028-03-14 → 2027-06-29 (-259d) | 2028-03-20 → 2027-07-05 (-259d) |  | 280d → 281d | baseline start none → 2027-06-29; baseline finish none → 2027-07-05 |
| 260 | Piso Radiante - PA | 2028-03-23 → 2027-07-08 (-259d) | 2028-03-30 → 2027-07-15 (-259d) |  | 280d → 281d | baseline start none → 2027-07-08; baseline finish none → 2027-07-15 |
| 261 | **INSTALACIONES ELECTRICAS Y SEÑALES DEBILES** | 2026-06-22 → 2026-06-24 (+2d) | 2028-06-22 → 2027-10-06 (-260d) | 503d? → 323d? |  | baseline start none → 2026-06-22; baseline finish none → 2027-10-06 |
| 262 | **Canalización, cableado y armado (electricidad)** | 2026-06-22 → 2026-06-24 (+2d) | 2028-06-19 → 2027-10-04 (-259d) | 501d? → 321d? |  | baseline start none → 2026-06-22; baseline finish none → 2027-10-04 |
| 263 | Cableado SS | 2028-04-28 → 2027-08-13 (-259d) | 2028-05-11 → 2027-08-26 (-259d) |  |  | baseline start none → 2027-08-13; baseline finish none → 2027-08-26 |
| 264 | Bocas p/iluminacion techo | 2027-02-22 → 2027-01-06 (-47d) | 2027-02-23 → 2027-01-07 (-47d) |  | 577d → 431d | baseline start none → 2027-01-14; baseline finish none → 2027-01-15 |
| 265 | Bocas p/iluminacion pared | 2027-01-12 → 2026-11-24 (-49d) | 2027-01-25 → 2026-12-07 (-49d) |  | 597d → 451d | baseline start none → 2026-12-02; baseline finish none → 2026-12-16 |
| 266 | Tablero (por T.M y disyuntores) | 2028-05-12 → 2027-08-27 (-259d) | 2028-05-16 → 2027-08-31 (-259d) |  | 268d → 269d | baseline start none → 2027-08-27; baseline finish none → 2027-08-31 |
| 267 | Borneta puesta a tierra por tablero | 2026-06-22 → 2026-06-24 (+2d) | 2026-06-22 → 2026-06-24 (+2d) |  | 745d → 565d | baseline start none → 2026-06-22; baseline finish none → 2026-06-22 |
| 268 | Instalación de Jabalina | 2026-06-22 → 2026-06-24 (+2d) | 2026-06-22 → 2026-06-24 (+2d) |  | 745d → 565d | baseline start none → 2026-06-22; baseline finish none → 2026-06-22 |
| 269 | Toma individul A.A | 2026-06-22 → 2026-06-24 (+2d) | 2026-06-22 → 2026-06-24 (+2d) |  | 745d → 565d | baseline start none → 2026-06-22; baseline finish none → 2026-06-22 |
| 270 | Termostatos | 2026-06-22 → 2026-06-24 (+2d) | 2026-06-22 → 2026-06-24 (+2d) |  | 745d → 565d | baseline start none → 2026-06-22; baseline finish none → 2026-06-22 |
| 271 | Tiras Led aleros/nichos/espejos/placares/baso alacena mesada, etc | 2026-06-22 → 2026-06-24 (+2d) | 2026-06-22 → 2026-06-24 (+2d) |  | 745d → 565d | baseline start none → 2026-06-22; baseline finish none → 2026-06-22 |
| 272 | Instalación artefactos comunes* | 2028-06-13 → 2027-09-27 (-260d) | 2028-06-15 → 2027-09-29 (-260d) |  | 246d → 247d | baseline start none → 2027-09-27; baseline finish none → 2027-09-29 |
| 273 | Bocas p/iluminacion techo | 2027-09-30 → 2027-01-14 (-259d) | 2027-10-04 → 2027-01-18 (-259d) |  | 423d → 424d | baseline start none → 2027-01-14; baseline finish none → 2027-01-18 |
| 274 | Bocas p/iluminacion pared | 2027-08-16 → 2026-11-26 (-263d) | 2027-09-01 → 2026-12-14 (-261d) |  | 446d → 447d | baseline start none → 2026-11-26; baseline finish none → 2026-12-14 |
| 275 | Cableado PB | 2028-05-12 → 2027-08-27 (-259d) | 2028-05-29 → 2027-09-13 (-259d) |  | 244d → 243d | baseline start none → 2027-08-27; baseline finish none → 2027-09-13 |
| 276 | Bocas p/iluminacion piso | 2026-06-22 → 2026-06-24 (+2d) | 2026-06-22 → 2026-06-24 (+2d) |  | 745d → 565d | baseline start none → 2026-06-22; baseline finish none → 2026-06-22 |
| 277 | Tablero (por T.M y disyuntores) | 2028-05-30 → 2027-09-14 (-259d) | 2028-06-01 → 2027-09-16 (-259d) |  |  | baseline start none → 2027-09-14; baseline finish none → 2027-09-16 |
| 278 | Instalación de Jabalina | 2026-06-22 → 2026-06-24 (+2d) | 2026-06-22 → 2026-06-24 (+2d) |  | 745d → 565d | baseline start none → 2026-06-22; baseline finish none → 2026-06-22 |
| 279 | Toma individul A.A | 2026-06-22 → 2026-06-24 (+2d) | 2026-06-22 → 2026-06-24 (+2d) |  | 745d → 565d | baseline start none → 2026-06-22; baseline finish none → 2026-06-22 |
| 280 | Termostatos | 2026-06-22 → 2026-06-24 (+2d) | 2026-06-22 → 2026-06-24 (+2d) |  | 745d → 565d | baseline start none → 2026-06-22; baseline finish none → 2026-06-22 |
| 281 | Tiras Led aleros/nichos/espejos/placares/baso alacena mesada, etc | 2026-06-22 → 2026-06-24 (+2d) | 2026-06-22 → 2026-06-24 (+2d) |  | 745d → 565d | baseline start none → 2026-06-22; baseline finish none → 2026-06-22 |
| 282 | Instalación artefactos comunes* | 2028-06-16 → 2027-09-30 (-260d) | 2028-06-16 → 2027-09-30 (-260d) |  | 246d → 247d | baseline start none → 2027-09-30; baseline finish none → 2027-09-30 |
| 283 | Instalación artefactos rieles grandes | 2026-06-22 → 2026-06-24 (+2d) | 2026-06-22 → 2026-06-24 (+2d) |  | 745d → 565d | baseline start none → 2026-06-22; baseline finish none → 2026-06-22 |

| ID | Task | Start | Finish | Duration | Total float | Other |
| --- | --- | --- | --- | --- | --- | --- |
| 284 | Conexión de acometida a Tablero | 2028-06-02 → 2027-09-17 (-259d) | 2028-06-06 → 2027-09-21 (-259d) |  |  | baseline start none → 2027-09-17; baseline finish none → 2027-09-21 |
| 285 | Bocas p/iluminacion techo | 2028-02-24 → 2027-06-10 (-259d) | 2028-02-28 → 2027-06-14 (-259d) |  | 322d → 323d | baseline start none → 2027-06-10; baseline finish none → 2027-06-14 |
| 286 | Bocas p/iluminacion pared | 2027-12-27 → 2027-04-12 (-259d) | 2028-01-11 → 2027-04-27 (-259d) |  | 355d → 356d | baseline start none → 2027-04-12; baseline finish none → 2027-04-27 |
| 287 | Cableado PA | 2028-05-30 → 2027-09-14 (-259d) | 2028-06-14 → 2027-09-29 (-259d) |  |  | baseline start none → 2027-09-14; baseline finish none → 2027-09-29 |
| 288 | Tablero (por T.M y disyuntores) | 2028-06-15 → 2027-09-30 (-259d) | 2028-06-19 → 2027-10-04 (-259d) |  |  | baseline start none → 2027-09-30; baseline finish none → 2027-10-04 |
| 289 | Toma individul A.A | 2026-06-22 → 2026-06-24 (+2d) | 2026-06-22 → 2026-06-24 (+2d) |  | 745d → 565d | baseline start none → 2026-06-22; baseline finish none → 2026-06-22 |
| 290 | Termostatos | 2026-06-22 → 2026-06-24 (+2d) | 2026-06-22 → 2026-06-24 (+2d) |  | 745d → 565d | baseline start none → 2026-06-22; baseline finish none → 2026-06-22 |
| 291 | Tiras Led aleros/nichos/espejos/placares/baso alacena mesada, etc* | 2026-06-22 → 2026-06-24 (+2d) | 2026-06-22 → 2026-06-24 (+2d) |  | 745d → 565d | baseline start none → 2026-06-22; baseline finish none → 2026-06-22 |
| 292 | Instalación artefactos comunes* | 2028-06-15 → 2027-09-30 (-259d) | 2028-06-15 → 2027-09-30 (-259d) |  |  | baseline start none → 2027-09-30; baseline finish none → 2027-09-30 |
| 293 | **Instalación y configuración de Alarma (Señales Débiles)*** | 2028-06-15 → 2027-09-30 (-259d) | 2028-06-22 → 2027-10-06 (-260d) |  |  | baseline start none → 2027-09-30; baseline finish none → 2027-10-06 |
| 294 | Instalación de sensor inalámbrico - PSS | 2028-06-15 → 2027-09-30 (-259d) | 2028-06-22 → 2027-10-06 (-260d) |  |  | baseline start none → 2027-09-30; baseline finish none → 2027-10-06 |
| 295 | Instalación de sensor inalámbrico - PB | 2028-06-15 → 2027-09-30 (-259d) | 2028-06-22 → 2027-10-06 (-260d) |  |  | baseline start none → 2027-09-30; baseline finish none → 2027-10-06 |
| 296 | Central de Alarma | 2028-06-15 → 2027-09-30 (-259d) | 2028-06-22 → 2027-10-06 (-260d) |  |  | baseline start none → 2027-09-30; baseline finish none → 2027-10-06 |
| 297 | Instalación de sensor inalámbrico - PA | 2028-06-15 → 2027-09-30 (-259d) | 2028-06-22 → 2027-10-06 (-260d) |  |  | baseline start none → 2027-09-30; baseline finish none → 2027-10-06 |
| 298 | Sirena | 2028-06-15 → 2027-09-30 (-259d) | 2028-06-22 → 2027-10-06 (-260d) |  |  | baseline start none → 2027-09-30; baseline finish none → 2027-10-06 |
| 299 | **Instalación y configuración de Red de Datos (Señales Débiles)** | 2028-06-15 → 2027-09-30 (-259d) | 2028-06-22 → 2027-10-06 (-260d) |  |  | baseline start none → 2027-09-30; baseline finish none → 2027-10-06 |
| 300 | Instalación de Acces Point (repetidor) - PSS | 2028-06-15 → 2027-09-30 (-259d) | 2028-06-22 → 2027-10-06 (-260d) |  |  | baseline start none → 2027-09-30; baseline finish none → 2027-10-06 |
| 301 | Instalación de Acces Point (repetidor) - PB | 2028-06-15 → 2027-09-30 (-259d) | 2028-06-22 → 2027-10-06 (-260d) |  |  | baseline start none → 2027-09-30; baseline finish none → 2027-10-06 |
| 302 | Instalación de Switch POE (central derivador de datos)* | 2028-06-15 → 2027-09-30 (-259d) | 2028-06-22 → 2027-10-06 (-260d) |  |  | baseline start none → 2027-09-30; baseline finish none → 2027-10-06 |
| 303 | Instalación de Acces Point (repetidor) - PSS | 2028-06-15 → 2027-09-30 (-259d) | 2028-06-22 → 2027-10-06 (-260d) |  |  | baseline start none → 2027-09-30; baseline finish none → 2027-10-06 |
| 304 | **PISOS Y REVESTIMIENTOS** | 2026-06-22 → 2026-06-24 (+2d) | 2028-07-17 → 2027-10-29 (-262d) | 520d? → 339d? | 226d → 198d | baseline start none → 2026-06-22; baseline finish none → 2027-10-29 |
| 305 | **Pisos Interiores** | 2026-06-22 → 2026-06-24 (+2d) | 2028-05-29 → 2027-09-10 (-262d) | 486d → 305d | 260d → 261d | baseline start none → 2026-06-22; baseline finish none → 2027-09-10 |
| 306 | S11 - Porcelanato Gris - (Cochera/ingreso/cine/gym/dºservicio/quincho) | 2028-03-29 → 2027-07-14 (-259d) | 2028-04-25 → 2027-08-10 (-259d) |  | 242d → 243d | baseline start none → 2027-07-14; baseline finish none → 2027-08-10 |
| 307 | S1 - Porcelanato Gris (interior y exterior de casa) | 2028-04-12 → 2027-07-28 (-259d) | 2028-05-24 → 2027-09-08 (-259d) |  | 242d → 243d | baseline start none → 2027-07-28; baseline finish none → 2027-09-08 |
| 308 | S4 - Entablonado PVC Simil Madera (estar exterior) | 2026-06-22 → 2026-06-24 (+2d) | 2026-07-03 → 2026-07-07 (+4d) |  | 736d → 556d | baseline start none → 2026-06-22; baseline finish none → 2026-07-03 |
| 309 | S1 - Porcelanato Gris (interior de casa) | 2028-05-04 → 2027-08-19 (-259d) | 2028-05-10 → 2027-08-25 (-259d) |  | 250d → 251d | baseline start none → 2027-08-19; baseline finish none → 2027-08-25 |
| 310 | S3 - Porcelanato Simil Madera (interior de casa) | 2028-05-11 → 2027-08-26 (-259d) | 2028-05-29 → 2027-09-10 (-262d) |  | 260d → 261d | baseline start none → 2027-08-26; baseline finish none → 2027-09-10 |
| 311 | **Pisos Exteriores** | 2026-06-22 → 2026-06-24 (+2d) | 2026-07-07 → 2026-07-10 (+3d) |  | 734d → 554d | baseline start none → 2026-06-22; baseline finish none → 2026-07-07 |
| 312 | S1 - Porcelanato Gris (galeria quincho/fogonero) | 2026-06-22 → 2026-06-24 (+2d) | 2026-07-07 → 2026-07-10 (+3d) |  | 734d → 554d | baseline start none → 2026-06-22; baseline finish none → 2026-07-07 |
| 313 | S4 - Entablonado PVC Simil Madera (deck pileta) | 2026-06-22 → 2026-06-24 (+2d) | 2026-06-30 → 2026-07-02 (+2d) |  | 739d → 559d | baseline start none → 2026-06-22; baseline finish none → 2026-06-30 |
| 314 | S8 - Adoquines (ingreso cochera) | 2026-06-22 → 2026-06-24 (+2d) | 2026-06-30 → 2026-07-02 (+2d) |  | 739d → 559d | baseline start none → 2026-06-22; baseline finish none → 2026-06-30 |
| 315 | S12 - Piedra Bola (patio interior y fogon) | 2026-06-22 → 2026-06-24 (+2d) | 2026-06-26 → 2026-06-30 (+4d) |  | 741d → 561d | baseline start none → 2026-06-22; baseline finish none → 2026-06-26 |
| 316 | S2 - Hormigon alisado (Ingreso peatonal/ingreso secundario cochera) | 2026-06-22 → 2026-06-24 (+2d) | 2026-06-30 → 2026-07-02 (+2d) |  | 739d → 559d | baseline start none → 2026-06-22; baseline finish none → 2026-06-30 |
| 317 | S4 - Entablonado PVC Simil Madera (terraza balcon) | 2026-06-22 → 2026-06-24 (+2d) | 2026-06-30 → 2026-07-02 (+2d) |  | 739d → 559d | baseline start none → 2026-06-22; baseline finish none → 2026-06-30 |
| 318 | S7 - Granza Exterior (terraza balcon) | 2026-06-22 → 2026-06-24 (+2d) | 2026-06-26 → 2026-06-30 (+4d) |  | 741d → 561d | baseline start none → 2026-06-22; baseline finish none → 2026-06-26 |
| 319 | **Zócalos** | 2028-04-26 → 2027-08-11 (-259d) | 2028-05-10 → 2027-08-25 (-259d) |  | 272d → 273d | baseline start none → 2027-08-11; baseline finish none → 2027-08-25 |
| 320 | Zócalo en Interior PSS - Porcelanato | 2028-05-02 → 2027-08-16 (-260d) | 2028-05-10 → 2027-08-25 (-259d) |  | 272d → 273d | baseline start none → 2027-08-16; baseline finish none → 2027-08-25 |
| 321 | Zócalo en (Interior PB/interior quincho/exterior galeria/veredas) | 2028-04-26 → 2027-08-11 (-259d) | 2028-05-10 → 2027-08-25 (-259d) |  | 272d → 273d | baseline start none → 2027-08-11; baseline finish none → 2027-08-25 |
| 322 | Zócalo en (Interior PA) - Porcelanato Simil Madera | 2028-04-26 → 2027-08-11 (-259d) | 2028-05-10 → 2027-08-25 (-259d) |  | 272d → 273d | baseline start none → 2027-08-11; baseline finish none → 2027-08-25 |
| 323 | **Banquina** | 2028-03-21 → 2027-07-06 (-259d) | 2028-04-06 → 2027-07-22 (-259d) |  | 295d → 296d | baseline start none → 2027-07-06; baseline finish none → 2027-07-22 |
| 324 | Bajo cocina e isla PSS - H: 0,12cm (6,20 m2) | 2028-03-21 → 2027-07-06 (-259d) | 2028-03-28 → 2027-07-13 (-259d) |  | 302d → 303d | baseline start none → 2027-07-06; baseline finish none → 2027-07-13 |
| 325 | Bajo cocina e isla PB - H: 0,12cm (12,30 m2) | 2028-03-31 → 2027-07-16 (-259d) | 2028-04-06 → 2027-07-22 (-259d) |  | 295d → 296d | baseline start none → 2027-07-16; baseline finish none → 2027-07-22 |
| 326 | Bajo lavadero PB - H: 0,12cm (3,10 m2) | 2028-03-31 → 2027-07-16 (-259d) | 2028-04-06 → 2027-07-22 (-259d) |  | 295d → 296d | baseline start none → 2027-07-16; baseline finish none → 2027-07-22 |
| 327 | **Revestimientos Interiores** | 2028-04-26 → 2027-08-11 (-259d) | 2028-07-17 → 2027-10-29 (-262d) |  | 226d → 227d | baseline start none → 2027-08-11; baseline finish none → 2027-10-29 |
| 328 | Porcelanato - Baños y cocina quincho (definir medidas y tipo) | 2028-04-26 → 2027-08-11 (-259d) | 2028-05-10 → 2027-08-25 (-259d) |  | 269d → 270d | baseline start none → 2027-08-11; baseline finish none → 2027-08-25 |
| 329 | Revestimiento Simil Madera | 2028-04-28 → 2027-08-13 (-259d) | 2028-05-05 → 2027-08-20 (-259d) |  | 245d → 246d | baseline start none → 2027-08-13; baseline finish none → 2027-08-20 |
| 330 | Porcelanato - Cocina, baños y lavadero (definir medidas y tipo) | 2028-05-26 → 2027-09-09 (-260d) | 2028-06-12 → 2027-09-24 (-262d) |  | 243d → 244d | baseline start none → 2027-09-09; baseline finish none → 2027-09-24 |
| 331 | Revestimiento Microcemento | 2028-06-13 → 2027-09-27 (-260d) | 2028-06-22 → 2027-10-05 (-261d) |  | 243d → 244d | baseline start none → 2027-09-27; baseline finish none → 2027-10-05 |
| 332 | Revestimiento Simil Madera | 2028-05-08 → 2027-08-23 (-259d) | 2028-05-29 → 2027-09-10 (-262d) |  | 245d → 246d | baseline start none → 2027-08-23; baseline finish none → 2027-09-10 |
| 333 | Revestimiento Simil Roca Viva | 2028-06-13 → 2027-09-27 (-260d) | 2028-06-29 → 2027-10-12 (-261d) |  | 226d → 227d | baseline start none → 2027-09-27; baseline finish none → 2027-10-12 |
| 334 | Porcelanato - Baños (definir medidas y tipo) | 2028-05-11 → 2027-08-26 (-259d) | 2028-06-01 → 2027-09-15 (-260d) |  | 250d → 251d | baseline start none → 2027-08-26; baseline finish none → 2027-09-15 |
| 335 | Revestimiento Microcemento | 2028-06-02 → 2027-09-16 (-260d) | 2028-06-12 → 2027-09-24 (-262d) |  | 250d → 251d | baseline start none → 2027-09-16; baseline finish none → 2027-09-24 |
| 336 | Revestimiento Simil Madera | 2028-05-30 → 2027-09-13 (-260d) | 2028-06-05 → 2027-09-17 (-262d) |  | 245d → 246d | baseline start none → 2027-09-13; baseline finish none → 2027-09-17 |
| 337 | Revestimiento Simil Roca Viva | 2028-06-30 → 2027-10-14 (-260d) | 2028-07-17 → 2027-10-29 (-262d) |  | 226d → 227d | baseline start none → 2027-10-14; baseline finish none → 2027-10-29 |
| 338 | **Revestimientos Exteriores** | 2026-12-23 → 2026-10-06 (-78d) | 2028-06-19 → 2027-10-01 (-262d) | 374d → 248d | 245d → 246d | baseline start none → 2026-10-06; baseline finish none → 2027-10-01 |
| 339 | Revestimiento de Piedra - (definir tipo) | 2026-12-23 → 2026-11-05 (-48d) | 2027-02-12 → 2026-12-28 (-46d) |  | 564d → 418d | baseline start none → 2026-11-13; baseline finish none → 2027-01-06 |
| 340 | Revestimiento de Ladrillos Refractarios - (Asador) | 2028-05-11 → 2027-08-26 (-259d) | 2028-05-15 → 2027-08-30 (-259d) |  | 269d → 270d | baseline start none → 2027-08-26; baseline finish none → 2027-08-30 |
| 341 | Revestimiento de Piedra en muro de contención - (definir tipo) | 2027-02-15 → 2026-12-29 (-48d) | 2027-03-12 → 2027-01-26 (-45d) |  | 564d → 418d | baseline start none → 2027-01-07; baseline finish none → 2027-02-03 |
| 342 | Revestimiento plástico - (definir color) | 2028-05-24 → 2027-09-08 (-259d) | 2028-05-29 → 2027-09-10 (-262d) |  | 246d → 247d | baseline start none → 2027-09-08; baseline finish none → 2027-09-10 |
| 343 | Revestimiento de Piedra - (definir tipo) | 2027-07-26 → 2026-11-04 (-264d) | 2027-08-13 → 2026-11-25 (-261d) |  | 458d → 459d | baseline start none → 2026-11-04; baseline finish none → 2026-11-25 |
| 344 | Revestimiento de Hormigón Visto | 2027-06-25 → 2026-10-06 (-262d) | 2027-08-06 → 2026-11-17 (-262d) |  | 463d → 464d | baseline start none → 2026-10-06; baseline finish none → 2026-11-17 |
| 345 | Revestimiento plástico en tanque de agua - (definir color) | 2028-05-30 → 2027-09-13 (-260d) | 2028-06-07 → 2027-09-21 (-260d) |  | 246d → 247d | baseline start none → 2027-09-13; baseline finish none → 2027-09-21 |
| 346 | Revestimiento plástico en canteros - (definir color) | 2028-06-08 → 2027-09-22 (-260d) | 2028-06-16 → 2027-09-30 (-260d) |  | 246d → 247d | baseline start none → 2027-09-22; baseline finish none → 2027-09-30 |
| 347 | Revestimiento de Piedra - (definir tipo) | 2027-12-03 → 2027-03-18 (-260d) | 2027-12-24 → 2027-04-09 (-259d) |  | 367d → 368d | baseline start none → 2027-03-18; baseline finish none → 2027-04-09 |
| 348 | Revestimiento de Hormigón Visto | 2027-11-11 → 2027-02-25 (-259d) | 2028-01-21 → 2027-05-07 (-259d) |  | 347d → 348d | baseline start none → 2027-02-25; baseline finish none → 2027-05-07 |
| 349 | Revestimiento de Alistonado WPC* | 2028-06-06 → 2027-09-20 (-260d) | 2028-06-19 → 2027-10-01 (-262d) |  | 245d → 246d | baseline start none → 2027-09-20; baseline finish none → 2027-10-01 |
| 350 | **PINTURA** | 2027-02-23 → 2026-08-19 (-188d) | 2028-06-23 → 2027-10-06 (-261d) | 336d → 285d | 242d → 243d | baseline start none → 2026-08-19; baseline finish none → 2027-10-06 |
| 351 | **Pintura Interior en pared y cielorraso** | 2028-04-26 → 2027-08-11 (-259d) | 2028-06-23 → 2027-10-06 (-261d) |  | 242d → 243d | baseline start none → 2027-08-11; baseline finish none → 2027-10-06 |
| 352 | Latex Interior PSS | 2028-04-26 → 2027-08-11 (-259d) | 2028-05-17 → 2027-09-01 (-259d) |  | 267d → 268d | baseline start none → 2027-08-11; baseline finish none → 2027-09-01 |
| 353 | Latex Interior PB | 2028-05-26 → 2027-09-09 (-260d) | 2028-06-23 → 2027-10-06 (-261d) |  | 242d → 243d | baseline start none → 2027-09-09; baseline finish none → 2027-10-06 |

| ID | Task | Start | Finish | Duration | Total float | Other |
| --- | --- | --- | --- | --- | --- | --- |
| 354 | Latex Interior PA | 2028-05-11 → 2027-08-26 (-259d) | 2028-06-08 → 2027-09-22 (-260d) |  | 252d → 253d | baseline start none → 2027-08-26; baseline finish none → 2027-09-22 |
| 355 | **Pintura Exterior** | 2027-02-23 → 2026-08-19 (-188d) | 2027-09-09 → 2027-01-08 (-244d) | 137.5d → 98d | 440.5d → 430d | baseline start none → 2026-08-19; baseline finish none → 2027-01-18 |
| 356 | Esmalte Sintetico en columnas y vigas metalicas* | 2027-08-26 → 2026-12-07 (-262d) | 2027-09-09 → 2026-12-22 (-261d) |  | 440.5d → 441.5d | baseline start none → 2026-12-07; baseline finish none → 2026-12-22 |
| 357 | Esmalte Sintetico en pérgola* | 2027-05-07 → 2026-08-19 (-261d) | 2027-05-20 → 2026-09-01 (-261d) |  | 517d → 518d | baseline start none → 2026-08-19; baseline finish none → 2026-09-01 |
| 358 | Esmalte Sintetico en conductos metalicos* | 2027-02-23 → 2027-01-07 (-47d) | 2027-02-24 → 2027-01-08 (-47d) |  | 576d → 430d | baseline start none → 2027-01-15; baseline finish none → 2027-01-18 |
| 359 | **CARPINTERIAS** | 2027-12-27 → 2027-04-12 (-259d) | 2028-07-07 → 2027-10-21 (-260d) |  |  | baseline start none → 2027-04-12; baseline finish none → 2027-10-21 |
| 360 | Colocación de premarcos | 2027-12-27 → 2027-04-12 (-259d) | 2028-01-07 → 2027-04-23 (-259d) |  |  | baseline start none → 2027-04-12; baseline finish none → 2027-04-23 |
| 361 | Puertas de madera* | 2028-06-16 → 2027-09-30 (-260d) | 2028-07-07 → 2027-10-21 (-260d) |  | 232d → 233d | baseline start none → 2027-09-30; baseline finish none → 2027-10-21 |
| 362 | Puertas de aluminio* | 2028-04-28 → 2027-08-13 (-259d) | 2028-05-05 → 2027-08-20 (-259d) |  | 275d → 276d | baseline start none → 2027-08-13; baseline finish none → 2027-08-20 |
| 363 | Aberturas de aluminio* | 2028-04-07 → 2027-07-23 (-259d) | 2028-04-27 → 2027-08-12 (-259d) |  |  | baseline start none → 2027-07-23; baseline finish none → 2027-08-12 |
| 364 | **LIMPIEZA DE OBRA** | 2026-06-22 → 2026-06-24 (+2d) | 2028-06-22 → 2027-10-05 (-261d) | 503d? → 322d? | 243d → 244d | baseline start none → 2026-06-22; baseline finish none → 2027-10-05 |
| 365 | Limpieza periodica | 2026-06-22 → 2026-06-24 (+2d) | 2026-06-22 → 2026-06-24 (+2d) |  | 745d → 565d | baseline start none → 2026-06-22; baseline finish none → 2026-06-22 |
| 366 | Limpieza final | 2028-06-16 → 2027-09-30 (-260d) | 2028-06-22 → 2027-10-05 (-261d) |  | 243d → 244d | baseline start none → 2027-09-30; baseline finish none → 2027-10-05 |
| 367 | **VARIOS** | 2028-05-22 → 2027-09-06 (-259d) | 2028-06-12 → 2027-09-24 (-262d) |  |  | baseline start none → 2027-09-06; baseline finish none → 2027-09-24 |
| 368 | Muebles | 2028-05-22 → 2027-09-06 (-259d) | 2028-06-05 → 2027-09-17 (-262d) |  |  | baseline start none → 2027-09-06; baseline finish none → 2027-09-17 |
| 369 | Mesadas | 2028-06-06 → 2027-09-20 (-260d) | 2028-06-12 → 2027-09-24 (-262d) |  |  | baseline start none → 2027-09-20; baseline finish none → 2027-09-24 |
| 370 | Firma Acta recepcion Provisoria | 2028-06-15 → 2027-09-29 (-260d) | 2028-06-15 → 2027-09-29 (-260d) |  |  | baseline start none → 2027-09-29; baseline finish none → 2027-09-29 |
| 371 | Posventa | 2028-06-15 → 2027-09-29 (-260d) | 2029-06-10 → 2028-09-23 (-260d) |  |  | baseline start none → 2027-09-29; baseline finish none → 2028-09-23 |
