# Vivienda Julieta Santiago

How a schedule from MS Project XML changed from version to version. A marks actual dates.

## Version 1 (saved 2026-07-16)

| ID | WBS | Task | Duration | Start | Finish | Predecessors | Complete | Total float | Constraint |
| --- | --- | --- | --- | --- | --- | --- | --- | --- | --- |
| 1 | 1 | **VIVIENDA JULIETA SANTIAGO** | 826d? | 2024-08-13 A | 2027-12-13 |  | 36% | 0d |  |
| 2 | 1.1 | **Presupuestación Proyecto y Obra Vivienda** | 34d | 2024-08-13 A | 2024-09-28 A |  | 100% |  |  |
| 3 |  | ✔Presupuestacion Proyecto | 0d | 2024-08-13 A | 2024-08-13 A |  | 100% |  | start no earlier than 2024-08-13 |
| 4 |  | ✔Aceptación Cliente | 0d | 2024-09-28 A | 2024-09-28 A |  | 100% |  |  |
| 5 | 1.2 | **Proyecto Vivienda J. Santiago** | 35d | 2024-09-30 A | 2024-11-19 A |  | 100% |  |  |
| 6 |  | ✔Fase 1 Diseño Conceptual | 10d | 2024-09-30 A | 2024-10-11 A |  | 100% |  |  |
| 7 |  | ✔Validacion Cliente | 2d | 2024-10-14 A | 2024-10-15 A | 6 | 100% |  |  |
| 8 |  | ✔Fase 2 Diseño conceptual | 10d | 2024-10-16 A | 2024-10-29 A | 7 | 100% |  |  |
| 9 |  | ✔Validación Cliente | 2d | 2024-10-30 A | 2024-10-31 A | 8 | 100% |  |  |
| 10 |  | ✔Fase 3 - Diseño Final | 10d | 2024-11-01 A | 2024-11-14 A | 9 | 100% |  |  |
| 11 |  | ✔Validación Cliente | 2d | 2024-11-15 A | 2024-11-19 A | 10 | 100% |  |  |
| 12 |  | ✔Plano Apto Gestiones y Licitación | 0d | 2024-11-01 A | 2024-11-01 A | 10SS | 100% |  |  |
| 13 | 1.3 | **Presupuesto y Contratación de obra** | 12d | 2024-11-20 A | 2024-12-05 A |  | 100% |  |  |
| 14 |  | ✔Computo Métrico General | 12d | 2024-11-20 A | 2024-12-05 A | 11 | 100% |  |  |
| 15 |  | ✔Cotización de Mano de Obra | 12d | 2024-11-20 A | 2024-12-05 A | 11 | 100% |  |  |
| 16 |  | ✔Cotizacion de Honorarios Empresa | 0d | 2024-12-05 A | 2024-12-05 A | 14, 15 | 100% |  |  |
| 17 | 1.4 | **Armado de Documetación Y Compra materiales** | 14d | 2024-12-06 A | 2025-01-06 A |  | 100% |  |  |
| 18 |  | ✔Armado de documentación Apto para Contrucción | 22d | 2024-12-06 A | 2025-01-06 A | 16 | 100% |  |  |
| 19 |  | ✔Confeccion de presupuestos para materiales y Acopio | 7d | 2024-12-06 A | 2024-12-16 A | 16 | 100% |  |  |
| 20 | 1.5 | **Gestion Vivienda J. Santiago** | 87d | 2024-11-01 A | 2025-03-17 A | 12 | 100% |  |  |
| 21 |  | ✔Gestiones CAPC | 30d | 2024-11-01 A | 2024-12-13 A | 12 | 100% |  |  |
| 22 |  | ✔Gestiones municipales | 57d | 2024-12-16 A | 2025-03-17 A | 21 | 100% |  |  |
| 23 |  | ✔Gestiones de personal. | 29d | 2025-02-04 A | 2025-03-17 A | 22FF | 100% |  |  |
| 24 |  | ✔Solicitudes de Servicios | 30d | 2024-12-16 A | 2025-02-05 A | 21 | 100% |  |  |
| 25 | 1.6 | **Obra Vivienda J. Santiago** | 424d | 2025-03-17 A | 2026-11-30 |  | 10% | 258d |  |
| 26 |  | ✔Firma Acta Inicio Obra | 0d | 2025-03-17 A | 2025-03-17 A | 20, 19 | 100% |  |  |
| 27 |  | Contratado - Vivienda Julieta Santiago | 18emo | 2025-03-17 | 2026-09-08 | 26 |  | 1383d |  |
| 28 |  | Obra Vivienda - Julieta Santiago | 445d | 2025-03-18 A | 2026-11-30 |  | 45% | -217d |  |
| 29 | 1.7 | **Obra Cronograma Alex** | 437d? | 2025-03-18 A | 2026-12-18 | 26 | 60% | -13d |  |
| 30 |  | Período de lluvia y No laborable | 11d | 2026-11-16 | 2026-11-30 |  |  | 0d | must finish on 2026-11-30 |
| 31 | 1.7.2 | **Pozos romanos** | 0d | 2025-05-20 A | 2025-05-20 A |  | 100% |  |  |
| 32 |  | ✔P1 - PEF - 80 diametro (49) | 0d | 2025-05-20 A | 2025-05-20 A |  | 100% |  | start no earlier than 2025-05-20 |
| 33 |  | ✔P1 - PEF - 60 diametro (20) | 0d | 2025-05-20 A | 2025-05-20 A |  | 100% |  | start no earlier than 2025-05-20 |
| 34 |  | ✔Cabezal 1 (80*120*120) 3 unidades | 0d | 2025-05-20 A | 2025-05-20 A |  | 100% |  | start no earlier than 2025-05-20 |
| 35 |  | ✔Cabezal 2 (80*50*160) 9 unidades | 0d | 2025-05-20 A | 2025-05-20 A |  | 100% |  | start no earlier than 2025-05-20 |
| 36 | 1.7.3 | **Vigas de fundación** | 42d | 2025-05-20 A | 2025-07-18 A |  | 100% |  |  |
| 37 |  | ✔VF - 0,18 * 0,30 | 42d | 2025-05-20 A | 2025-07-18 A | 33 | 100% |  |  |
| 38 |  | ✔VF1 - 0,30 * 0,30 | 42d | 2025-05-20 A | 2025-07-18 A | 33 | 100% |  |  |
| 39 |  | ✔VF - 0,40 * 0,30 | 42d | 2025-05-20 A | 2025-07-18 A | 33 | 100% |  |  |
| 40 |  | ✔VF - 0,30 * 0,50 | 42d | 2025-05-20 A | 2025-07-18 A | 33 | 100% |  |  |
| 41 |  | ✔VF - 0,40 * 0,50 | 42d | 2025-05-20 A | 2025-07-18 A | 33 | 100% |  |  |
| 42 |  | ✔VF - 0,40 * 0,80 | 42d | 2025-05-20 A | 2025-07-18 A | 33 | 100% |  |  |
| 43 |  | ✔Demora por envio de hierros | 10d | 2025-03-18 A | 2025-04-03 A |  | 100% |  |  |
| 44 |  | ✔Mamposteria de Nivelación PSS | 1d | 2025-07-21 A | 2025-07-21 A | 42 | 100% |  |  |
| 45 | 1.7.6 | **Columnas H°A°** | 195d | 2025-08-29 A | 2026-06-11 A |  | 100% |  |  |
| 46 |  | ✔C1 | 5d | 2025-08-29 A | 2025-09-04 A | 73 | 100% |  |  |
| 47 |  | ✔C2 | 5d | 2025-08-29 A | 2025-09-04 A | 73 | 100% |  |  |
| 48 |  | ✔C3 | 5d | 2025-08-29 A | 2025-09-04 A | 73 | 100% |  |  |
| 49 |  | ✔C4 | 5d | 2025-08-29 A | 2025-09-04 A | 73 | 100% |  |  |
| 50 |  | ✔C5 | 5d | 2025-08-29 A | 2025-09-04 A | 73 | 100% |  |  |
| 51 |  | ✔C6 | 5d | 2025-08-29 A | 2025-09-04 A | 73 | 100% |  |  |
| 52 |  | ✔C7 | 5d | 2025-08-29 A | 2025-09-04 A | 73 | 100% |  |  |
| 53 |  | ✔C8 | 5d | 2025-08-29 A | 2025-09-04 A | 73 | 100% |  |  |
| 54 |  | ✔C8* | 5d | 2025-08-29 A | 2025-09-04 A | 73 | 100% |  |  |
| 55 |  | ✔C9 | 5d | 2025-08-29 A | 2025-09-04 A | 73 | 100% |  |  |
| 56 |  | ✔C9* | 5d | 2025-08-29 A | 2025-09-04 A | 73 | 100% |  |  |
| 57 |  | ✔C10 | 5d | 2025-08-29 A | 2025-09-04 A | 73 | 100% |  |  |
| 58 |  | ✔C11 | 5d | 2025-08-29 A | 2025-09-04 A | 73 | 100% |  |  |
| 59 |  | ✔C1 | 34d | 2026-01-29 A | 2026-03-18 A | 102 | 100% |  |  |
| 60 |  | ✔C2 | 34d | 2026-01-29 A | 2026-03-18 A | 102 | 100% |  |  |
| 61 |  | ✔C3 | 34d | 2026-01-29 A | 2026-03-18 A | 102 | 100% |  |  |
| 62 |  | ✔C4 | 34d | 2026-01-29 A | 2026-03-18 A | 102 | 100% |  |  |
| 63 |  | ✔C5 | 34d | 2026-01-29 A | 2026-03-18 A | 102 | 100% |  |  |
| 64 |  | ✔C6 | 34d | 2026-01-29 A | 2026-03-18 A | 102 | 100% |  |  |
| 65 |  | ✔C7 | 34d | 2026-01-29 A | 2026-03-18 A | 102 | 100% |  |  |
| 66 |  | ✔C8 | 34d | 2026-01-29 A | 2026-03-18 A | 102 | 100% |  |  |
| 67 |  | ✔C9 | 34d | 2026-01-29 A | 2026-03-18 A | 102 | 100% |  |  |
| 68 |  | ✔C10 | 34d | 2026-01-29 A | 2026-03-18 A | 102 | 100% |  |  |
| 69 |  | ✔C11 | 34d | 2026-01-29 A | 2026-03-18 A | 102 | 100% |  |  |
| 70 |  | ✔C1 | 5d | 2026-06-05 A | 2026-06-11 A | 98 | 100% |  |  |

| ID | WBS | Task | Duration | Start | Finish | Predecessors | Complete | Total float | Constraint |
| --- | --- | --- | --- | --- | --- | --- | --- | --- | --- |
| 71 |  | ✔C2 | 5d | 2026-06-05 A | 2026-06-11 A | 98 | 100% |  |  |
| 72 | 1.7.7 | **Tabique de hormigon visto** | 245d | 2025-07-22 A | 2026-07-15 |  | 90% | -74d |  |
| 73 |  | ✔Th - Tabiques de Hormigon de Contención PF - esp: 18cm (parte 1) | 34d | 2025-07-22 A | 2025-09-08 A | 44 | 100% |  |  |
| 74 |  | ✔Th - Tabiques de Hormigon de Contención PF - esp: 18cm (parte 2) | 36d | 2025-09-16 A | 2025-11-05 A | 75 | 100% |  |  |
| 75 |  | ✔Demora por hormigon | 5d | 2025-09-09 A | 2025-09-15 A | 73 | 100% |  |  |
| 76 |  | ✔T1 - Tabiques de Hormigon Visto PB - esp: 18cm | 43d | 2026-01-26 A | 2026-03-27 A | 88 | 100% |  |  |
| 77 |  | T1 - Tabiques de Hormigon Visto PA - esp: 18cm | 13d | 2026-06-26 | 2026-07-15 | 89 |  | -129d |  |
| 78 | 1.7.8 | **Encadenados horizontales** | 97d | 2026-02-24 A | 2026-07-15 |  | 36% | -92d |  |
| 79 |  | ✔Ve (0,18x0,25) PB | 5d | 2026-02-24 A | 2026-03-02 A | 96FF | 100% |  |  |
| 80 |  | Ve2 (0,18x0,21) PA | 9d | 2026-07-02 | 2026-07-15 | 77FF |  | -122d |  |
| 81 | 1.7.9 | **Vigas estructurales** | 52d | 2026-04-28 A | 2026-07-13 |  | 84% | -34d |  |
| 82 |  | ✔V1 - 0,18 x 1,00 | 18d | 2026-04-28 A | 2026-05-22 A | 89FF-23d | 100% |  |  |
| 83 |  | ✔V2 - 0,18 x 0,60 | 8d | 2026-05-13 A | 2026-05-22 A | 89FF-23d | 100% |  |  |
| 84 |  | ✔V3 - 0,18 x 0,30 | 8d | 2026-05-13 A | 2026-05-22 A | 89FF-23d | 100% |  |  |
| 85 |  | ✔V4 - 0,18 x 2,00 | 8d | 2026-05-13 A | 2026-05-22 A | 89FF-23d | 100% |  |  |
| 86 |  | V5 - 0,18 x 0,40 | 8d | 2026-07-01 | 2026-07-13 | 98FS-10d |  | -125d |  |
| 87 | 1.7.10 | **Losas** | 160d | 2025-11-03 A | 2026-06-25 A |  | 100% |  |  |
| 88 |  | ✔Losa Viguetas 22cm - Planta Subsuelo | 56d | 2025-11-03 A | 2026-01-23 A |  | 100% |  | start no earlier than 2025-11-03 |
| 89 |  | ✔Losa Maciza VISTA - 15cm - Planta Baja | 61d | 2026-03-30 A | 2026-06-25 A | 76 | 100% |  |  |
| 90 | 1.7.11 | **Mampostería** | 195d | 2025-10-01 A | 2026-07-15 |  | 79% | -92d |  |
| 91 |  | ✔Mamposteria Ladrillo Hueco Portante 12x18x33 (PBNF) | 10d | 2025-11-06 A | 2025-11-20 A | 74 | 100% |  |  |
| 92 |  | ✔ Mamposteria Ladrillo Hueco Portante 12x18x33 (ajuste de obra) | 10d | 2025-11-06 A | 2025-11-20 A | 74 | 100% |  |  |
| 93 |  | ✔Mamposteria Ladrillo Hueco Portante 18x18x33 (PBNF) | 10d | 2025-11-06 A | 2025-11-20 A | 74 | 100% |  |  |
| 94 |  | ✔Mamposteria Ladrillo Hueco Portante 12x18x33 (PB) | 18d | 2026-01-29 A | 2026-02-24 A | 102 | 100% |  |  |
| 95 |  | ✔Mamposteria Ladrillo Hueco Portante 12x18x33 (ajuste de obra ) | 18d | 2026-01-29 A | 2026-02-24 A | 102 | 100% |  |  |
| 96 |  | ✔Mamposteria Ladrillo Hueco Portante 18x18x33 (PB) | 22d | 2026-01-29 A | 2026-03-02 A | 102 | 100% |  |  |
| 97 |  | Mamposteria Ladrillo Hueco Portante 12x18x33 (PA) | 13d | 2026-06-26 | 2026-07-15 | 89 |  | -230d |  |
| 98 |  | Mamposteria Ladrillo Hueco Portante 18x18x33 (PA) | 13d | 2026-06-26 | 2026-07-15 | 89 |  | -172d |  |
| 99 |  | ✔Mamposteria Ladrillon 18 de rafa | 10d | 2025-10-01 A | 2025-10-15 A |  | 100% |  | start no earlier than 2025-10-01 |
| 100 | 1.7.12 | **Aislación en muros** | 195d | 2025-10-22 A | 2026-08-04 |  | 41% | -128d |  |
| 101 |  | ✔Capa Aisladora Vertical | 2d | 2025-10-22 A | 2025-10-28 A | 118 | 100% |  |  |
| 102 |  | ✔Capa Aisladora Horizontal PB | 5d | 2026-01-22 A | 2026-01-28 A | 76 | 100% |  |  |
| 103 |  | Impermeabilización Membrana geotextil | 5d | 2026-07-29 | 2026-08-04 | 249 |  | -136d |  |
| 104 |  | Ladrillon Rafa | 5d | 2026-07-29 | 2026-08-04 | 249 |  | -136d |  |
| 105 | 1.7.13 | **Contrapiso** | 55d | 2025-11-04 A | 2026-01-23 A |  | 100% |  |  |
| 106 |  | ✔Hormigón p/contrapiso Interior e=10cm | 10d | 2025-11-04 A | 2025-11-17 A | 101FS+4d | 100% |  |  |
| 107 |  | ✔Hormigón p/contrapiso Exterior e=10cm | 5d | 2026-01-19 A | 2026-01-23 A | 108FF, 109FF | 100% |  |  |
| 108 |  | ✔Hormigón p/contrapiso Interior e=10cm | 5d | 2026-01-19 A | 2026-01-23 A | 88FS-5d | 100% |  |  |
| 109 |  | ✔Hormigón p/contrapiso Interior e=10cm - PB (ajuste de obra) | 5d | 2026-01-19 A | 2026-01-23 A | 88FS-5d | 100% |  |  |
| 110 | 1.7.14 | **Carpeta de nivelación** | 75d | 2026-04-29 | 2026-08-14 |  |  | -211d |  |
| 111 |  | Hormigón alivianado - Relleno PB Y PA | 66d | 2026-04-29 | 2026-07-29 | 179FS-28d |  | -211d |  |
| 112 |  | Carpeta de Nivelación Interior esp. 4cm PB. | 12d | 2026-07-30 | 2026-08-14 | 111 |  | -210d |  |
| 113 | 1.7.15 | **Cubierta** | 21d | 2026-06-19 A | 2026-07-20 |  | 43% | -12d |  |
| 114 |  | ✔Hormigón pendiente (carga) | 4d | 2026-06-19 A | 2026-06-24 A | 89FS-5d | 100% |  |  |
| 115 |  | ✔Carpeta sobre carga | 5d | 2026-06-25 A | 2026-07-01 A | 114 | 100% |  |  |
| 116 |  | Impermeabilización* | 12d | 2026-07-02 | 2026-07-20 | 115 |  | -125d |  |
| 117 | 1.7.16 | **Revoques y terminaciones de muros** | 228d | 2025-10-03 A | 2026-09-03 |  | 73% | -108d |  |
| 118 |  | ✔Revoque exterior c/ azotado hidrof. cementicio en mamp. PF | 15d | 2025-10-03 A | 2025-10-24 A | 91, 92 | 100% |  |  |
| 119 |  | ✔Revoque exterior c/ azotado hidrof. cementicio en mamp. PB | 87d | 2025-11-21 A | 2026-03-30 A | 92 | 100% |  |  |
| 120 |  | Revoque exterior c/ azotado hidrof. Cementicio en mamp. PA | 15d | 2026-07-08 | 2026-07-29 | 97FS-5d |  | -132d |  |
| 121 |  | ✔Revoque Grueso Interior esp.1,5cm PB | 49d | 2026-01-19 A | 2026-03-30 A | 94FS-26d, 95FS-26d | 100% |  |  |
| 122 |  | ✔Revoque Grueso Interior esp.1,5cm PB | 49d | 2026-01-19 A | 2026-03-30 A | 94FS-26d, 95FS-26d | 100% |  |  |
| 123 |  | Revoque Grueso Interior esp.1,5cm PA | 8d | 2026-07-08 | 2026-07-20 | 97FS-5d |  | -230d |  |
| 124 |  | Colocación de premarcos | 10d | 2026-07-03 | 2026-07-17 | 123FS-11d |  | -230d |  |
| 125 |  | Revoques finos | 15d | 2026-08-06 | 2026-08-27 | 152 |  | -172d |  |
| 126 |  | Enlucido de Yeso PB | 20d | 2026-08-06 | 2026-09-03 | 152 |  | -157d |  |
| 127 |  | Enlucido de Yeso PA | 7d | 2026-08-06 | 2026-08-14 | 152 |  | -144d |  |
| 128 | 1.7.17 | **Cielorrasos** | 53d | 2026-06-26 | 2026-09-10 |  |  | -162d |  |
| 129 |  | C2- Cieloraso aplicado con terminacion de yeso | 7d | 2026-07-07 | 2026-07-16 | 130 |  | -123d |  |
| 130 |  | Revoque Grueso en cielorraso Interior esp.1,5cm | 7d | 2026-06-26 | 2026-07-06 | 121, 89, 122 |  | -123d |  |
| 131 |  | C4- Cielorraso suspendido anti humedad, con buña perimetral | 15d | 2026-07-27 | 2026-08-14 | 153 |  | -144d |  |
| 132 |  | C5- Cielorraso suspendido con buña perimetral | 15d | 2026-07-27 | 2026-08-14 | 153 |  | -144d |  |
| 133 |  | Cielorraso de Madera (en donde esta la cubierta metalica) | 33d | 2026-07-27 | 2026-09-10 | 153 |  | -162d |  |
| 134 |  | C4- Cielorraso suspendido anti humedad, con buña perimetral | 15d | 2026-08-06 | 2026-08-27 | 154 |  | -152d |  |
| 135 |  | C5- Cielorraso suspendido con buña perimetral | 15d | 2026-08-06 | 2026-08-27 | 154 |  | -152d |  |
| 136 | 1.7.18 | **Escaleras** | 10d | 2026-07-20 | 2026-07-31 |  |  | -134d |  |
| 137 |  | Escaleras de Circulación Interior H° PB a PA | 10d | 2026-07-20 | 2026-07-31 | 76, 89FS+15d |  | -134d |  |
| 138 | 1.7.19 | **Asador** | 3d | 2026-07-29 | 2026-07-31 |  |  | -134d |  |
| 139 |  | Asador | 3d | 2026-07-29 | 2026-07-31 | 137FF |  | -134d |  |
| 140 | 1.7.20 | **Veredas perimetrales** | 2d | 2026-07-29 | 2026-07-30 |  |  | -133d |  |

| ID | WBS | Task | Duration | Start | Finish | Predecessors | Complete | Total float | Constraint |
| --- | --- | --- | --- | --- | --- | --- | --- | --- | --- |
| 141 |  | Veredas Perimetrales con Cordon - Ancho 40cm | 2d | 2026-07-29 | 2026-07-30 | 249 |  | -133d | start no earlier than 2026-04-15 |
| 142 | 1.7.21 | **HERRERIA** | 144d | 2026-01-19 A | 2026-08-14 |  | 27% | -39d |  |
| 143 |  | ✔CM01 - 2UPN180 (2 columnas) 3,00 mts de largo c/una. | 5d | 2026-01-19 A | 2026-01-23 A | 88FF | 100% |  |  |
| 144 |  | ✔CM01 - 2UPN180 (2 columnas) 2,20 mts de largo c/una. SUBSUELO | 5d | 2026-01-19 A | 2026-01-23 A | 143FF | 100% |  |  |
| 145 |  | ✔CM - 2UPN100 (2 columnas) 3,00 mts de largo c una. | 5d | 2026-03-06 A | 2026-03-12 A | 144FS+28d | 100% |  |  |
| 146 |  | VM1 - PW460 | 7d | 2026-06-11 A | 2026-06-19 A | 76, 89FS-11d | 100% |  |  |
| 147 |  | VM2 - PW360 | 7d | 2026-06-11 A | 2026-06-19 A | 76, 89FS-11d | 100% |  |  |
| 148 |  | VM3 - PW250 | 7d | 2026-07-16 | 2026-07-24 | 77 |  | -129d |  |
| 149 |  | VM1 - PW460 | 5d | 2026-07-14 | 2026-07-20 | 86 |  | -125d |  |
| 150 |  | VM2 - PW360 | 5d | 2026-07-14 | 2026-07-20 | 86 |  | -125d |  |
| 151 |  | Estructura con correas y chapa. pendi.:15% - Cantidad 2 | 24d | 2026-06-22 | 2026-07-24 | 147 |  | -174d |  |
| 152 |  | Estructura con correas y chapa. Pendi.:15% | 15d | 2026-07-16 | 2026-08-05 | 98 |  | -172d |  |
| 153 |  | Subestructura para cieloraso. | 10d | 2026-07-13 | 2026-07-24 | 151FF |  | -174d |  |
| 154 |  | Subestructura para cieloraso. | 5d | 2026-07-30 | 2026-08-05 | 152FF |  | -162d |  |
| 155 | 1.7.21.13 | **Pérgola** | 1d? | 2026-07-29 | 2026-07-29 |  |  | -132d |  |
| 156 |  | Listones de madera de 2¨ | 1d? | 2026-07-29 | 2026-07-29 | 249 |  | -132d | start no earlier than 2026-06-01 |
| 157 | 1.7.21.14 | **Conductos Metálicos** | 38d | 2026-06-23 | 2026-08-14 |  |  | -144d |  |
| 158 |  | Asador PB - conducto descarga 2,30m - 30 diam. | 3d | 2026-06-23 | 2026-06-25 | 89FF |  | -144d |  |
| 159 |  | Hogar Exterior PB - conducto descarga 2,30m - 30 diametro. | 2d | 2026-06-24 | 2026-06-25 | 158FF |  | -144d |  |
| 160 |  | Calefactor Tromen - conducto descarga 4,60 - 30 diametro. | 2d | 2026-08-13 | 2026-08-14 | 159FS+33d |  | -144d |  |
| 161 | 1.7.22 | **INSTALACIONES** | 278d? | 2025-11-03 A | 2026-12-15 |  | 73% | -88d |  |
| 162 | 1.7.22.1 | **Instalaciones Pluviales** | 144d | 2026-01-12 A | 2026-08-07 |  | 90% | 0d |  |
| 163 |  | Desagues pluviales (sin zinguería) | 95d | 2026-01-12 A | 2026-08-07 | 108FF, 109FF, 152FF | 90% | -139d |  |
| 164 | 1.7.22.2 | **Instalaciones Cloacales** | 275d | 2025-11-03 A | 2026-12-10 |  | 90% | -115d |  |
| 165 |  | ✔Instalación de cloacas para tres baños en PB , pileta de cocina, pileta de lavadero, pileta de asador, lavarropas, lava vajillas. | 35d | 2025-11-03 A | 2025-12-19 A |  | 100% |  | start no earlier than 2025-11-03 |
| 166 |  | Instalación de cañeria principal exterior - Hasta cámara impulsión | 5d | 2026-07-29 | 2026-08-04 | 249 |  | -136d | start no earlier than 2026-07-15 |
| 167 |  | ✔Instalación de cloacas para un baño en PA | 50d | 2026-04-15 A | 2026-06-25 A | 89FF | 100% |  |  |
| 168 |  | Colocación de cámara impulsión (según detalle técnico) | 10d | 2026-07-29 | 2026-08-11 | 167, 249 |  | -141d |  |
| 169 |  | ✔Desagote de 5 aire acondicionado | 116d | 2025-11-27 A | 2026-05-18 A |  | 100% |  | start no earlier than 2025-11-27 |
| 170 |  | Colocación de artefactos | 7d | 2026-12-01 | 2026-12-10 | 240 |  | -224d |  |
| 171 | 1.7.22.3 | **Instalaciones de Agua** | 222d | 2026-01-21 A | 2026-12-10 |  | 75% | -85d |  |
| 172 |  | ✔Instalación de Agua para tres baños en PB , pileta de cocina, pileta de lavadero, pileta de asador, lavarropas, lava vajillas. | 93d | 2026-01-21 A | 2026-05-29 A |  | 100% |  | start no earlier than 2026-01-21 |
| 173 |  | Instalación de Agua para un baño en PA | 15d | 2026-07-21 | 2026-08-10 | 123 |  | -140d |  |
| 174 |  | Alimentación de agua para válvulas de inodoros desde tanques | 15d | 2026-07-21 | 2026-08-10 | 123 |  | -140d |  |
| 175 |  | ✔Alimentación de agua a tanques y canillas en patio | 30d | 2026-06-26 A | 2026-08-07 A | 249FS-22d | 100% |  |  |
| 176 |  | Instalación de bomba hidroneumática bajo tanque | 5d | 2026-12-03 | 2026-12-10 | 177FF |  | -224d |  |
| 177 |  | Colocación de artefactos | 7d | 2026-12-01 | 2026-12-10 | 240 |  | -224d |  |
| 178 | 1.7.22.4 | **Instalaciones de Gas** | 140d | 2026-05-27 A | 2026-12-15 |  | 20% | -130d |  |
| 179 |  | ✔Instalación de gas para anafe, horno en asador, 2 calderas, termotanque. | 10d | 2026-05-27 A | 2026-06-09 A | 121, 122, 89FS-22d | 100% |  |  |
| 180 |  | Factibilidad de gas y plano aprobación de cañerías. | 27d | 2026-06-10 | 2026-07-17 | 179 |  | -124d |  |
| 181 |  | Segunda inspección parcial de cañerías y ventilaciones. | 0d | 2026-07-17 | 2026-07-17 | 180 |  | -124d |  |
| 182 |  | Solicitud de servicio domiciliario (no incluye aranceles Ecogas). | 2d | 2026-12-14 | 2026-12-15 | 183 |  | -227d |  |
| 183 |  | Final de gas con artefactos colocados. | 3d | 2026-12-09 | 2026-12-11 | 185 |  | -227d |  |
| 184 |  | Ventilaciones para gas. Conductos y rejillas. | 2d | 2026-12-01 | 2026-12-02 | 240 |  | -219d |  |
| 185 |  | Colocación de artefactos | 5d | 2026-12-01 | 2026-12-07 | 240 |  | -227d |  |
| 186 | 1.7.22.5 | **Instalaciones de Aire Acondicionado** | 145d? | 2026-05-19 A | 2026-12-15 |  | 19% | -140d |  |
| 187 |  | AA Living Comedor - 3500frig | 5d | 2026-12-09 | 2026-12-15 | 185 |  | -227d |  |
| 188 |  | AA Suite - 2500frig | 5d | 2026-12-09 | 2026-12-15 | 185 |  | -227d |  |
| 189 |  | AA DORMITORIO 2 - PA - 2500frig | 5d | 2026-12-09 | 2026-12-15 | 185 |  | -227d |  |
| 190 |  | AA Dormitorio 3 - PA - 2500frig | 5d | 2026-12-09 | 2026-12-15 | 185 |  | -227d |  |
| 191 |  | Kit Instalacion AA | 5d | 2026-05-19 A | 2026-05-26 A | 169 | 100% |  |  |
| 192 |  | Equipos de AA - Dormitorios PB + PA | 1d? | 2026-12-09 | 2026-12-09 | 185 |  | -223d |  |
| 193 |  | Equipos de AA - Cocina-Comedor | 1d? | 2026-12-09 | 2026-12-09 | 185 |  | -223d |  |
| 194 | 1.7.22.6 | **Instalación de Calefacción** | 15d | 2026-07-30 | 2026-08-20 |  |  | -147d |  |
| 195 |  | Colector | 5d | 2026-07-30 | 2026-08-05 | 111 |  | -137d |  |
| 196 |  | Piso Radiante Planta Baja | 10d | 2026-08-06 | 2026-08-20 | 152, 111 |  | -147d |  |
| 197 |  | Piso Radiante Planta Alta | 10d | 2026-07-30 | 2026-08-12 | 111 |  | -142d |  |
| 198 | 1.7.23 | **INSTALACIONES ELECTRICAS** | 309d | 2025-09-23 A | 2026-12-18 |  | 65% | -111d |  |
| 199 |  | ✔Canalización de cañerias y bocas en losa. | 81d | 2026-02-27 A | 2026-06-25 A | 89FF | 100% |  |  |
| 200 |  | ✔Canalización de cañerias en Tabiques. | 110d | 2025-10-17 A | 2026-03-27 A | 73SS+61d | 100% |  |  |
| 201 |  | Canalizacion en muros y amurados de cajas. | 120d | 2025-09-23 A | 2026-07-10 | 91, 92, 89FF+10d | 20% | -215d |  |
| 202 |  | Cableado General 220V | 10d | 2026-12-01 | 2026-12-15 | 240 |  | -230d |  |
| 203 |  | Armado de Tomas y Puntos de Encendido. | 5d | 2026-11-09 | 2026-11-13 | 232 |  | -207d |  |
| 204 |  | Armado de Tablero en General. | 3d | 2026-12-16 | 2026-12-18 | 202 |  | -230d |  |
| 205 | 1.7.24 | **PISOS Y REVESTIMIENTOS** | 120d | 2026-06-08 | 2026-11-26 |  |  | -215d |  |
| 206 | 1.7.24.1 | **Pisos Interiores** | 28d | 2026-07-27 | 2026-09-03 |  |  | -174d |  |
| 207 |  | Cocina - Living - Comedor - Porcelanato 60x120 | 20d | 2026-07-27 | 2026-08-24 | 153 |  | -174d |  |
| 208 |  | Galeria Quincho - Porcelanato 60x120 | 20d | 2026-07-27 | 2026-08-24 | 153 |  | -154d |  |
| 209 |  | Baños - Lavadero - Despensa - Pasillos - Porcelanatos 60x60 | 20d | 2026-07-27 | 2026-08-24 | 153 |  | -154d |  |
| 210 |  | Dormitorios - Porcelanato 60x120 | 20d | 2026-07-27 | 2026-08-24 | 153 |  | -149d |  |

| ID | WBS | Task | Duration | Start | Finish | Predecessors | Total float | Constraint |
| --- | --- | --- | --- | --- | --- | --- | --- | --- |
| 211 |  | Baño - Porcelanatos 60x60 | 20d | 2026-08-06 | 2026-09-03 | 154 | -162d |  |
| 212 |  | Dormitorio - Porcelanato 60x120 | 20d | 2026-08-06 | 2026-09-03 | 154 | -162d |  |
| 213 | 1.7.24.2 | **Pisos Exteriores** | 20d | 2026-08-25 | 2026-09-21 |  | -174d |  |
| 214 |  | Ingreso Cochera- Adoquines | 20d | 2026-08-25 | 2026-09-21 | 207, 249 | -174d |  |
| 215 |  | Cochera - Sala de Maquinas - Deposito - (falta definir revestimiento) | 20d | 2026-08-25 | 2026-09-21 | 207, 249 | -169d |  |
| 216 |  | Ingreso Peatonal (falta definir revestimiento) | 20d | 2026-08-25 | 2026-09-21 | 207, 249 | -169d |  |
| 217 | 1.7.24.3 | **Zocalos** | 25d | 2026-08-25 | 2026-09-28 |  | -174d |  |
| 218 |  | Zocalos: Cochera | 5d | 2026-09-22 | 2026-09-28 | 214 | -174d |  |
| 219 |  | Zocalos: Galería | 5d | 2026-08-25 | 2026-08-31 | 208 | -154d |  |
| 220 |  | Zocalos: Cocina-Living-Comedor | 5d | 2026-08-25 | 2026-08-31 | 207 | -154d |  |
| 221 |  | Zocalos: Lavadero-Despensa-Baños-Pasillo | 5d | 2026-08-25 | 2026-08-31 | 209 | -154d |  |
| 222 |  | Zocalos: Dormitorio | 5d | 2026-09-04 | 2026-09-10 | 212 | -162d |  |
| 223 |  | Zocalos: Baños | 5d | 2026-09-04 | 2026-09-10 | 211 | -162d |  |
| 224 |  | Zocalos: Dormitorio | 5d | 2026-09-04 | 2026-09-10 | 212 | -162d |  |
| 225 | 1.7.24.4 | **Revestimientos Exteriores** | 120d | 2026-06-08 | 2026-11-26 |  | -215d |  |
| 226 |  | Rev. De Piedra a Definir - Exterior. | 120d | 2026-06-08 | 2026-11-26 | 201FS-24d | -215d |  |
| 227 |  | Rev. De Piedra a Definir - Interior. | 120d | 2026-06-08 | 2026-11-26 | 201FS-24d | -215d |  |
| 228 |  | Porcellanato Modelo a Definir. | 66d | 2026-08-17 | 2026-11-19 | 112, 249 | -210d |  |
| 229 | 1.7.25 | **PINTURA** | 65d | 2026-08-06 | 2026-11-06 |  | -202d |  |
| 230 | 1.7.25.1 | **Pintura Interior** | 20d | 2026-10-09 | 2026-11-06 |  | -207d |  |
| 231 |  | Latex Interior PB | 20d | 2026-10-09 | 2026-11-06 | 240FF-15d | -206d |  |
| 232 |  | Latex Interior PA | 20d | 2026-10-09 | 2026-11-06 | 240FF-15d | -207d |  |
| 233 |  | Latex Cieloraso | 20d | 2026-10-09 | 2026-11-06 | 240FF-15d | -202d |  |
| 234 | 1.7.25.2 | **Pintura Exterior** | 35d | 2026-08-06 | 2026-09-24 |  | -172d |  |
| 235 |  | Revestimiento Plastico | 20d | 2026-08-28 | 2026-09-24 | 125 | -172d |  |
| 236 |  | Esmalte Sintetico | 15d | 2026-08-06 | 2026-08-27 | 152 | -152d |  |
| 237 | 1.7.26 | **CARPINTERIAS** | 15d | 2026-11-09 | 2026-11-30 |  | -218d |  |
| 238 |  | Puertas de madera | 4d | 2026-11-09 | 2026-11-12 | 231 | -206d |  |
| 239 |  | Puertas de aluminio | 4d | 2026-11-09 | 2026-11-12 | 231 | -206d |  |
| 240 |  | Aberturas de aluminio* | 3d | 2026-11-26 | 2026-11-30 | 124FS+90d | -230d |  |
| 241 | 1.7.27 | **VARIOS** | 1d? | 2026-11-30 | 2026-11-30 |  | -217d |  |
| 242 | 1.7.27.1 | **Pileta** | 1d? | 2026-11-30 | 2026-11-30 |  | -217d |  |
| 243 |  | Piscina con desborde infinito* | 1d? | 2026-11-30 | 2026-11-30 | 28FF | -217d |  |
| 244 | 1.7.27.2 | **Pozo de agua** | 1d? | 2026-11-30 | 2026-11-30 |  | -217d |  |
| 245 |  | Pozo de agua para riego | 1d? | 2026-11-30 | 2026-11-30 | 28FF | -217d |  |
| 246 |  | Fin Obra | 0d | 2026-12-18 | 2026-12-18 | 29 | -8d |  |
| 247 |  | Postventa Pasiva | 12emo | 2026-12-18 | 2027-12-13 | 29 | -1008d |  |
| 248 |  | Fin Postventa | 0d | 2027-12-13 | 2027-12-13 | 247 | -231d |  |
| 249 |  | Definición Proyecto de Paisajismo | 100d | 2026-03-04 | 2026-07-28 |  | -197d | start no earlier than 2026-03-04 |
| 250 |  | Firma Acta recepción Provisoria | 0d | 2026-12-18 | 2026-12-18 | 29 | 0d |  |
| 251 |  | Firma Acta recepcion Definitiva | 0d | 2027-12-13 | 2027-12-13 | 250FS+12emo | 0d |  |

## Version 2 (saved 2026-09-26)

Last finish 2027-12-13 → 2027-11-28 (-15d). Complete tasks 101 → 111.

Added:

| ID | Task | Duration | Start | Finish | Predecessors | Constraint | Resources |
| --- | --- | --- | --- | --- | --- | --- | --- |
| 140 | **Revestimiento de hormigón** | 10d | 2026-08-03 A | 2026-08-14 |  |  |  |
| 141 | Revestimiento de hormigón en Asador | 5d | 2026-08-10 | 2026-08-14 | 142SS |  | Alexandra Arevalo |
| 142 | Revestimiento de hormigón en Hogar interior | 5d | 2026-08-10 | 2026-08-14 |  | start no earlier than 2026-08-10 | Alexandra Arevalo |
| 143 | ✔Revestimiento de hormigón en Hogar Exterior | 5d | 2026-08-03 A | 2026-08-07 A |  | start no earlier than 2026-08-03 | Alexandra Arevalo |
| 207 | Instalación de Artefactos | 0d | 2026-12-03 | 2026-12-03 | 204 |  | Alexandra Arevalo |

Removed: 155 Pérgola; 156 Listones de madera de 2¨; 228 Porcellanato Modelo a Definir.

Changed:

| ID | Task | Start | Finish | Duration | Complete | Total float | Predecessors | Other |
| --- | --- | --- | --- | --- | --- | --- | --- | --- |
| 1 | **VIVIENDA JULIETA SANTIAGO** |  | 2027-12-13 → 2027-11-28 (-15d) | 826d? → 816d? | 36% → 40% |  |  |  |
| 29 | **Obra Cronograma Alex** |  | 2026-12-18 → 2026-12-03 (-15d) | 437d? → 427d? | 60% → 70% | -13d → -3d |  |  |
| 72 | **Tabique de hormigon visto** |  | 2026-07-15 → 2026-07-08 A (-7d) | 245d → 241d | 90% → 100% | -74d → none |  |  |
| 77 | ✔T1 - Tabiques de Hormigon Visto PA - esp: 18cm | 2026-06-26 A | 2026-07-15 → 2026-07-08 A (-7d) | 13d → 9d | 0% → 100% | -129d → none |  | was named T1 - Tabiques de Hormigon Visto PA - esp: 18cm |
| 78 | **Encadenados horizontales** |  | 2026-07-15 → 2026-08-14 (+30d) | 97d → 119d |  | -92d → -114d |  |  |
| 80 | Ve2 (0,18x0,21) PA | 2026-07-02 → 2026-08-04 (+33d) | 2026-07-15 → 2026-08-14 (+30d) |  |  | -122d → -144d | 77FF → 97FF |  |
| 81 | **Vigas estructurales** |  | 2026-07-13 → 2026-07-08 A (-5d) | 52d → 50d | 84% → 100% | -34d → none |  |  |
| 86 | ✔V5 - 0,18 x 0,40 | 2026-07-01 → 2026-06-29 A (-2d) | 2026-07-13 → 2026-07-08 A (-5d) |  | 0% → 100% | -125d → none | 98FS-10d → 77FF | was named V5 - 0,18 x 0,40 |
| 90 | **Mampostería** |  | 2026-07-15 → 2026-08-14 (+30d) | 195d → 217d | 79% → 58% | -92d → -114d |  |  |
| 97 | Mamposteria Ladrillo Hueco Portante 12x18x33 (PA) |  | 2026-07-15 → 2026-08-14 (+30d) | 13d → 35d |  | -230d → -162d |  |  |
| 98 | Mamposteria Ladrillo Hueco Portante 18x18x33 (PA) |  | 2026-07-15 → 2026-08-14 (+30d) | 13d → 35d |  | -172d → -149d |  |  |
| 100 | **Aislación en muros** |  | 2026-08-04 → 2026-09-21 (+48d) | 195d → 228d? |  | -128d → -161d |  |  |
| 103 | Impermeabilización Membrana geotextil | 2026-07-29 → 2026-09-15 (+48d) | 2026-08-04 → 2026-09-21 (+48d) | 5d → 5d? |  | -136d → -169d | 251 → 251, 137 |  |
| 104 | Ladrillon Rafa | 2026-07-29 → 2026-09-15 (+48d) | 2026-08-04 → 2026-09-21 (+48d) | 5d → 5d? |  | -136d → -169d | 251 → 251, 137 |  |
| 110 | **Carpeta de nivelación** | 2026-04-29 A | 2026-08-14 → 2026-08-25 (+11d) | 75d → 81d | 0% → 85% | -211d → -18d |  |  |
| 111 | ✔Hormigón alivianado - Relleno PB Y PA | 2026-04-29 A | 2026-07-29 A |  | 0% → 100% | -211d → none |  | was named Hormigón alivianado - Relleno PB Y PA |
| 112 | Carpeta de Nivelación Interior esp. 4cm PB. | 2026-07-30 → 2026-08-07 (+8d) | 2026-08-14 → 2026-08-25 (+11d) |  |  |  | 111 → 111FS+6d |  |
| 113 | **Cubierta** |  | 2026-07-20 → 2026-08-19 (+30d) | 21d → 42d | 43% → 64% | -12d → -33d |  |  |
| 116 | Impermeabilización* | 2026-07-02 → 2026-08-12 (+41d) | 2026-07-20 → 2026-08-19 (+30d) | 12d → 5d |  | -125d → -146d | 115 → 115FS+28d |  |
| 117 | **Revoques y terminaciones de muros** |  | 2026-09-03 → 2026-09-28 (+25d) | 228d → 245d |  | -108d → -125d |  |  |
| 120 | Revoque exterior c/ azotado hidrof. Cementicio en mamp. PA | 2026-07-08 → 2026-08-10 (+33d) | 2026-07-29 → 2026-08-31 (+33d) |  |  | -132d → -154d |  |  |
| 123 | Revoque Grueso Interior esp.1,5cm PA | 2026-07-08 → 2026-08-10 (+33d) | 2026-07-20 → 2026-08-20 (+31d) |  |  | -230d → -162d |  |  |
| 124 | Colocación de premarcos | 2026-07-03 → 2026-08-05 (+33d) | 2026-07-17 → 2026-08-14 (+28d) | 10d → 8d |  | -230d → -144d |  |  |
| 125 | Revoques finos | 2026-08-06 → 2026-09-01 (+26d) | 2026-08-27 → 2026-09-21 (+25d) |  |  | -172d → -189d |  |  |
| 126 | Enlucido de Yeso PB | 2026-08-06 → 2026-09-01 (+26d) | 2026-09-03 → 2026-09-28 (+25d) |  |  | -157d → -174d |  |  |
| 127 | Enlucido de Yeso PA | 2026-08-06 → 2026-09-01 (+26d) | 2026-08-14 → 2026-09-09 (+26d) |  |  | -144d → -161d |  |  |
| 128 | **Cielorrasos** | 2026-06-26 → 2026-09-01 (+67d) | 2026-09-10 → 2026-10-16 (+36d) | 53d → 33d |  | -162d → -187d |  |  |
| 129 | X C2- Cieloraso aplicado con terminacion de yeso |  |  |  |  |  |  | was named C2- Cieloraso aplicado con terminacion de yeso |
| 130 | X Revoque Grueso en cielorraso Interior esp.1,5cm |  |  |  |  |  |  | was named Revoque Grueso en cielorraso Interior esp.1,5cm |
| 131 | X C4- Cielorraso suspendido anti humedad, con buña perimetral | 2026-07-27 → 2026-08-06 (+10d) | 2026-08-14 → 2026-08-27 (+13d) |  |  | -144d → -152d |  | was named C4- Cielorraso suspendido anti humedad, con buña perimetral |
| 132 | X C5- Cielorraso suspendido con buña perimetral | 2026-07-27 → 2026-08-06 (+10d) | 2026-08-14 → 2026-08-27 (+13d) |  |  | -144d → -152d |  | was named C5- Cielorraso suspendido con buña perimetral |
| 133 | Cielorraso de Madera (en donde esta la cubierta metalica) | 2026-07-27 → 2026-09-01 (+36d) | 2026-09-10 → 2026-10-16 (+36d) |  |  | -162d → -187d | 157 → 157FS+17d |  |
| 134 | X C4- Cielorraso suspendido anti humedad, con buña perimetral | 2026-08-06 → 2026-09-01 (+26d) | 2026-08-27 → 2026-09-21 (+25d) |  |  | -152d → -169d |  | was named C4- Cielorraso suspendido anti humedad, con buña perimetral |
| 135 | X C5- Cielorraso suspendido con buña perimetral | 2026-08-06 → 2026-09-01 (+26d) | 2026-08-27 → 2026-09-21 (+25d) |  |  | -152d → -169d |  | was named C5- Cielorraso suspendido con buña perimetral |
| 136 | **Escaleras** | 2026-07-20 → 2026-09-01 (+43d) | 2026-07-31 → 2026-09-14 (+45d) |  |  | -134d → -169d |  |  |
| 137 | Escaleras de Circulación Interior H° PB a PA | 2026-07-20 → 2026-09-01 (+43d) | 2026-07-31 → 2026-09-14 (+45d) |  |  | -134d → -169d | 76, 89FS+15d → 76, 89FS+45d |  |
| 138 | **Asador** | 2026-07-29 → 2026-08-03 (+5d) | 2026-07-31 → 2026-08-14 (+14d) | 3d → 10d |  | -134d → -144d |  |  |
| 139 | Asador | 2026-07-29 → 2026-08-03 (+5d) | 2026-07-31 → 2026-08-14 (+14d) | 3d → 10d |  | -134d → -144d | 137FF → none | constraint none → start no earlier than 2026-08-03 |
| 144 | **Veredas perimetrales** | 2026-07-29 → 2026-08-20 (+22d) | 2026-07-30 → 2026-08-21 (+22d) |  |  | -133d → -148d |  |  |
| 145 | Veredas Perimetrales con Cordon - Ancho 40cm | 2026-07-29 → 2026-08-20 (+22d) | 2026-07-30 → 2026-08-21 (+22d) |  |  | -133d → -148d |  |  |
| 146 | **HERRERIA** |  | 2026-08-14 → 2026-08-31 (+17d) | 144d → 154d | 27% → 82% | -39d → -17d |  |  |
| 150 | ✔VM1 - PW460 |  |  |  |  |  |  | was named VM1 - PW460 |
| 151 | ✔VM2 - PW360 |  |  |  |  |  |  | was named VM2 - PW360 |
| 152 | ✔VM3 - PW250 | 2026-07-16 → 2026-07-10 A (-6d) | 2026-07-24 → 2026-07-20 A (-4d) |  | 0% → 100% | -129d → none |  | was named VM3 - PW250 |
| 153 | ✔VM1 - PW460 | 2026-07-14 → 2026-07-09 A (-5d) | 2026-07-20 → 2026-07-15 A (-5d) |  | 0% → 100% | -125d → none |  | was named VM1 - PW460 |
| 154 | ✔VM2 - PW360 | 2026-07-14 → 2026-07-09 A (-5d) | 2026-07-20 → 2026-07-15 A (-5d) |  | 0% → 100% | -125d → none |  | was named VM2 - PW360 |
| 155 | ✔Estructura con correas y chapa. pendi.:15% - Cantidad 2 | 2026-06-22 A | 2026-07-24 → 2026-08-05 A (+12d) | 24d → 32d | 0% → 100% | -174d → none |  | was named Estructura con correas y chapa. pendi.:15% - Cantidad 2 |
| 156 | Estructura con correas y chapa. Pendi.:15% | 2026-07-16 → 2026-08-13 (+28d) | 2026-08-05 → 2026-08-31 (+26d) | 15d → 12d |  | -172d → -189d | 98 → 155FS+5d |  |
| 157 | ✔Subestructura para cieloraso. | 2026-07-13 → 2026-07-23 A (+10d) | 2026-07-24 → 2026-08-05 A (+12d) |  | 0% → 100% | -174d → none |  | was named Subestructura para cieloraso. |
| 158 | Subestructura para cieloraso. | 2026-07-30 → 2026-08-25 (+26d) | 2026-08-05 → 2026-08-31 (+26d) |  |  | -162d → -169d |  |  |
| 159 | **Conductos Metálicos** | 2026-06-23 → 2026-08-12 (+50d) | 2026-08-14 → 2026-08-19 (+5d) | 38d → 5d |  | -144d → -146d |  |  |
| 160 | Asador PB - conducto descarga 2,30m - 30 diam. | 2026-06-23 → 2026-08-12 (+50d) | 2026-06-25 → 2026-08-14 (+50d) |  |  |  | 89FF → 139FF |  |
| 161 | Hogar Exterior PB - conducto descarga 2,30m - 30 diametro. | 2026-06-24 → 2026-08-17 (+54d) | 2026-06-25 → 2026-08-19 (+55d) |  |  | -144d → -146d | 160FF → 142 |  |
| 162 | Calefactor Tromen - conducto descarga 4,60 - 30 diametro. | 2026-08-13 → 2026-08-17 (+4d) | 2026-08-14 → 2026-08-19 (+5d) |  |  | -144d → -146d | 161FS+33d → 142 |  |
| 163 | **INSTALACIONES** |  | 2026-12-15 → 2026-12-03 (-12d) | 278d? → 271d? | 73% → 78% | -88d → -66d |  |  |
| 164 | **Instalaciones Pluviales** |  | 2026-08-07 → 2026-08-31 (+24d) | 144d → 159d | 90% → 95% |  |  |  |
| 165 | Desagues pluviales (sin zinguería) |  | 2026-08-07 → 2026-08-31 (+24d) | 95d → 90d | 90% → 95% | -139d → -154d |  |  |
| 166 | **Instalaciones Cloacales** |  | 2026-12-10 → 2026-11-30 (-10d) | 275d → 268d |  | -115d → -108d |  |  |
| 168 | Instalación de cañeria principal exterior - Hasta cámara impulsión | 2026-07-29 → 2026-09-04 (+37d) | 2026-08-04 → 2026-09-10 (+37d) |  |  | -136d → -172d | 251 → 251FS+11d |  |
| 170 | Colocación de cámara impulsión (según detalle técnico) | 2026-07-29 → 2026-09-11 (+44d) | 2026-08-11 → 2026-09-24 (+44d) |  |  | -141d → -172d | 169, 251 → 168 |  |
| 172 | Colocación de artefactos | 2026-12-01 → 2026-11-20 (-11d) | 2026-12-10 → 2026-11-30 (-10d) |  |  | -224d → -217d |  |  |
| 173 | **Instalaciones de Agua** |  | 2026-12-10 → 2026-11-30 (-10d) | 222d → 215d |  | -85d → -78d |  |  |
| 175 | Instalación de Agua para un baño en PA | 2026-07-21 → 2026-08-21 (+31d) | 2026-08-10 → 2026-09-10 (+31d) |  |  | -140d → -162d |  |  |
| 176 | Alimentación de agua para válvulas de inodoros desde tanques | 2026-07-21 → 2026-08-21 (+31d) | 2026-08-10 → 2026-09-10 (+31d) |  |  | -140d → -162d |  |  |
| 178 | Instalación de bomba hidroneumática bajo tanque | 2026-12-03 → 2026-11-24 (-9d) | 2026-12-10 → 2026-11-30 (-10d) |  |  | -224d → -217d |  |  |
| 179 | Colocación de artefactos | 2026-12-01 → 2026-11-20 (-11d) | 2026-12-10 → 2026-11-30 (-10d) |  |  | -224d → -217d |  |  |
| 180 | **Instalaciones de Gas** |  | 2026-12-15 → 2026-12-03 (-12d) | 140d → 133d | 20% → 79% | -130d → -88d |  |  |
| 182 | ✔Factibilidad de gas y plano aprobación de cañerías. | 2026-06-10 A | 2026-07-17 → 2026-07-29 A (+12d) | 27d → 35d | 0% → 100% | -124d → none |  | was named Factibilidad de gas y plano aprobación de cañerías. |
| 183 | Segunda inspección parcial de cañerías y ventilaciones. | 2026-07-17 → 2026-08-13 (+27d) | 2026-07-17 → 2026-08-13 (+27d) |  |  | -124d → -145d | 182 → 182FS+11d |  |
| 184 | Solicitud de servicio domiciliario (no incluye aranceles Ecogas). | 2026-12-14 → 2026-12-02 (-12d) | 2026-12-15 → 2026-12-03 (-12d) |  |  | -227d → -220d |  |  |

| ID | Task | Start | Finish | Duration | Complete | Total float | Predecessors | Other |
| --- | --- | --- | --- | --- | --- | --- | --- | --- |
| 185 | Final de gas con artefactos colocados. | 2026-12-09 → 2026-11-27 (-12d) | 2026-12-11 → 2026-12-01 (-10d) |  |  | -227d → -220d |  |  |
| 186 | Ventilaciones para gas. Conductos y rejillas. | 2026-12-01 → 2026-08-14 (-109d) | 2026-12-02 → 2026-08-17 (-107d) |  |  | -219d → -145d | 242 → 183 |  |
| 187 | Colocación de artefactos | 2026-12-01 → 2026-11-20 (-11d) | 2026-12-07 → 2026-11-26 (-11d) |  |  | -227d → -220d |  |  |
| 188 | **Instalaciones de Aire Acondicionado** | 2026-05-19 A → 2026-08-17 (+90d) | 2026-12-15 → 2026-12-03 (-12d) | 145d? → 76d? | 19% → 0% | -140d → -220d |  |  |
| 189 | AA Living Comedor - 3500frig | 2026-12-09 → 2026-11-27 (-12d) | 2026-12-15 → 2026-12-03 (-12d) |  |  | -227d → -220d |  |  |
| 190 | AA Suite - 2500frig | 2026-12-09 → 2026-11-27 (-12d) | 2026-12-15 → 2026-12-03 (-12d) |  |  | -227d → -220d |  |  |
| 191 | AA DORMITORIO 2 - PA - 2500frig | 2026-12-09 → 2026-11-27 (-12d) | 2026-12-15 → 2026-12-03 (-12d) |  |  | -227d → -220d |  |  |
| 192 | AA Dormitorio 3 - PA - 2500frig | 2026-12-09 → 2026-11-27 (-12d) | 2026-12-15 → 2026-12-03 (-12d) |  |  | -227d → -220d |  |  |
| 193 | Kit Instalacion AA | 2026-05-19 A → 2026-08-17 (+90d) | 2026-05-26 A → 2026-08-24 (+90d) |  | 100% → 0% | none → -149d | 171 → 98 |  |
| 194 | Equipos de AA - Dormitorios PB + PA | 2026-12-09 → 2026-11-27 (-12d) | 2026-12-09 → 2026-11-27 (-12d) |  |  | -223d → -216d |  |  |
| 195 | Equipos de AA - Cocina-Comedor | 2026-12-09 → 2026-11-27 (-12d) | 2026-12-09 → 2026-11-27 (-12d) |  |  | -223d → -216d |  |  |
| 196 | **Instalación de Calefacción** | 2026-07-30 A | 2026-08-20 → 2026-08-19 (-1d) | 15d → 14d | 0% → 29% | -147d → -4d |  |  |
| 197 | Colector |  | 2026-08-05 → 2026-08-12 (+7d) | 5d → 10d |  | -137d → -142d |  |  |
| 198 | Piso Radiante Planta Baja | 2026-08-06 → 2026-07-30 A (-7d) | 2026-08-20 → 2026-08-12 A (-8d) |  | 0% → 100% | -147d → none | 156, 111 → 111 |  |
| 199 | Radiadores PB y PA |  | 2026-08-12 → 2026-08-19 (+7d) | 10d → 14d |  | -142d → -146d | 111 → 156FS-22d | was named Piso Radiante Planta Alta |
| 200 | **INSTALACIONES ELECTRICAS** |  | 2026-12-18 → 2026-12-03 (-15d) | 309d → 299d | 65% → 74% | -111d → -61d |  |  |
| 203 | Canalizacion en muros y amurados de cajas. |  | 2026-07-10 → 2026-09-07 (+59d) | 120d → 150d | 20% → 50% | -215d → -165d | 91, 92, 89FF+10d → 91, 92, 89FF+10d, 98FF+15d |  |
| 204 | Cableado General 220V | 2026-12-01 → 2026-11-20 (-11d) | 2026-12-15 → 2026-12-03 (-12d) |  |  | -230d → -220d |  |  |
| 205 | Armado de Tomas y Puntos de Encendido. | 2026-11-09 → 2026-10-15 (-25d) | 2026-11-13 → 2026-10-21 (-23d) |  |  | -207d → -190d | 234 → 234FS-10d |  |
| 206 | Armado de Tablero en General. | 2026-12-16 → 2026-11-12 (-34d) | 2026-12-18 → 2026-11-16 (-32d) |  |  | -230d → -208d | 204 → 204FS-15d |  |
| 208 | **PISOS Y REVESTIMIENTOS** |  | 2026-11-26 → 2026-11-19 (-7d) | 120d → 115d |  | -215d → -210d |  |  |
| 209 | **Pisos Interiores** | 2026-07-27 → 2026-08-26 (+30d) | 2026-09-03 → 2026-09-22 (+19d) | 28d → 20d |  | -174d → -210d |  |  |
| 210 | Cocina - Living - Comedor - Porcelanato 60x120 | 2026-07-27 → 2026-08-26 (+30d) | 2026-08-24 → 2026-09-22 (+29d) |  |  | -174d → -210d | 157 → 112 |  |
| 211 | Galeria Quincho - Porcelanato 60x120 | 2026-07-27 → 2026-08-26 (+30d) | 2026-08-24 → 2026-09-22 (+29d) |  |  | -154d → -175d | 157 → 112 |  |
| 212 | Baños - Lavadero - Despensa - Pasillos - Porcelanatos 60x60 | 2026-07-27 → 2026-08-26 (+30d) | 2026-08-24 → 2026-09-22 (+29d) |  |  | -154d → -175d | 157 → 112 |  |
| 213 | Dormitorios - Porcelanato 60x120 | 2026-07-27 → 2026-08-26 (+30d) | 2026-08-24 → 2026-09-22 (+29d) |  |  | -149d → -170d | 157 → 112 |  |
| 214 | Baño - Porcelanatos 60x60 | 2026-08-06 → 2026-08-26 (+20d) | 2026-09-03 → 2026-09-22 (+19d) |  |  | -162d → -175d | 158 → 112 |  |
| 215 | Dormitorio - Porcelanato 60x120 | 2026-08-06 → 2026-08-26 (+20d) | 2026-09-03 → 2026-09-22 (+19d) |  |  | -162d → -175d | 158 → 112 |  |
| 216 | **Pisos Exteriores** | 2026-08-25 → 2026-10-15 (+51d) | 2026-09-21 → 2026-11-11 (+51d) |  |  | -174d → -210d |  |  |
| 217 | Ingreso Cochera- Adoquines | 2026-08-25 → 2026-10-15 (+51d) | 2026-09-21 → 2026-11-11 (+51d) |  |  | -174d → -210d | 210, 251 → 210FS+15d, 251 |  |
| 218 | Cochera - Sala de Maquinas - Deposito - (falta definir revestimiento) | 2026-08-25 → 2026-10-15 (+51d) | 2026-09-21 → 2026-11-11 (+51d) |  |  | -169d → -205d | 210, 251 → 210FS+15d, 251 |  |
| 219 | Ingreso Peatonal (falta definir revestimiento) | 2026-08-25 → 2026-10-15 (+51d) | 2026-09-21 → 2026-11-11 (+51d) |  |  | -169d → -205d | 210, 251 → 210FS+15d, 251 |  |
| 220 | **Zocalos** | 2026-08-25 → 2026-09-23 (+29d) | 2026-09-28 → 2026-11-19 (+52d) | 25d → 40d |  | -174d → -210d |  |  |
| 221 | Zocalos: Cochera | 2026-09-22 → 2026-11-12 (+51d) | 2026-09-28 → 2026-11-19 (+52d) |  |  | -174d → -210d |  |  |
| 222 | Zocalos: Galería | 2026-08-25 → 2026-09-23 (+29d) | 2026-08-31 → 2026-09-29 (+29d) |  |  | -154d → -175d |  |  |
| 223 | Zocalos: Cocina-Living-Comedor | 2026-08-25 → 2026-09-23 (+29d) | 2026-08-31 → 2026-09-29 (+29d) |  |  | -154d → -175d |  |  |
| 224 | Zocalos: Lavadero-Despensa-Baños-Pasillo | 2026-08-25 → 2026-09-23 (+29d) | 2026-08-31 → 2026-09-29 (+29d) |  |  | -154d → -175d |  |  |
| 225 | Zocalos: Dormitorio | 2026-09-04 → 2026-09-23 (+19d) | 2026-09-10 → 2026-09-29 (+19d) |  |  | -162d → -175d |  |  |
| 226 | Zocalos: Baños | 2026-09-04 → 2026-09-23 (+19d) | 2026-09-10 → 2026-09-29 (+19d) |  |  | -162d → -175d |  |  |
| 227 | Zocalos: Dormitorio | 2026-09-04 → 2026-09-23 (+19d) | 2026-09-10 → 2026-09-29 (+19d) |  |  | -162d → -175d |  |  |
| 228 | **Revestimientos Exteriores** |  | 2026-11-26 → 2026-09-15 (-72d) | 120d → 70d |  | -215d → -165d |  |  |
| 229 | Rev. De Piedra a Definir - Exterior. |  | 2026-11-26 → 2026-09-15 (-72d) | 120d → 70d |  | -215d → -165d | 203FS-24d → 203FS-64d |  |
| 230 | Rev. De Piedra a Definir - Interior. |  | 2026-11-26 → 2026-09-15 (-72d) | 120d → 70d |  | -215d → -165d | 203FS-24d → 203FS-64d |  |
| 231 | **PINTURA** | 2026-08-06 → 2026-09-01 (+26d) | 2026-11-06 → 2026-10-28 (-9d) | 65d → 41d |  | -202d → -195d |  |  |
| 232 | **Pintura Interior** | 2026-10-09 → 2026-09-30 (-9d) | 2026-11-06 → 2026-10-28 (-9d) |  |  | -207d → -199d |  |  |
| 233 | Latex Interior PB | 2026-10-09 → 2026-09-30 (-9d) | 2026-11-06 → 2026-10-28 (-9d) |  |  | -206d → -199d |  |  |
| 234 | Latex Interior PA | 2026-10-09 → 2026-09-30 (-9d) | 2026-11-06 → 2026-10-28 (-9d) |  |  | -207d → -195d |  |  |
| 235 | Latex Cieloraso | 2026-10-09 → 2026-09-30 (-9d) | 2026-11-06 → 2026-10-28 (-9d) |  |  | -202d → -195d |  |  |
| 236 | **Pintura Exterior** | 2026-08-06 → 2026-09-01 (+26d) | 2026-09-24 → 2026-10-20 (+26d) |  |  | -172d → -189d |  |  |
| 237 | Revestimiento Plastico | 2026-08-28 → 2026-09-22 (+25d) | 2026-09-24 → 2026-10-20 (+26d) |  |  | -172d → -189d |  |  |
| 238 | Esmalte Sintetico | 2026-08-06 → 2026-09-01 (+26d) | 2026-08-27 → 2026-09-21 (+25d) |  |  | -152d → -169d |  |  |
| 239 | **CARPINTERIAS** | 2026-11-09 → 2026-10-29 (-11d) | 2026-11-30 → 2026-11-20 (-10d) | 15d → 16d |  | -218d → -211d |  |  |
| 240 | Puertas de madera | 2026-11-09 → 2026-10-29 (-11d) | 2026-11-12 → 2026-11-03 (-9d) |  |  | -206d → -199d |  |  |
| 241 | Puertas de aluminio | 2026-11-09 → 2026-11-16 (+7d) | 2026-11-12 → 2026-11-20 (+8d) |  |  | -206d → -211d | 233 → none | constraint none → start no earlier than 2026-11-16 |
| 242 | Aberturas de aluminio* | 2026-11-26 → 2026-11-16 (-10d) | 2026-11-30 → 2026-11-19 (-11d) |  |  | -230d → -220d | 124FS+90d → none | constraint none → start no earlier than 2026-11-16 |
| 248 | Fin Obra | 2026-12-18 → 2026-12-03 (-15d) | 2026-12-18 → 2026-12-03 (-15d) |  |  | -8d → 2d |  |  |
| 249 | Postventa Pasiva | 2026-12-18 → 2026-12-03 (-15d) | 2027-12-13 → 2027-11-28 (-15d) |  |  | -1008d → -963d |  |  |
| 250 | Fin Postventa | 2027-12-13 → 2027-11-28 (-15d) | 2027-12-13 → 2027-11-28 (-15d) |  |  | -231d → -221d |  |  |
| 251 | Definición Proyecto de Paisajismo |  | 2026-07-28 → 2026-08-19 (+22d) | 100d → 115d |  | -197d → -171d |  |  |
| 252 | Firma Acta recepción Provisoria | 2026-12-18 → 2026-12-03 (-15d) | 2026-12-18 → 2026-12-03 (-15d) |  |  |  |  |  |
| 253 | Firma Acta recepcion Definitiva | 2027-12-13 → 2027-11-28 (-15d) | 2027-12-13 → 2027-11-28 (-15d) |  |  |  |  |  |

## Version 3 (saved 2026-10-14)

Last finish 2027-11-28 → 2027-11-26 (-2d). Complete tasks 111 → 143.

Added:

| ID | Task | Duration | Start | Finish | Constraint | Resources |
| --- | --- | --- | --- | --- | --- | --- |
| 78 | Tabiques hormigon Paisajismo | 36d | 2026-09-25 | 2026-11-13 | start no earlier than 2026-09-25 | Alexandra Arevalo |
| 127 | Revestimiento plastico Interior | 22d | 2026-10-27 | 2026-11-25 | start no earlier than 2026-10-27 | Alexandra Arevalo |

Changed:

| ID | Task | Start | Finish | Duration | Complete | Total float | Predecessors | Other |
| --- | --- | --- | --- | --- | --- | --- | --- | --- |
| 1 | **VIVIENDA JULIETA SANTIAGO** |  | 2027-11-28 → 2027-11-26 (-2d) |  | 40% → 46% |  |  |  |
| 29 | **Obra Cronograma Alex** |  | 2026-12-03 → 2026-12-01 (-2d) | 427d? → 425d? | 70% → 79% | -3d → -1d |  |  |
| 72 | **Tabique de hormigon visto** |  | 2026-07-08 A → 2026-11-13 (+128d) | 241d → 330d | 100% → 78% | none → -89d |  |  |
| 91 | **Mampostería** |  | 2026-08-14 A |  | 58% → 100% | -114d → none |  |  |
| 98 | Mamposteria Ladrillo Hueco Portante 12x18x33 (PA) | 2026-06-26 A | 2026-08-14 A |  | 0% → 100% | -162d → none |  |  |
| 99 | Mamposteria Ladrillo Hueco Portante 18x18x33 (PA) | 2026-06-26 A | 2026-08-14 A |  | 0% → 100% | -149d → none |  |  |
| 101 | **Aislación en muros** |  | 2026-09-21 → 2026-10-14 A (+23d) | 228d? → 244d | 41% → 100% | -161d → none |  |  |
| 104 | Impermeabilización Membrana geotextil | 2026-09-15 A | 2026-09-21 → 2026-10-14 A (+23d) | 5d? → 22d | 0% → 100% | -169d → none |  |  |
| 105 | Ladrillon Rafa | 2026-09-15 A | 2026-09-21 → 2026-10-14 A (+23d) | 5d? → 22d | 0% → 100% | -169d → none |  |  |
| 111 | **Carpeta de nivelación** |  | 2026-08-25 A |  | 85% → 100% | -18d → none |  |  |
| 113 | Carpeta de Nivelación Interior esp. 4cm PB. | 2026-08-07 A | 2026-08-25 A |  | 0% → 100% | -210d → none |  |  |
| 114 | **Cubierta** |  | 2026-08-19 A |  | 64% → 100% | -33d → none |  |  |
| 117 | Impermeabilización* | 2026-08-12 A | 2026-08-19 A |  | 0% → 100% | -146d → none |  |  |
| 118 | **Revoques y terminaciones de muros** |  | 2026-09-28 → 2026-11-25 (+58d) | 245d → 285d | 73% → 81% | -125d → -60d |  |  |
| 121 | Revoque exterior c/ azotado hidrof. Cementicio en mamp. PA | 2026-08-10 A | 2026-08-31 A |  | 0% → 100% | -154d → none |  |  |
| 124 | Revoque Grueso Interior esp.1,5cm PA | 2026-08-10 A | 2026-08-20 A |  | 0% → 100% | -162d → none |  |  |
| 125 | Colocación de premarcos | 2026-08-05 A | 2026-08-14 A |  | 0% → 100% | -144d → none |  |  |
| 126 | Revoques finos |  | 2026-09-21 → 2026-10-16 (+25d) | 15d → 33d |  | -189d → -187d |  |  |
| 128 | Enlucido de Yeso PB - No va |  |  |  |  |  |  | was named Enlucido de Yeso PB |
| 129 | Enlucido de Yeso PA - No Va |  |  |  |  |  |  | was named Enlucido de Yeso PA |
| 138 | **Escaleras** | 2026-09-01 A | 2026-09-14 A |  | 0% → 100% | -169d → none |  |  |
| 139 | Escaleras de Circulación Interior H° PB a PA | 2026-09-01 A | 2026-09-14 A |  | 0% → 100% | -169d → none |  |  |
| 140 | **Asador** | 2026-08-03 A | 2026-08-14 A |  | 0% → 100% | -144d → none |  |  |
| 141 | Asador | 2026-08-03 A | 2026-08-14 A |  | 0% → 100% | -144d → none |  |  |
| 142 | **Revestimiento de hormigón** |  | 2026-08-14 A |  | 33% → 100% | -5d → none |  |  |
| 143 | Revestimiento de hormigón en Asador | 2026-08-10 A | 2026-08-14 A |  | 0% → 100% | -144d → none |  |  |
| 144 | Revestimiento de hormigón en Hogar interior | 2026-08-10 A | 2026-08-14 A |  | 0% → 100% | -146d → none |  |  |
| 146 | **Veredas perimetrales** | 2026-08-20 → 2026-10-30 (+71d) | 2026-08-21 → 2026-11-02 (+73d) |  |  | -148d → -198d |  |  |
| 147 | Veredas Perimetrales con Cordon - Ancho 40cm | 2026-08-20 → 2026-10-30 (+71d) | 2026-08-21 → 2026-11-02 (+73d) |  |  | -148d → -198d |  |  |
| 148 | **HERRERIA** |  | 2026-08-31 A |  | 82% → 100% | -17d → none |  |  |
| 158 | Estructura con correas y chapa. Pendi.:15% | 2026-08-13 A | 2026-08-31 A |  | 0% → 100% | -189d → none |  |  |
| 161 | **Conductos Metálicos** | 2026-08-12 A | 2026-08-19 A |  | 0% → 100% | -146d → none |  |  |
| 162 | Asador PB - conducto descarga 2,30m - 30 diam. | 2026-08-12 A | 2026-08-14 A |  | 0% → 100% | -144d → none |  |  |
| 163 | Hogar Exterior PB - conducto descarga 2,30m - 30 diametro. | 2026-08-17 A | 2026-08-19 A |  | 0% → 100% | -146d → none |  |  |
| 164 | Calefactor Tromen - conducto descarga 4,60 - 30 diametro. | 2026-08-17 A | 2026-08-19 A |  | 0% → 100% | -146d → none |  |  |
| 165 | **INSTALACIONES** |  | 2026-12-03 → 2026-12-01 (-2d) | 271d? → 269d? | 78% → 89% | -66d → -33d |  |  |
| 166 | **Instalaciones Pluviales** |  | 2026-08-31 A |  | 95% → 100% | 0d → none |  |  |
| 167 | Desagues pluviales (sin zinguería) |  | 2026-08-31 A |  | 95% → 100% | -154d → none |  |  |
| 168 | **Instalaciones Cloacales** |  | 2026-11-30 → 2026-11-26 (-4d) | 268d → 266d | 90% → 92% | -108d → -30d |  |  |
| 170 | Instalación de cañeria principal exterior - Hasta cámara impulsión | 2026-09-04 → 2026-10-08 A (+34d) | 2026-09-10 → 2026-10-14 A (+34d) |  | 0% → 100% | -172d → none | 253FS+11d → none | constraint start no earlier than 2026-07-15 → finish no earlier than 2026-10-14 |
| 172 | Colocación de cámara impulsión (según detalle técnico) DIMOTEC | 2026-09-11 → 2026-10-30 (+49d) | 2026-09-24 → 2026-11-12 (+49d) |  |  | -172d → -206d | 170 → 170FS+11d | was named Colocación de cámara impulsión (según detalle técnico) |
| 174 | Colocación de artefactos | 2026-11-20 → 2026-11-17 (-3d) | 2026-11-30 → 2026-11-26 (-4d) |  |  | -217d → -215d |  |  |
| 175 | **Instalaciones de Agua** |  | 2026-11-30 → 2026-11-26 (-4d) | 215d → 213d | 75% → 93% | -78d → -53d |  |  |
| 177 | Instalación de Agua para un baño en PA | 2026-08-21 A | 2026-09-10 A |  | 0% → 100% | -162d → none |  |  |
| 178 | Alimentación de agua para válvulas de inodoros desde tanques | 2026-08-21 A | 2026-09-10 A |  | 0% → 100% | -162d → none |  |  |
| 180 | Instalación de bomba hidroneumática bajo tanque | 2026-11-24 → 2026-11-20 (-4d) | 2026-11-30 → 2026-11-26 (-4d) |  |  | -217d → -215d |  |  |
| 181 | Colocación de artefactos | 2026-11-20 → 2026-11-17 (-3d) | 2026-11-30 → 2026-11-26 (-4d) |  |  | -217d → -215d |  |  |
| 182 | **Instalaciones de Gas** |  | 2026-12-03 → 2026-12-01 (-2d) | 133d → 131d |  | -88d → -86d |  |  |
| 185 | Segunda inspección parcial de cañerías y ventilaciones. | 2026-08-13 → 2026-11-06 (+85d) | 2026-08-13 → 2026-11-06 (+85d) |  |  | -145d → -204d | 184FS+11d → 184FS+70d |  |
| 186 | Solicitud de servicio domiciliario (no incluye aranceles Ecogas). | 2026-12-02 → 2026-11-30 (-2d) | 2026-12-03 → 2026-12-01 (-2d) |  |  | -220d → -218d |  |  |
| 187 | Final de gas con artefactos colocados. | 2026-11-27 → 2026-11-25 (-2d) | 2026-12-01 → 2026-11-27 (-4d) |  |  | -220d → -218d |  |  |
| 188 | Ventilaciones para gas. Conductos y rejillas. | 2026-08-14 → 2026-11-09 (+87d) | 2026-08-17 → 2026-11-10 (+85d) |  |  | -145d → -204d |  |  |
| 189 | Colocación de artefactos | 2026-11-20 → 2026-11-17 (-3d) | 2026-11-26 → 2026-11-24 (-2d) |  |  | -220d → -218d |  |  |
| 190 | **Instalaciones de Aire Acondicionado** | 2026-08-17 A | 2026-12-03 → 2026-12-01 (-2d) | 76d? → 74d? | 0% → 19% | -220d → -69d |  |  |
| 191 | AA Living Comedor - 3500frig | 2026-11-27 → 2026-11-25 (-2d) | 2026-12-03 → 2026-12-01 (-2d) |  |  | -220d → -218d |  |  |
| 192 | AA Suite - 2500frig | 2026-11-27 → 2026-11-25 (-2d) | 2026-12-03 → 2026-12-01 (-2d) |  |  | -220d → -218d |  |  |
| 193 | AA DORMITORIO 2 - PA - 2500frig | 2026-11-27 → 2026-11-25 (-2d) | 2026-12-03 → 2026-12-01 (-2d) |  |  | -220d → -218d |  |  |
| 194 | AA Dormitorio 3 - PA - 2500frig | 2026-11-27 → 2026-11-25 (-2d) | 2026-12-03 → 2026-12-01 (-2d) |  |  | -220d → -218d |  |  |
| 195 | Kit Instalacion AA | 2026-08-17 A | 2026-08-24 A |  | 0% → 100% | -149d → none |  |  |
| 196 | Equipos de AA - Dormitorios PB + PA | 2026-11-27 → 2026-11-25 (-2d) | 2026-11-27 → 2026-11-25 (-2d) |  |  | -216d → -214d |  |  |
| 197 | Equipos de AA - Cocina-Comedor | 2026-11-27 → 2026-11-25 (-2d) | 2026-11-27 → 2026-11-25 (-2d) |  |  | -216d → -214d |  |  |
| 198 | **Instalación de Calefacción** |  | 2026-08-19 A |  | 29% → 100% | -4d → none |  |  |
| 199 | Colector | 2026-07-30 A | 2026-08-12 A |  | 0% → 100% | -142d → none |  |  |
| 201 | Radiadores PB y PA | 2026-07-30 A | 2026-08-19 A |  | 0% → 100% | -146d → none |  |  |
| 202 | **INSTALACIONES ELECTRICAS** |  | 2026-12-03 → 2026-11-27 (-6d) | 299d → 295d | 74% → 89% | -61d → -57d |  |  |
| 205 | Canalizacion en muros y amurados de cajas. |  | 2026-09-07 A |  | 50% → 100% | -165d → none |  |  |
| 206 | Cableado General 220V | 2026-11-20 → 2026-10-14 (-37d) | 2026-12-03 → 2026-10-30 (-34d) | 10d → 13d |  | -220d → -215d | 244 → none | constraint none → start no earlier than 2026-10-14 |
| 207 | Armado de Tomas y Puntos de Encendido. | 2026-10-15 → 2026-10-12 (-3d) | 2026-10-21 → 2026-10-19 (-2d) |  |  | -190d → -188d |  |  |
| 208 | Armado de Tablero en General. | 2026-11-12 → 2026-10-09 (-34d) | 2026-11-16 → 2026-10-14 (-33d) |  |  | -208d → -185d |  |  |
| 209 | Instalación de Artefactos | 2026-12-03 → 2026-11-02 (-31d) | 2026-12-03 → 2026-11-27 (-6d) | 0d → 20d |  | -220d → -216d |  |  |

| ID | Task | Start | Finish | Duration | Complete | Total float | Predecessors | Other |
| --- | --- | --- | --- | --- | --- | --- | --- | --- |
| 210 | **PISOS Y REVESTIMIENTOS** | 2026-06-08 A | 2026-11-19 → 2026-11-27 (+8d) | 115d → 121d | 0% → 35% | -210d → -20d |  |  |
| 211 | **Pisos Interiores** | 2026-08-26 A | 2026-09-22 A |  | 0% → 100% | -210d → none |  |  |
| 212 | Cocina - Living - Comedor - Porcelanato 60x120 | 2026-08-26 A | 2026-09-22 A |  | 0% → 100% | -210d → none |  |  |
| 213 | Galeria Quincho - Porcelanato 60x120 | 2026-08-26 A | 2026-09-22 A |  | 0% → 100% | -175d → none |  |  |
| 214 | Baños - Lavadero - Despensa - Pasillos - Porcelanatos 60x60 | 2026-08-26 A | 2026-09-22 A |  | 0% → 100% | -175d → none |  |  |
| 215 | Dormitorios - Porcelanato 60x120 | 2026-08-26 A | 2026-09-22 A |  | 0% → 100% | -170d → none |  |  |
| 216 | Baño - Porcelanatos 60x60 | 2026-08-26 A | 2026-09-22 A |  | 0% → 100% | -175d → none |  |  |
| 217 | Dormitorio - Porcelanato 60x120 | 2026-08-26 A | 2026-09-22 A |  | 0% → 100% | -175d → none |  |  |
| 218 | **Pisos Exteriores** | 2026-10-15 → 2026-09-23 A (-22d) | 2026-11-11 → 2026-11-27 (+16d) | 20d → 46d | 0% → 20% | -210d → -20d |  |  |
| 219 | Ingreso Cochera - Piedras | 2026-10-15 → 2026-10-30 (+15d) | 2026-11-11 → 2026-11-27 (+16d) |  |  | -210d → -216d |  | was named Ingreso Cochera- Adoquines |
| 220 | Cochera - Sala de Maquinas - Deposito - | 2026-10-15 → 2026-09-23 A (-22d) | 2026-11-11 → 2026-10-29 (-13d) | 20d → 26d | 0% → 50% | -205d → -203d | 212FS+15d, 253 → 212 | was named Cochera - Sala de Maquinas - Deposito - (falta definir revestimiento) |
| 221 | Ingreso Peatonal (falta definir revestimiento) | 2026-10-15 → 2026-10-30 (+15d) | 2026-11-11 → 2026-11-27 (+16d) |  |  | -205d → -216d |  |  |
| 222 | **Zocalos** |  | 2026-11-19 → 2026-11-09 (-10d) | 40d → 33d |  | -210d → -203d |  |  |
| 223 | Zocalos: Cochera | 2026-11-12 → 2026-10-30 (-13d) | 2026-11-19 → 2026-11-09 (-10d) | 5d → 7d |  | -210d → -203d | 219 → 220 |  |
| 224 | Zocalos: Galería |  | 2026-09-29 → 2026-11-09 (+41d) | 5d → 33d |  | -175d → -203d |  |  |
| 225 | Zocalos: Cocina-Living-Comedor |  | 2026-09-29 → 2026-11-09 (+41d) | 5d → 33d |  | -175d → -203d |  |  |
| 226 | Zocalos: Lavadero-Despensa-Baños-Pasillo |  | 2026-09-29 → 2026-11-09 (+41d) | 5d → 33d |  | -175d → -203d |  |  |
| 227 | Zocalos: Dormitorio |  | 2026-09-29 → 2026-11-09 (+41d) | 5d → 33d |  | -175d → -203d |  |  |
| 228 | Zocalos: Baños |  | 2026-09-29 → 2026-11-09 (+41d) | 5d → 33d |  | -175d → -203d |  |  |
| 229 | Zocalos: Dormitorio |  | 2026-09-29 → 2026-11-09 (+41d) | 5d → 33d |  | -175d → -203d |  |  |
| 230 | **Revestimientos Exteriores** | 2026-06-08 A | 2026-09-15 → 2026-11-04 (+50d) | 70d → 105d | 0% → 38% | -165d → -12d |  |  |
| 231 | Rev. De Piedra a Definir - Exterior. | 2026-06-08 A | 2026-09-15 → 2026-10-19 (+34d) | 70d → 93d | 0% → 80% | -165d → -188d |  |  |
| 232 | Rev. De Piedra a Definir - Interior. |  | 2026-09-15 → 2026-11-04 (+50d) | 70d → 105d |  | -165d → -200d |  |  |
| 233 | **PINTURA** | 2026-09-01 A | 2026-10-28 → 2026-11-24 (+27d) | 41d → 59d | 0% → 16% | -195d → -44d |  |  |
| 234 | **Pintura Interior** | 2026-09-30 → 2026-09-28 (-2d) | 2026-10-28 → 2026-10-26 (-2d) |  |  | -199d → -193d |  |  |
| 235 | Latex Interior PB | 2026-09-30 → 2026-09-28 (-2d) | 2026-10-28 → 2026-10-26 (-2d) |  |  | -199d → -193d |  |  |
| 236 | Latex Interior PA | 2026-09-30 → 2026-09-28 (-2d) | 2026-10-28 → 2026-10-26 (-2d) |  |  | -195d → -193d |  |  |
| 237 | Latex Cieloraso | 2026-09-30 → 2026-09-28 (-2d) | 2026-10-28 → 2026-10-26 (-2d) |  |  | -195d → -193d |  |  |
| 238 | **Pintura Exterior** | 2026-09-01 A | 2026-10-20 → 2026-11-24 (+35d) | 35d → 59d | 0% → 43% | -189d → -44d |  |  |
| 239 | Revestimiento Plastico | 2026-09-22 → 2026-10-27 (+35d) | 2026-10-20 → 2026-11-24 (+35d) |  |  | -189d → -213d | 126 → 127SS |  |
| 240 | Esmalte Sintetico | 2026-09-01 A | 2026-09-21 A |  | 0% → 100% | -169d → none |  |  |
| 241 | **CARPINTERIAS** | 2026-10-29 → 2026-11-10 (+12d) | 2026-11-20 → 2026-11-23 (+3d) | 16d → 9d |  | -211d → -218d |  |  |
| 242 | Puertas de madera | 2026-10-29 → 2026-11-17 (+19d) | 2026-11-03 → 2026-11-23 (+20d) |  |  | -199d → -212d | 235 → 243 |  |
| 243 | Puertas de aluminio | 2026-11-16 → 2026-11-10 (-6d) | 2026-11-20 → 2026-11-16 (-4d) | 4d → 5d |  | -211d → -212d |  | constraint start no earlier than 2026-11-16 → start no earlier than 2026-11-10 |
| 244 | Aberturas de aluminio* | 2026-11-16 → 2026-11-10 (-6d) | 2026-11-19 → 2026-11-16 (-3d) | 3d → 5d |  | -220d → -218d |  | constraint start no earlier than 2026-11-16 → start no earlier than 2026-11-10 |
| 245 | **VARIOS** | 2026-11-30 → 2026-10-20 (-41d) | 2026-11-30 → 2026-11-23 (-7d) | 1d? → 24d |  | -217d → -212d |  |  |
| 246 | **Pileta** | 2026-11-30 → 2026-10-20 (-41d) | 2026-11-30 → 2026-11-19 (-11d) | 1d? → 22d |  | -217d → -210d |  |  |
| 247 | Piscina con desborde infinito* | 2026-11-30 → 2026-10-20 (-41d) | 2026-11-30 → 2026-11-19 (-11d) | 1d? → 22d |  | -217d → -210d | 28FF → none | constraint none → start no earlier than 2026-10-20 |
| 248 | **Pozo de agua** | 2026-11-30 → 2026-11-16 (-14d) | 2026-11-30 → 2026-11-23 (-7d) | 1d? → 5d |  | -217d → -212d |  |  |
| 249 | Pozo de agua para riego | 2026-11-30 → 2026-11-16 (-14d) | 2026-11-30 → 2026-11-23 (-7d) | 1d? → 5d |  | -217d → -212d | 28FF → 253FS+11d |  |
| 250 | Fin Obra | 2026-12-03 → 2026-12-01 (-2d) | 2026-12-03 → 2026-12-01 (-2d) |  |  | 2d → 4d |  |  |
| 251 | Postventa Pasiva | 2026-12-03 → 2026-12-01 (-2d) | 2027-11-28 → 2027-11-26 (-2d) |  |  | -963d → -957d |  |  |
| 252 | Fin Postventa | 2027-11-28 → 2027-11-26 (-2d) | 2027-11-28 → 2027-11-26 (-2d) |  |  |  |  |  |
| 253 | Definición Proyecto de Paisajismo |  | 2026-08-19 → 2026-10-29 (+71d) | 115d → 165d |  | -171d → -216d |  |  |
| 254 | Firma Acta recepción Provisoria | 2026-12-03 → 2026-12-01 (-2d) | 2026-12-03 → 2026-12-01 (-2d) |  |  |  |  |  |
| 255 | Firma Acta recepcion Definitiva | 2027-11-28 → 2027-11-26 (-2d) | 2027-11-28 → 2027-11-26 (-2d) |  |  |  |  |  |
