# Vivienda Lugon

How a schedule from MS Project XML changed from version to version. A marks actual dates.

## Version 1 (saved 2026-07-16)

| ID | WBS | Task | Duration | Start | Finish | Predecessors | Complete | Total float | Constraint |
| --- | --- | --- | --- | --- | --- | --- | --- | --- | --- |
| 1 | 1 | **Vivienda Lugon** | 1305d? | 2022-11-28 A | 2028-01-30 |  | 14% | 0d |  |
| 2 |  | ✔Vivienda Lugon Contratada | 598d | 2022-11-28 A | 2025-04-01 A |  | 100% |  | start no earlier than 2022-11-28 |
| 3 |  | Obra Lugon | 579d | 2024-09-30 | 2027-02-04 |  |  | 247d |  |
| 4 | 1.3 | **Obra Lugon** | 579d? | 2024-09-28 A | 2027-02-04 |  |  | -579d |  |
| 5 | 1.3.1 | **COLUMNAS Y VIGAS METÁLICAS SOBRE PLANTA BAJA Y PLANTA ALTA** | 126d | 2026-05-05 | 2026-11-02 |  |  | -579d |  |
| 6 |  | Tubo rectangular 40x80x2,5 | 5d | 2026-09-21 | 2026-09-25 | 11 |  | -579d |  |
| 7 |  | Tubo rectangular 60x120x1,6 | 5d | 2026-09-28 | 2026-10-02 | 6 |  | -579d |  |
| 8 |  | Tubo rectangular 40x60x2,5 | 5d | 2026-10-05 | 2026-10-09 | 7 |  | -579d |  |
| 9 |  | Tubo rectangular 40x80x2,5 | 5d | 2026-10-12 | 2026-10-19 | 8 |  | -579d |  |
| 10 |  | Gabinetes termotanque y en galeria/tender | 10d | 2026-10-20 | 2026-11-02 | 9 |  | -579d |  |
| 11 |  | Albañales (los metros lineales son confusos) Rejilla guardaganado marco + rejilla. | 20d | 2026-08-24 | 2026-09-18 | 76 |  | -579d |  |
| 12 |  | Canaletas ver si se contemplaron en cubiertas metalicas | 5d | 2026-06-12 | 2026-06-18 | 22 |  | -485d |  |
| 13 |  | Cotizar colocar perfil ipn en contrapiso en ingreso cochera cortesia/ peatonal W310 | 2d | 2026-05-05 | 2026-05-06 | 30SS+15d |  | -579d |  |
| 14 |  | Baranda suspendida de escalera principal | 10d | 2026-05-07 | 2026-05-20 | 13 |  | -485d |  |
| 15 | 1.3.2 | **CONTRAPISO** | 37d | 2026-05-07 | 2026-06-29 |  |  | -579d |  |
| 16 |  | CONTRAPISO DE HORMIGÓN EXTERIOR: e= 10cm falta aprox un 20% | 2d | 2026-05-07 | 2026-05-08 | 13 |  | -579d |  |
| 17 |  | ADICIONAL - Contrapisos de terrazas para igualar nivel interior-exterior (planta alta dormitorios + gym) | 5d | 2026-06-23 | 2026-06-29 | 157 |  | -579d |  |
| 18 | 1.3.3 | **CARPETA DE NIVELACIÓN EN SUBSUELO, PLANTA BAJA Y PLANTA ALTA** | 12d | 2026-06-30 | 2026-07-16 |  |  | -579d |  |
| 19 |  | Carpeta exterior GYM | 5d | 2026-06-30 | 2026-07-06 | 17 |  | -579d |  |
| 20 |  | ADICIONAL - Carpetas de terrazas por igualar nivel interior-exterior (planta alta dormitorios) | 7d | 2026-07-07 | 2026-07-16 | 19 |  | -579d |  |
| 21 | 1.3.4 | **CUBIERTA** | 15d | 2026-05-21 | 2026-06-11 |  |  | -485d |  |
| 22 |  | CUBIERTA METÁLICA DE CORTESIA (Cotizacion actualizada, sin canaletas) | 15d | 2026-05-21 | 2026-06-11 | 14 |  | -485d |  |
| 23 | 1.3.5 | **REVESTIMIENTOS INTERIORES** | 17d | 2026-08-24 | 2026-09-15 |  |  | -546d |  |
| 24 |  | REV: BAÑO - SB (REVEST PORCELANATO) | 5d | 2026-08-24 | 2026-08-28 | 76 |  | -546d |  |
| 25 |  | REV: BAÑO C/ANTEBAÑO 1 - PA Y NICHO hay que modificarlo, ver si mantenemos revestimiento colocado | 3d | 2026-08-31 | 2026-09-02 | 24 |  | -546d |  |
| 26 |  | REV: BAÑO 2 - PA Y NICHO (90%) | 3d | 2026-09-03 | 2026-09-07 | 25 |  | -546d |  |
| 27 |  | REV: BAÑO 3 - PA Y NICHO | 3d | 2026-09-08 | 2026-09-10 | 26 |  | -546d |  |
| 28 |  | REV: ASADOR - refractarias | 3d | 2026-09-11 | 2026-09-15 | 27 |  | -546d |  |
| 29 | 1.3.6 | **REVESTIMIENTOS EXTERIORES** | 25d | 2026-04-13 | 2026-05-18 |  |  | -579d |  |
| 30 |  | MURO REVESTIMIENTO PIEDRA GRIS | 25d | 2026-04-13 | 2026-05-18 |  |  | -579d | start no earlier than 2026-04-13 |
| 31 | 1.3.7 | **PISOS INTERIORES** | 158d | 2026-04-13 | 2026-11-26 |  |  | -596d |  |
| 32 |  | PISO INTERIOR - COCHERA PSB (CEMENTO ALISADO) | 10d | 2026-04-13 | 2026-04-24 |  |  | -448d | start no earlier than 2026-04-13 |
| 33 |  | PISO INTERIOR - QUINCHO Y EXTERIOR - PSB (PORC. VILLAGRES HOUSE CEMENT NATURAL 123*123) | 10d | 2026-07-22 | 2026-08-04 | 148 |  | -620d |  |
| 34 |  | PISO INTERIOR - PASILLO - PSB | 2d | 2026-08-05 | 2026-08-06 | 33 |  | -620d |  |
| 35 |  | PISO INTERIOR - BAÑO - PSB | 0d | 2026-04-13 | 2026-04-13 |  |  | -438d | start no earlier than 2026-04-13 |
| 36 |  | PISO INTERIOR - BAÑO - PB | 0d | 2026-04-13 | 2026-04-13 |  |  | -438d | start no earlier than 2026-04-13 |
| 37 |  | PISO INTERIOR - DESPENSA - PB | 0d | 2026-04-13 | 2026-04-13 |  |  | -438d | start no earlier than 2026-04-13 |
| 38 |  | PISO INTERIOR - ESTAR - PB | 4d | 2026-08-07 | 2026-08-12 | 34 |  | -620d |  |
| 39 |  | PISO INTERIOR - ESCRITORIO - PB | 0d | 2026-04-13 | 2026-04-13 |  |  | -438d | start no earlier than 2026-04-13 |
| 40 |  | PISO INTERIOR - PASILLO - PB | 0d | 2026-04-13 | 2026-04-13 |  |  | -438d | start no earlier than 2026-04-13 |
| 41 |  | PISO INTERIOR - COMEDOR - PB | 4d | 2026-08-13 | 2026-08-19 | 38 |  | -620d |  |
| 42 |  | PISO INTERIOR - COCINA Y GALERIA Y ALERO - PB | 10d | 2026-08-20 | 2026-09-02 | 41 |  | -620d |  |
| 43 |  | PISO INTERIOR - LAVADERO - PB | 2d | 2026-09-03 | 2026-09-04 | 42 |  | -620d |  |
| 44 |  | PISO INTERIOR - BAÑO C/ANTEBAÑO - PA | 2d | 2026-09-07 | 2026-09-08 | 43 |  | -620d |  |
| 45 |  | PISO INTERIOR - PASILLO - PA | 7d | 2026-09-09 | 2026-09-17 | 44 |  | -620d |  |
| 46 |  | PISO INTERIOR - DORMITORIO PPAL Y TERRAZA Y BALCON. - PA | 10d | 2026-09-18 | 2026-10-01 | 45 |  | -620d |  |
| 47 |  | PISO INTERIOR - VESTIDOR - PA | 0d | 2026-04-13 | 2026-04-13 |  |  | -438d | start no earlier than 2026-04-13 |
| 48 |  | PISO INTERIOR - DORMITORIO 2 - PA | 0d | 2026-04-13 | 2026-04-13 |  |  | -438d | start no earlier than 2026-04-13 |
| 49 |  | PISO INTERIOR - VESTIDOR 2 - PA | 0d | 2026-04-13 | 2026-04-13 |  |  | -438d | start no earlier than 2026-04-13 |
| 50 |  | PISO INTERIOR - DORMITORIO 3 - PA | 7d | 2026-10-02 | 2026-10-12 | 46 |  | -620d |  |
| 51 |  | PISO INTERIOR - VESTIDOR 3 - PA | 0d | 2026-04-13 | 2026-04-13 |  |  | -438d | start no earlier than 2026-04-13 |
| 52 |  | PISO INTERIOR -GYM Y TERRAZA - PA 2 (CEMENTO ALISADO O PORFIDO?) | 10d | 2026-10-14 | 2026-10-27 | 50 |  | -620d |  |
| 53 |  | PISO INTERIOR -ESCALERA COMPLETA EN ALTURA (PORFIDO O GRANITO NATURAL) | 21d | 2026-10-28 | 2026-11-26 | 52 |  | -620d |  |
| 54 | 1.3.8 | **PISOS EXTERIORES faltan todos** | 182d | 2026-04-13 | 2027-01-04 |  |  | -620d |  |
| 55 |  | INGRESO PEATONAL Y PATIO PB (PORFIDO O GRANITO NATURAL) | 10d | 2026-04-13 | 2026-04-24 |  |  | -448d | start no earlier than 2026-04-13 |
| 56 |  | PISOS: VEREDA PERIMETRAL PATIO (CONTEMP EN QUINCHO) (SE MODIFICO A MISMO PORCELANATO QUE INTERIOR) | 7d | 2026-11-27 | 2026-12-07 | 53 |  | -620d |  |
| 57 |  | INGRESO COCHERA cortesía* (ADOQUINES) | 15d | 2026-04-13 | 2026-05-04 |  |  | -453d | start no earlier than 2026-04-13 |
| 58 |  | INGRESO COCHERA Y LAVADO 5*6 subsuelo (ADOQUINES) | 15d | 2026-04-13 | 2026-05-04 |  |  | -453d | start no earlier than 2026-04-13 |
| 59 |  | TERRAZA CONTEMPLADO EN DORM EN SUITE (MISMO PISO QUE INTERIOR) | 7d | 2026-12-09 | 2026-12-17 | 56 |  | -620d |  |
| 60 |  | ADICIONAL - Piso sobre aleros en PA | 10d | 2026-12-18 | 2027-01-04 | 59 |  | -620d |  |
| 61 |  | DURMIENTES HORIZ.* | 0d | 2026-04-13 | 2026-04-13 |  |  | -438d | start no earlier than 2026-04-13 |
| 62 |  | DURMIENTES VERT.* | 0d | 2026-04-13 | 2026-04-13 |  |  | -438d | start no earlier than 2026-04-13 |
| 63 | 1.3.9 | **ZOCALOS** | 10d | 2026-11-27 | 2026-12-11 |  |  | -606d |  |
| 64 |  | ZOCALOS: Interiores SS | 10d | 2026-11-27 | 2026-12-11 | 53 |  | -606d |  |
| 65 |  | ZOCALOS: Interiores PB | 10d | 2026-11-27 | 2026-12-11 | 53 |  | -606d |  |
| 66 |  | ZOCALOS: Interiores PA | 10d | 2026-11-27 | 2026-12-11 | 53 |  | -606d |  |
| 67 | 1.3.10 | **INSTALACIONES SANITARIAS Y PLUVIALES GENERALES** | 87d | 2026-05-19 | 2026-09-21 |  |  | -550d |  |
| 68 |  | ADICIONAL - tirada hasta el fondo | 7d | 2026-09-11 | 2026-09-21 | 73 |  | -553d |  |
| 69 |  | ADICIONAL - desagüe de canteros | 1d | 2026-06-01 | 2026-06-01 | 71 |  | -472d |  |
| 70 |  | ADICIONAL - desagüe de cochera de cortesia | 3d | 2026-05-21 | 2026-05-26 | 72 |  | -475d |  |

| ID | WBS | Task | Duration | Start | Finish | Predecessors | Total float | Constraint |
| --- | --- | --- | --- | --- | --- | --- | --- | --- |
| 71 |  | ADICIONAL - modificación de pluviales en cochera de subsuelo | 3d | 2026-05-27 | 2026-05-29 | 70 | -472d |  |
| 72 |  | ADICIONAL - desagüe de abertura de GYM | 2d | 2026-05-19 | 2026-05-20 | 30 | -475d |  |
| 73 |  | ADICIONAL - desagüe pluvial lado izquiero desde ingreso hasta quincho por terreno natural | 14d | 2026-08-24 | 2026-09-10 | 76 | -553d |  |
| 74 |  | ADICIONAL - Modificar embudos de cambio de carpetas | 2d | 2026-05-21 | 2026-05-22 | 72 | -472d |  |
| 75 |  | Agua a cisterna y distribución de cañeria (hacer) | 5d | 2026-05-26 | 2026-06-01 | 74 | -472d |  |
| 76 |  | ADICIONAL - Albañal de desague | 15d | 2026-07-31 | 2026-08-21 | 168 | -579d |  |
| 77 | 1.3.11 | **INSTALACIONES SANITARIAS INTERNAS** | 205d | 2026-04-13 | 2027-02-04 |  | -643d |  |
| 78 |  | INST. AGUA FRIA Y CALIENTE | 3d | 2026-09-22 | 2026-09-24 | 68 | -553d |  |
| 79 |  | Cisterna enterrada (subsuelo y distribución)* | 0d | 2026-04-13 | 2026-04-13 |  | -438d | start no earlier than 2026-04-13 |
| 80 |  | Bomba* | 2d | 2027-02-03 | 2027-02-04 | 82 | -643d |  |
| 81 | 1.3.12 | **INSTALACIONES CLOACAS** | 5d | 2027-01-27 | 2027-02-02 |  | -643d |  |
| 82 |  | Colocación artefactos | 5d | 2027-01-27 | 2027-02-02 | 174 | -643d |  |
| 83 | 1.3.13 | **INSTALACION GAS arreglar caño de gas en el ingreso, ver donde van las rejillas de gas** | 50d | 2026-04-13 | 2026-06-23 |  | -488d |  |
| 84 |  | 2 subida de gas PSS, PB y PA - cañeria Ø110 | 0d | 2026-04-13 | 2026-04-13 |  | -438d | start no earlier than 2026-04-13 |
| 85 |  | Casilla de gas | 3d | 2026-05-19 | 2026-05-21 | 30 | -488d |  |
| 86 |  | ADICIONAL - arreglar caño de gas x bobcat en el ingreso | 2d | 2026-05-22 | 2026-05-26 | 85 | -488d |  |
| 87 |  | Aprobacion de gas | 10d | 2026-06-10 | 2026-06-23 | 90 | -488d |  |
| 88 |  | Rejillas de ventilación | 3d | 2026-05-27 | 2026-05-29 | 86 | -488d |  |
| 89 |  | ADICIONAL - modificación de llave de gas en termotanque (por cierre de gabinete) | 3d | 2026-06-01 | 2026-06-03 | 88 | -488d |  |
| 90 |  | Colocación de Artefactos | 4d | 2026-06-04 | 2026-06-09 | 89 | -488d |  |
| 91 | 1.3.14 | **INSTALACION ELECTRICA / SEÑALES DEBILES** | 15d | 2024-09-28 | 2024-10-21 |  | -79d |  |
| 92 |  | Canalización, cableado y armado según plano. | 0d | 2024-09-28 | 2024-09-28 |  | -64d |  |
| 93 |  | BOCAS DE ILUMINACIÓN EN LOSA | 0d | 2024-09-28 | 2024-09-28 |  | -64d |  |
| 94 |  | BOCAS DE ILUMINACIÓN EN PARED | 0d | 2024-09-28 | 2024-09-28 |  | -64d |  |
| 95 |  | BOCAS DE TOMACORRIENTES | 0d | 2024-09-28 | 2024-09-28 |  | -64d |  |
| 96 |  | SEÑALES DÉBILES | 0d | 2024-09-28 | 2024-09-28 |  | -64d |  |
| 97 |  | ARMADO DE TABLERO GENERAL | 0d | 2024-09-28 | 2024-09-28 |  | -64d |  |
| 98 |  | CERTIFICACIÓN PARA EPEC/COOPERATIVA | 0d | 2024-09-28 | 2024-09-28 |  | -64d |  |
| 99 |  | ARMADO DE TABLERO PARA LUZ DE OBRA | 0d | 2024-09-28 | 2024-09-28 |  | -64d |  |
| 100 |  | Armado tablero obra arriba y conexión cble subterráneo | 0d | 2024-09-28 | 2024-09-28 |  | -64d |  |
| 101 |  | Alimentación de pilar a grupo electrogeno | 0d | 2024-09-28 | 2024-09-28 |  | -64d |  |
| 102 |  | Alimentación de grupo electrogeno hacia tableros interiores | 0d | 2024-09-28 | 2024-09-28 |  | -64d |  |
| 103 |  | Zanjeo de pilar a tableros | 0d | 2024-09-28 | 2024-09-28 |  | -64d |  |
| 104 |  | Grupo electrógeno | 0d | 2024-09-28 | 2024-09-28 |  | -64d |  |
| 105 |  | Bocas faltantes | 0d | 2024-09-28 | 2024-09-28 |  | -64d |  |
| 106 |  | Cableado | 15d | 2024-09-30 | 2024-10-21 |  | -79d |  |
| 107 |  | Armado de tableros | 10d | 2024-09-30 | 2024-10-14 |  | -74d |  |
| 108 |  | Armado de cajas | 15d | 2024-09-30 | 2024-10-21 |  | -79d |  |
| 109 | 1.3.15 | **INSTALACION A°A° falta conectar desagues, y hacer conductos** | 37d | 2026-04-13 | 2026-06-04 |  | -495d |  |
| 110 |  | AA SALA DE MÚSICA SS (contemplo conductos) | 5d | 2026-04-15 | 2026-04-21 | 118 | -495d |  |
| 111 |  | AA DORMITORIO 1 (contemplo conductos) | 5d | 2026-04-22 | 2026-04-28 | 110 | -495d |  |
| 112 |  | AA DORMITORIO 2 (contemplo conductos) | 5d | 2026-04-29 | 2026-05-06 | 111 | -495d |  |
| 113 |  | AA DORMITORIO 3 (contemplo conductos) | 5d | 2026-05-07 | 2026-05-13 | 112 | -495d |  |
| 114 |  | AA ESTAR COMEDOR (contemplo conductos) | 5d | 2026-05-14 | 2026-05-20 | 113 | -495d |  |
| 115 |  | AA QUINCHO (contemplo conductos) | 5d | 2026-05-21 | 2026-05-28 | 114 | -495d |  |
| 116 |  | AA GYM (contemplo conductos) | 5d | 2026-05-29 | 2026-06-04 | 115 | -495d |  |
| 117 |  | KIT INSTALACION AA | 0d | 2026-04-13 | 2026-04-13 |  | -438d | start no earlier than 2026-04-13 |
| 118 |  | Conexión de desagues de bajo siluetas | 2d | 2026-04-13 | 2026-04-14 |  | -495d | start no earlier than 2026-04-13 |
| 119 | 1.3.16 | **INSTALACION CALEFACCIÓN** | 0d | 2026-04-13 | 2026-04-13 |  | -438d |  |
| 120 |  | COLECTOR | 0d | 2026-04-13 | 2026-04-13 |  | -438d | start no earlier than 2026-04-13 |
| 121 |  | KIT INSTALACION CAÑERIA | 0d | 2026-04-13 | 2026-04-13 |  | -438d | start no earlier than 2026-04-13 |
| 122 |  | KIT INSTALACION CALDERA Y ELEMENTOS | 0d | 2026-04-13 | 2026-04-13 |  | -438d | start no earlier than 2026-04-13 |
| 123 | 1.3.17 | **PINTURA GENERAL*** | 33d | 2026-04-13 | 2026-05-29 |  | -471d |  |
| 124 |  | LATEX INTERIOR PSS (LATEX INTERIOR, COLOR BLANCO CRUDO - 30GY 88 / 014 [ALBA]) | 5d | 2026-04-13 | 2026-04-17 |  | -443d | start no earlier than 2026-04-13 |
| 125 |  | BASE + ESTUCADO INTERIOR PSS (ALBA DESIGN EFECTO CEMENTO, COLOR GRANITO HUMEDO [ALBA]) | 8d | 2026-04-13 | 2026-04-22 |  | -446d | start no earlier than 2026-04-13 |
| 126 |  | LATEX INTERIOR PSS (base blanca) | 3d | 2026-05-13 | 2026-05-15 | 139 | -471d |  |
| 127 |  | Planchado de paredes SS | 5d | 2026-04-13 | 2026-04-17 |  | -471d | start no earlier than 2026-04-13 |
| 128 |  | Latex interior cielorraso durlock SS (definir color) | 4d | 2026-04-13 | 2026-04-16 |  | -442d | start no earlier than 2026-04-13 |
| 129 |  | LATEX INTERIOR PB (LATEX INTERIOR, COLOR BLANCO CRUDO - 30GY 88 / 014 [ALBA]) | 5d | 2026-04-13 | 2026-04-17 |  | -443d | start no earlier than 2026-04-13 |
| 130 |  | LATEX INTERIOR PB (base blanca) | 3d | 2026-05-18 | 2026-05-20 | 126 | -471d |  |
| 131 |  | Planchado de paredes PB | 3d | 2026-04-20 | 2026-04-22 | 127 | -471d |  |
| 132 |  | Latex interior cielorraso durlock PB (definir color) | 5d | 2026-04-13 | 2026-04-17 |  | -443d | start no earlier than 2026-04-13 |
| 133 |  | LATEX INTERIOR PA (LATEX INTERIOR, COLOR BLANCO CRUDO - 30GY 88 / 014 [ALBA]) | 14d | 2026-04-13 | 2026-04-30 |  | -452d | start no earlier than 2026-04-13 |
| 134 |  | BASE + ESTUCADO INTERIOR PA (a definir color) | 7d | 2026-04-13 | 2026-04-21 |  | -445d | start no earlier than 2026-04-13 |
| 135 |  | LATEX INTERIOR PA (base blanca) | 4d | 2026-05-21 | 2026-05-27 | 130 | -471d |  |
| 136 |  | Planchado de paredes + cielorraso PA | 10d | 2026-04-23 | 2026-05-07 | 131 | -471d |  |
| 137 |  | Latex interior cielorraso durlock + yeso PA (definir color) | 6d | 2026-04-13 | 2026-04-20 |  | -444d | start no earlier than 2026-04-13 |
| 138 |  | LATEX INTERIOR GYM (MUROS Y CIELORRASOS) (base blanca) | 5d | 2026-04-13 | 2026-04-17 |  | -443d | start no earlier than 2026-04-13 |
| 139 |  | Planchado de paredes GYM | 3d | 2026-05-08 | 2026-05-12 | 136 | -471d |  |
| 140 |  | Latex interior cielorraso yeso GYM (definir color) | 2d | 2026-05-28 | 2026-05-29 | 135 | -471d |  |

| ID | WBS | Task | Duration | Start | Finish | Predecessors | Complete | Total float | Constraint |
| --- | --- | --- | --- | --- | --- | --- | --- | --- | --- |
| 141 |  | Revestimiento plastico (o si va revestimiento de madera, la pintura sobre el fino contemplar) | 15d | 2026-04-13 | 2026-05-04 |  |  | -453d | start no earlier than 2026-04-13 |
| 142 |  | Laca hidrófuga sobre hormigones vistos | 10d | 2026-04-13 | 2026-04-24 |  |  | -448d | start no earlier than 2026-04-13 |
| 143 | 1.3.18 | **YESO EN PAREDES ya se hizo, hay que certificar al 100** | 0d | 2024-09-28 A | 2024-09-28 A |  | 100% |  |  |
| 144 |  | ✔MUROS PLANTA BAJA | 0d | 2024-09-28 A | 2024-09-28 A |  | 100% |  |  |
| 145 |  | ✔MUROS PLANTA ALTA | 0d | 2024-09-28 A | 2024-09-28 A |  | 100% |  |  |
| 146 |  | ✔CIELORRASO PLANTA ALTA | 0d | 2024-09-28 A | 2024-09-28 A |  | 100% |  |  |
| 147 |  | ✔CIELORRASO GYM | 0d | 2024-09-28 A | 2024-09-28 A |  | 100% |  |  |
| 148 |  | ABERTURAS | 5d | 2026-07-15 | 2026-07-21 |  |  | -620d | start no earlier than 2026-07-15 |
| 149 |  | ESCALERAS | 0d | 2026-04-13 | 2026-04-13 |  |  | -438d | start no earlier than 2026-04-13 |
| 150 |  | ESCALERA Hº VISTO-GALERIA A PATIO CON DURMIENTES | 0d | 2026-04-13 | 2026-04-13 |  |  | -438d | start no earlier than 2026-04-13 |
| 151 |  | TERRAZA VERDE | 10d? | 2026-04-13 | 2026-04-24 |  |  | -448d | start no earlier than 2026-04-13 |
| 152 | 1.3.23 | **ASADOR hecho** | 0d | 2026-04-13 | 2026-04-13 |  |  | -438d |  |
| 153 |  | ASADOR | 0d | 2026-04-13 | 2026-04-13 |  |  | -438d | start no earlier than 2026-04-13 |
| 154 | 1.3.24 | **BARANDAS faltan - nosotros tenemos que hacer lugar a los anclajes (adicional)** | 30d | 2026-05-11 | 2026-06-22 |  |  | -579d |  |
| 155 |  | BARANDAS VIDRIOS h:0,70m (Faltan cotizar normalmente son MAT y MO) | 10d | 2026-05-11 | 2026-05-22 | 16 |  | -579d |  |
| 156 |  | BARANDAS VIDRIOS h:0,90m (Faltan cotizar normalmente son MAT y MO) | 10d | 2026-05-26 | 2026-06-08 | 155 |  | -579d |  |
| 157 |  | BARANDAS VIDRIOS h:0,70m (Faltan cotizar normalmente son MAT y MO) | 10d | 2026-06-09 | 2026-06-22 | 156 |  | -579d |  |
| 158 |  | PÉRGOLAS - CERRAMIENTOS METÁLICOS | 0d | 2026-04-13 | 2026-04-13 |  |  | -438d | start no earlier than 2026-04-13 |
| 159 |  | ASCENSOR | 10d | 2026-06-19 | 2026-07-02 | 165 |  | -495d |  |
| 160 |  | PILETA | 0d | 2026-04-13 | 2026-04-13 |  |  | -438d | start no earlier than 2026-04-13 |
| 161 | 1.3.28 | **ADICIONALES** | 572d | 2024-09-30 | 2027-01-26 |  |  | -636d |  |
| 162 |  | Revestimeinto de piedra oct25 a dic25 | 5d | 2024-09-30 | 2024-10-04 |  |  | -69d |  |
| 163 |  | Sala de maquinas - abrir vano, hacer puerta metálica y llevar electricidad | 5d | 2027-01-06 | 2027-01-12 | 164 |  | -626d |  |
| 164 |  | Paisajismo - colocación de durmientes, y movimientos que hagan falta | 10d | 2026-12-21 | 2027-01-05 |  |  | -626d | start no earlier than 2026-12-21 |
| 165 |  | Durlock - cielorraso | 10d | 2026-06-05 | 2026-06-18 | 116 |  | -495d |  |
| 166 |  | Durlock - paredes | 15d | 2026-05-14 | 2026-06-05 | 165SF |  | -475d |  |
| 167 |  | Cordones de adoquines (vigas riostras de contensión) DEFINIR DISEÑO | 7d | 2026-05-27 | 2026-06-04 | 70 |  | -475d |  |
| 168 |  | Membranas de terrazas y balcones | 10d | 2026-07-17 | 2026-07-30 | 20 |  | -579d |  |
| 169 |  | Romper contrapiso de cochera | 5d | 2024-09-30 | 2024-10-04 |  |  | -69d |  |
| 170 |  | Rehacer contrapiso de cochera | 5d | 2024-09-30 | 2024-10-04 |  |  | -69d |  |
| 171 |  | Realizar pruebas hidraulicas de todas las instalaciones. (agua/ cloaca/ pluviales/ gas) | 3d | 2026-05-04 | 2026-05-06 |  |  | -455d | start no earlier than 2026-05-04 |
| 172 |  | Desmalezado y corte de cesped | 1d | 2026-05-04 | 2026-05-04 |  |  | -453d | start no earlier than 2026-05-04 |
| 173 |  | Realizar limpieza de Hormigon/mantenimiento | 3d | 2026-05-04 | 2026-05-06 |  |  | -455d | start no earlier than 2026-05-04 |
| 174 |  | Colocación de muebles | 5d | 2027-01-20 | 2027-01-26 |  |  | -643d | start no earlier than 2027-01-20 |
| 175 |  | StandBy - Cliente solicito frenar | 102d | 2025-11-03 | 2026-04-01 |  |  | 458d | start no earlier than 2025-11-03 |
| 176 |  | Posventa Pasiva | 12emo | 2027-02-04 | 2028-01-30 | 4 |  | -2847d |  |
| 177 |  | Fin Postventa | 0d | 2028-01-30 | 2028-01-30 | 176 |  | -649d |  |
| 178 |  | Firma Acta recepcion Provisoria | 1d | 2024-09-30 | 2024-09-30 |  |  | 578d |  |
| 179 |  | Posventa | 12emo | 2024-09-30 | 2025-09-25 | 178 |  | 2571d |  |

## Version 2 (saved 2026-09-26)

Last finish stays 2028-01-30.

Changed:

| ID | Task | Start | Finish | Duration | Total float | Predecessors | Other |
| --- | --- | --- | --- | --- | --- | --- | --- |
| 5 | **COLUMNAS Y VIGAS METÁLICAS SOBRE PLANTA BAJA Y PLANTA ALTA** |  | 2026-11-02 → 2026-12-31 (+59d) | 126d → 166d | -579d → -619d |  |  |
| 6 | Tubo rectangular 40x80x2,5 | 2026-09-21 → 2026-11-17 (+57d) | 2026-09-25 → 2026-11-24 (+60d) |  | -579d → -619d |  |  |
| 7 | Tubo rectangular 60x120x1,6 | 2026-09-28 → 2026-11-25 (+58d) | 2026-10-02 → 2026-12-01 (+60d) |  | -579d → -619d |  |  |
| 8 | Tubo rectangular 40x60x2,5 | 2026-10-05 → 2026-12-02 (+58d) | 2026-10-09 → 2026-12-09 (+61d) |  | -579d → -619d |  |  |
| 9 | Tubo rectangular 40x80x2,5 | 2026-10-12 → 2026-12-10 (+59d) | 2026-10-19 → 2026-12-16 (+58d) |  | -579d → -619d |  |  |
| 10 | Gabinetes termotanque y en galeria/tender | 2026-10-20 → 2026-12-17 (+58d) | 2026-11-02 → 2026-12-31 (+59d) |  | -579d → -619d |  |  |
| 11 | Albañales (los metros lineales son confusos) Rejilla guardaganado marco + rejilla. | 2026-08-24 → 2026-10-20 (+57d) | 2026-09-18 → 2026-11-16 (+59d) |  | -579d → -619d |  |  |
| 15 | **CONTRAPISO** |  | 2026-06-29 → 2026-08-26 (+58d) | 37d → 77d | -579d → -619d |  | resources Mariana Valdez → none |
| 17 | ADICIONAL - Contrapisos de terrazas para igualar nivel interior-exterior (planta alta dormitorios + gym) | 2026-06-23 → 2026-08-20 (+58d) | 2026-06-29 → 2026-08-26 (+58d) |  | -579d → -619d |  |  |
| 18 | **CARPETA DE NIVELACIÓN EN SUBSUELO, PLANTA BAJA Y PLANTA ALTA** | 2026-06-30 → 2026-08-27 (+58d) | 2026-07-16 → 2026-09-11 (+57d) |  | -579d → -619d |  | resources Mariana Valdez → none |
| 19 | Carpeta exterior GYM | 2026-06-30 → 2026-08-27 (+58d) | 2026-07-06 → 2026-09-02 (+58d) |  | -579d → -619d |  |  |
| 20 | ADICIONAL - Carpetas de terrazas por igualar nivel interior-exterior (planta alta dormitorios) | 2026-07-07 → 2026-09-03 (+58d) | 2026-07-16 → 2026-09-11 (+57d) |  | -579d → -619d |  |  |
| 21 | **CUBIERTA** |  |  |  |  |  | resources Mariana Valdez → none |
| 23 | **REVESTIMIENTOS INTERIORES** | 2026-08-24 → 2026-10-20 (+57d) | 2026-09-15 → 2026-11-11 (+57d) |  | -546d → -586d |  | resources Mariana Valdez → none |
| 24 | REV: BAÑO - SB (REVEST PORCELANATO) | 2026-08-24 → 2026-10-20 (+57d) | 2026-08-28 → 2026-10-26 (+59d) |  | -546d → -586d |  |  |
| 25 | REV: BAÑO C/ANTEBAÑO 1 - PA Y NICHO hay que modificarlo, ver si mantenemos revestimiento colocado | 2026-08-31 → 2026-10-27 (+57d) | 2026-09-02 → 2026-10-29 (+57d) |  | -546d → -586d |  |  |
| 26 | REV: BAÑO 2 - PA Y NICHO (90%) | 2026-09-03 → 2026-10-30 (+57d) | 2026-09-07 → 2026-11-03 (+57d) |  | -546d → -586d |  |  |
| 27 | REV: BAÑO 3 - PA Y NICHO | 2026-09-08 → 2026-11-04 (+57d) | 2026-09-10 → 2026-11-06 (+57d) |  | -546d → -586d |  |  |
| 28 | REV: ASADOR - refractarias | 2026-09-11 → 2026-11-09 (+59d) | 2026-09-15 → 2026-11-11 (+57d) |  | -546d → -586d |  |  |
| 29 | **REVESTIMIENTOS EXTERIORES** |  |  |  | -579d → -619d |  | resources Mariana Valdez → none |
| 31 | **PISOS INTERIORES** |  |  |  |  |  | resources Mariana Valdez → none |
| 54 | **PISOS EXTERIORES faltan todos** |  |  |  |  |  | resources Mariana Valdez → none |
| 63 | **ZOCALOS** |  |  |  |  |  | resources Mariana Valdez → none |
| 67 | **INSTALACIONES SANITARIAS Y PLUVIALES GENERALES** |  | 2026-09-21 → 2026-11-17 (+57d) | 87d → 127d | -550d → -590d |  | resources Mariana Valdez → none |
| 68 | ADICIONAL - tirada hasta el fondo | 2026-09-11 → 2026-11-09 (+59d) | 2026-09-21 → 2026-11-17 (+57d) |  | -553d → -593d |  |  |
| 73 | ADICIONAL - desagüe pluvial lado izquiero desde ingreso hasta quincho por terreno natural | 2026-08-24 → 2026-10-20 (+57d) | 2026-09-10 → 2026-11-06 (+57d) |  | -553d → -593d |  |  |
| 76 | ADICIONAL - Albañal de desague | 2026-07-31 → 2026-09-28 (+59d) | 2026-08-21 → 2026-10-19 (+59d) |  | -579d → -619d |  |  |
| 77 | **INSTALACIONES SANITARIAS INTERNAS** |  |  |  |  |  | resources Mariana Valdez → none |
| 78 | INST. AGUA FRIA Y CALIENTE | 2026-09-22 → 2026-11-19 (+58d) | 2026-09-24 → 2026-11-23 (+60d) |  | -553d → -593d |  |  |
| 81 | **INSTALACIONES CLOACAS** |  |  |  |  |  | resources Mariana Valdez → none |
| 83 | **INSTALACION GAS arreglar caño de gas en el ingreso, ver donde van las rejillas de gas** |  |  |  |  |  | resources Mariana Valdez → none |
| 91 | **INSTALACION ELECTRICA / SEÑALES DEBILES** |  |  |  |  |  | resources Mariana Valdez → none |
| 109 | **INSTALACION A°A° falta conectar desagues, y hacer conductos** |  |  |  |  |  | resources Mariana Valdez → none |
| 119 | **INSTALACION CALEFACCIÓN** |  |  |  |  |  | resources Mariana Valdez → none |
| 123 | **PINTURA GENERAL*** |  |  |  |  |  | resources Mariana Valdez → none |
| 143 | **YESO EN PAREDES ya se hizo, hay que certificar al 100** |  |  |  |  |  | resources Mariana Valdez → none |
| 152 | **ASADOR hecho** |  |  |  |  |  | resources Mariana Valdez → none |
| 154 | **BARANDAS faltan - nosotros tenemos que hacer lugar a los anclajes (adicional)** |  | 2026-06-22 → 2026-08-19 (+58d) | 30d → 70d | -579d → -619d |  | resources Mariana Valdez → none |
| 155 | BARANDAS VIDRIOS h:0,70m (Faltan cotizar normalmente son MAT y MO) |  | 2026-05-22 → 2026-08-19 (+89d) | 10d → 70d | -579d → -619d |  |  |
| 156 | BARANDAS VIDRIOS h:0,90m (Faltan cotizar normalmente son MAT y MO) | 2026-05-26 → 2026-06-23 (+28d) | 2026-06-08 → 2026-08-19 (+72d) | 10d → 40d | -579d → -527d | 155 → 155FF |  |
| 157 | BARANDAS VIDRIOS h:0,70m (Faltan cotizar normalmente son MAT y MO) | 2026-06-09 → 2026-06-23 (+14d) | 2026-06-22 → 2026-08-19 (+58d) | 10d → 40d | -579d → -619d | 156 → 155FF |  |
| 161 | **ADICIONALES** |  |  |  |  |  | resources Mariana Valdez → none |
| 168 | Membranas de terrazas y balcones | 2026-07-17 → 2026-09-14 (+59d) | 2026-07-30 → 2026-09-25 (+57d) |  | -579d → -619d |  |  |
