# Vivienda Reboni - base

How a schedule from MS Project XML changed from version to version. A marks actual dates.

## Version 1 (saved 2026-07-16)

| ID | WBS | Task | Duration | Start | Finish | Predecessors | Complete | Total float | Constraint |
| --- | --- | --- | --- | --- | --- | --- | --- | --- | --- |
| 1 | 1 | **VIVIENDA REBONI** | 1083d | 2024-01-01 A | 2028-04-28 |  | 41% | 0d |  |
| 2 | 1.1 | **✔Presupuestación** | 27d | 2024-04-22 A | 2024-05-28 A |  | 100% |  |  |
| 3 |  | ✔Recepción de Legajo | 0d | 2024-04-22 A | 2024-04-22 A |  | 100% |  | start no earlier than 2024-04-22 |
| 4 |  | ✔Cómputo Métrico | 15d | 2024-04-22 A | 2024-05-10 A | 3 | 100% |  |  |
| 5 |  | ✔Cotización Mano de Obra | 12d | 2024-05-02 A | 2024-05-17 A | 4FF+5d | 100% |  |  |
| 6 |  | ✔Aceptación Obra y Firma de Contrato | 7d | 2024-05-20 A | 2024-05-28 A | 4, 5 | 100% |  |  |
| 7 | 1.2 | **✔Armado de Documentación y Compra Materiales** | 28d | 2024-05-29 A | 2024-07-05 A |  | 100% |  |  |
| 8 |  | ✔Armado de Documentacion - Apto para Gestiones | 4d | 2024-05-29 A | 2024-06-03 A | 6 | 100% |  |  |
| 9 |  | ✔Armado de Documentación - Apto para Construcción | 28d | 2024-05-29 A | 2024-07-05 A | 6 | 100% |  |  |
| 10 |  | ✔Confeccion de presupuestos de materiales y acopios. | 28d | 2024-05-29 A | 2024-07-05 A | 6 | 100% |  |  |
| 11 | 1.3 | **✔Gestiones** | 24d | 2024-06-04 A | 2024-07-05 A |  | 100% |  |  |
| 12 |  | ✔Gestiones CAPC | 24d | 2024-06-04 A | 2024-07-05 A | 8 | 100% |  |  |
| 13 |  | ✔Gestiones Municipales | 24d | 2024-06-04 A | 2024-07-05 A | 8 | 100% |  |  |
| 14 |  | ✔Gestiones de Personal | 10d | 2024-06-24 A | 2024-07-05 A | 12FF, 13FF | 100% |  |  |
| 15 |  | Contrato Obra Vivienda Reboni | 692d | 2024-01-01 A | 2026-08-25 |  | 42% | 422d |  |
| 16 | 1.5 | **Obra Vivienda Reboni** | 698d | 2024-07-05 A | 2027-05-04 |  | 42% | 250d |  |
| 17 |  | ✔Firma Acta Inicio de Obra | 0d | 2024-07-05 A | 2024-07-05 A | 11 | 100% |  |  |
| 18 |  | Obra Vivienda Reboni | 698d | 2024-07-08 A | 2027-03-10 |  | 42% | 287d | start no earlier than 2024-07-08 |
| 19 | 1.5.3 | **Obra Vivienda Reboni** | 698d | 2024-07-08 A | 2027-05-04 | 11, 7 | 42% | -213d |  |
| 20 | 1.5.3.1 | **TAREAS PRELIMINARES** | 5d | 2024-07-08 A | 2024-07-15 A |  | 100% |  |  |
| 21 |  | ✔Limpieza y desmalezamiento | 1d | 2024-07-08 A | 2024-07-08 A |  | 100% |  |  |
| 22 |  | ✔Amojonamiento | 1d | 2024-07-09 A | 2024-07-09 A | 21 | 100% |  |  |
| 23 |  | ✔Cerco de obra | 4d | 2024-07-10 A | 2024-07-15 A | 22 | 100% |  |  |
| 24 | 1.5.3.2 | **MOVIMIENTO DE SUELO** | 10d | 2024-07-16 A | 2024-07-29 A |  | 100% |  |  |
| 25 |  | ✔Nivelacion y compactacion | 10d | 2024-07-16 A | 2024-07-29 A | 23 | 100% |  |  |
| 26 | 1.5.3.3 | **REPLANTEO** | 32d | 2024-07-30 A | 2024-09-11 A |  | 100% |  |  |
| 27 |  | ✔Armado Corralito | 5d | 2024-07-30 A | 2024-08-05 A | 25 | 100% |  |  |
| 28 |  | ✔Replanteo Pozos | 1d | 2024-08-06 A | 2024-08-06 A | 27 | 100% |  |  |
| 29 |  | ✔Replanteo Vigas de fundacion | 1d | 2024-08-21 A | 2024-08-21 A | 34 | 100% |  |  |
| 30 |  | ✔Replanteo de Columnas y Encadenados | 1d | 2024-09-06 A | 2024-09-06 A | 36SF+12d | 100% |  |  |
| 31 |  | ✔Replanteo Mamposteria | 1d | 2024-09-11 A | 2024-09-11 A | 36 | 100% |  |  |
| 32 | 1.5.3.4 | **ESTRUCTURA** | 214d | 2024-08-07 A | 2025-06-24 |  | 98% | 250d |  |
| 33 | 1.5.3.4.1 | **Fundaciones** | 25d | 2024-08-07 A | 2024-09-10 A |  | 100% |  |  |
| 34 |  | ✔Pozos romanos | 10d | 2024-08-07 A | 2024-08-20 A | 28 | 100% |  |  |
| 35 |  | ✔Cabezales | 3d | 2024-08-22 A | 2024-08-26 A | 29 | 100% |  |  |
| 36 |  | ✔Vigas de fundacion | 14d | 2024-08-22 A | 2024-09-10 A | 29 | 100% |  |  |
| 37 | 1.5.3.4.2 | **Columnas** | 166d | 2024-10-03 A | 2025-06-12 |  | 68% | 257d |  |
| 38 |  | ✔Columnas PB | 8d | 2024-10-03 A | 2024-10-14 A | 59SS | 100% |  |  |
| 39 |  | Columnas PA | 5d | 2025-02-27 A | 2025-03-05 | 53 | 10% | 324d |  |
| 40 |  | ✔Columnas Tanque | 1d | 2025-06-12 A | 2025-06-12 A | 54 | 100% |  |  |
| 41 | 1.5.3.4.3 | **Encadenados Verticales** | 167d | 2024-10-03 A | 2025-06-13 A |  | 100% |  |  |
| 42 |  | ✔Encadenados verticales PB | 9d | 2024-10-03 A | 2024-10-15 A | 59SS | 100% |  |  |
| 43 |  | ✔Encadenados verticales PA | 3d | 2025-02-27 A | 2025-03-03 A | 53 | 100% |  |  |
| 44 |  | ✔Encadenados verticales tanque | 2d | 2025-06-12 A | 2025-06-13 A | 54 | 100% |  |  |
| 45 | 1.5.3.4.4 | **Vigas** | 130d | 2024-12-05 A | 2025-06-24 A |  | 100% |  |  |
| 46 |  | ✔Vigas PB | 50d | 2024-12-05 A | 2025-02-12 A | 59 | 100% |  |  |
| 47 |  | ✔Vigas PA | 35d | 2025-04-17 A | 2025-06-04 A | 60 | 100% |  |  |
| 48 |  | ✔Vigas Tanque | 8d | 2025-06-13 A | 2025-06-24 A | 40 | 100% |  |  |
| 49 | 1.5.3.4.5 | **Encadenados Horizontales** | 91d | 2024-12-05 A | 2025-04-28 A |  | 100% |  |  |
| 50 |  | ✔Encad. Hor. PB | 15d | 2024-12-05 A | 2024-12-25 A | 59 | 100% |  |  |
| 51 |  | ✔Encad. Hor. PA | 8d | 2025-04-17 A | 2025-04-28 A | 60 | 100% |  |  |
| 52 | 1.5.3.4.6 | **Losas** | 128d | 2024-12-05 A | 2025-06-19 A |  | 100% |  |  |
| 53 |  | ✔Losa PB | 60d | 2024-12-05 A | 2025-02-26 A | 59 | 100% |  |  |
| 54 |  | ✔Losa PA | 40d | 2025-02-12 A | 2025-04-08 A | 60FS-43d | 100% |  |  |
| 55 |  | ✔Losa Tanque | 9d | 2025-06-09 A | 2025-06-19 A | 40FS-4d | 100% |  |  |
| 56 | 1.5.3.5 | **ALBAÑILERIA** | 346d | 2024-09-12 A | 2026-02-11 |  | 51% | 92d |  |
| 57 | 1.5.3.5.1 | **Mamposteria** | 220d | 2024-09-12 A | 2025-08-08 |  | 81% | 218d |  |
| 58 |  | ✔Mamposteria Nivelacion | 5d | 2024-09-12 A | 2024-09-18 A | 31 | 100% |  |  |
| 59 |  | Mamposteria PB | 45d | 2024-10-03 A | 2024-12-04 | 66 | 90% | 380d |  |
| 60 |  | Mamposteria PA | 35d | 2025-02-27 A | 2025-04-16 | 53 | 90% | 297d |  |
| 61 |  | Muros tabiques 8cm | 10d | 2025-07-28 | 2025-08-08 | 117 |  | 218d | start no earlier than 2025-07-14 |
| 62 |  | Muros de rafa 12cm | 5d | 2025-07-14 | 2025-07-18 |  |  | 233d | start no earlier than 2025-07-14 |
| 63 |  | ✔Parapetos Losa PB | 19d | 2025-06-02 A | 2025-06-26 A |  | 100% |  | start no earlier than 2025-06-02 |
| 64 | 1.5.3.5.2 | **Aislacion Muros** | 10d | 2024-09-19 A | 2024-10-02 A |  | 100% |  |  |
| 65 |  | ✔Capa aisladora horizontal | 3d | 2024-09-19 A | 2024-09-23 A | 58 | 100% |  |  |
| 66 |  | ✔Capa aisladora vertical | 10d | 2024-09-19 A | 2024-10-02 A | 58 | 100% |  |  |
| 67 | 1.5.3.5.3 | **Contrapiso** | 180d | 2024-10-25 | 2025-07-25 |  |  | 121d |  |
| 68 |  | Contrapiso Interior | 16d | 2024-10-25 | 2025-03-04 | 66FS+15d |  | 121d |  |
| 69 |  | Contrapiso Exterior | 12d | 2025-07-10 | 2025-07-25 |  |  | 208d | start no earlier than 2025-07-10 |
| 70 | 1.5.3.5.4 | **Carpeta de Nivelación** | 23d | 2025-07-28 | 2025-08-28 |  |  | -132d |  |

| ID | WBS | Task | Duration | Start | Finish | Predecessors | Complete | Total float | Constraint |
| --- | --- | --- | --- | --- | --- | --- | --- | --- | --- |
| 71 |  | Carpeta de Nivelación PB | 10d | 2025-08-11 | 2025-08-22 | 134 |  | 180d |  |
| 72 |  | Carpeta de Nivelación PA + Cubierta PB | 8d | 2025-08-19 | 2025-08-28 | 135 |  | -147d |  |
| 73 |  | Carpeta de nivelación sobre Cubierta PA | 10d | 2025-07-28 | 2025-08-08 | 69, 77 |  | 208d |  |
| 74 | 1.5.3.5.5 | **Aislacion Cubiertas** | 38d | 2025-06-24 A | 2025-08-15 |  | 9% | 213d |  |
| 75 |  | Hormigon de Pendiente PB | 1d | 2025-07-25 | 2025-07-25 | 69FF |  | 228d |  |
| 76 |  | Colocacion Membrana asfaltica PB | 5d | 2025-08-11 | 2025-08-15 | 78SS |  | 213d |  |
| 77 |  | ✔Hormigon de pendiente PA | 1d | 2025-06-24 A | 2025-06-24 A | 122 | 100% |  |  |
| 78 |  | Colocacion de membrana PA | 4d | 2025-08-11 | 2025-08-14 | 73 |  | 213d |  |
| 79 | 1.5.3.5.6 | **Revoques** | 212d | 2025-04-01 A | 2026-02-04 |  | 65% | 96d |  |
| 80 |  | Revoque grueso exterior | 42d | 2025-05-22 A | 2025-07-18 | 54FS-15d | 75% | 185d |  |
| 81 |  | Revoque Fino Exterior | 15d | 2025-07-21 | 2025-08-08 | 80 |  | 189d |  |
| 82 |  | ✔Revoque grueso interior | 54d | 2025-04-01 A | 2025-06-13 A |  | 100% |  | start no earlier than 2025-04-01 |
| 83 |  | Enlucido de yeso interior ETAPA 1 | 10d | 2025-08-29 | 2025-09-11 | 70 |  | 195d |  |
| 84 |  | Enlucido de yeso interior etapa 2 | 10d | 2026-01-22 | 2026-02-04 | 169 |  | 96d |  |
| 85 | 1.5.3.5.7 | **Cielorraso** | 19d | 2026-01-15 | 2026-02-11 |  |  | 91d |  |
| 86 |  | Cielorraso suspendido de madera PB | 10d | 2026-01-15 | 2026-01-28 | 131 |  | 101d |  |
| 87 |  | Cielorraso yeso aplicado PB | 20d | 2026-01-15 | 2026-02-11 | 131 |  | 91d |  |
| 88 |  | Cielorraso suspendido de madera PA | 15d | 2026-01-15 | 2026-02-04 | 131 |  | 96d |  |
| 89 |  | Cielorraso yeso aplicado PA | 5d | 2026-01-15 | 2026-01-21 | 131 |  | 106d |  |
| 90 | 1.5.3.5.8 | **Escaleras** | 94d | 2025-04-09 A | 2025-08-22 |  | 55% | 209d |  |
| 91 |  | ✔Escalera interior PB a PA | 12d | 2025-04-09 A | 2025-04-24 A | 54 | 100% |  |  |
| 92 |  | Escalera Exterior PB a PA | 10d | 2025-08-11 | 2025-08-22 | 134 |  | 208d |  |
| 93 | 1.5.3.5.9 | **Asador** | 80d | 2025-04-09 A | 2025-08-01 |  | 44% | 223d |  |
| 94 |  | ✔Asador Galeria | 8d | 2025-04-09 A | 2025-04-18 A | 54 | 100% |  |  |
| 95 |  | Finalización Asador Galeria | 10d | 2025-07-21 | 2025-08-01 | 126 |  | 223d |  |
| 96 | 1.5.3.5.10 | **Veredas perimetrales** | 5d | 2025-08-19 A | 2025-08-25 |  | 50% | 208d |  |
| 97 |  | Veredas perimetrales 40cm | 5d | 2025-08-19 A | 2025-08-25 | 72SS | 50% | 208d |  |
| 98 | 1.5.3.6 | **HERRERIA** | 292d | 2024-11-13 A | 2026-01-26 |  | 31% | 103d |  |
| 99 | 1.5.3.6.1 | **Columnas y vigas metalicas** | 68d | 2024-11-13 A | 2025-02-28 A |  | 100% |  |  |
| 100 |  | ✔Columnas metalicas PB | 8d | 2024-11-13 A | 2024-11-22 A | 59FS-15d | 100% |  |  |
| 101 |  | ✔Vigas metalicas PB | 3d | 2025-02-13 A | 2025-02-17 A | 53FS-10d | 100% |  |  |
| 102 |  | ✔Columnas metalicas PA | 2d | 2025-02-27 A | 2025-02-28 A | 53 | 100% |  |  |
| 103 | 1.5.3.6.2 | **Conductos Metalicos** | 2d | 2025-06-18 A | 2025-06-19 A |  | 100% |  |  |
| 104 |  | ✔Conducto Asador PB | 2d | 2025-06-18 A | 2025-06-19 A | 94FS+41d | 100% |  |  |
| 105 | 1.5.3.6.3 | **Cerramiento Metalico** | 29d | 2025-08-11 | 2025-09-19 |  |  | 189d |  |
| 106 |  | Cerramiento chapa acanalada negra | 30d | 2025-08-11 | 2025-09-19 | 81 |  | 189d |  |
| 107 | 1.5.3.6.4 | **Porton Metalico** | 3d | 2026-01-22 | 2026-01-26 |  |  | 103d |  |
| 108 |  | Chapa perforada de 8mm calibre 18 | 3d | 2026-01-22 | 2026-01-26 | 166 |  | 103d |  |
| 109 | 1.5.3.7 | **INSTALACIONES** | 621d | 2024-10-25 A | 2027-05-04 |  | 48% | -213d |  |
| 110 | 1.5.3.7.1 | **Instalaciones pluviales** | 204.8d | 2024-10-25 A | 2025-09-01 |  | 65% | 203.2d |  |
| 111 |  | Desague Pluvial Planta baja | 44d | 2024-10-25 A | 2025-07-30 | 113 | 80% | 203d |  |
| 112 |  | Desague pluviales Planta Alta | 44d | 2025-02-13 A | 2025-07-31 | 113 | 80% | 202.2d |  |
| 113 |  | ✔Desague Pluvial Techo | 3d | 2025-06-02 A | 2025-06-04 A | 54FS-8d | 100% |  |  |
| 114 |  | Salidas pluviales al exterior | 22d | 2025-07-31 | 2025-09-01 | 111, 112, 113 |  | 202.2d |  |
| 115 | 1.5.3.7.2 | **Instalaciones Cloacales** | 253d | 2024-10-25 A | 2025-11-07 |  | 65% | 155d |  |
| 116 |  | Desagues Cloacales PB | 192d | 2024-10-25 A | 2025-07-21 | 68SS | 70% | -136d |  |
| 117 |  | Desague Cloacales PA | 10d | 2025-07-14 | 2025-07-25 |  |  | -140d | start no earlier than 2025-07-14 |
| 118 |  | Camara septica y Sangria | 5d | 2025-11-03 | 2025-11-07 |  |  | 155d | start no earlier than 2025-11-03 |
| 119 | 1.5.3.7.3 | **Instalaciones Agua fria y caliente** | 168d | 2025-06-09 A | 2026-02-09 |  | 49% | 93d |  |
| 120 |  | Instalacion de agua PB | 19d | 2025-06-24 A | 2025-07-18 | 122 | 50% | -135d |  |
| 121 |  | Instalacion de agua PA | 24d | 2025-06-24 A | 2025-07-25 | 122 | 50% | -140d |  |
| 122 |  | ✔Armado de colector y tanques | 11d | 2025-06-09 A | 2025-06-23 A |  | 100% |  | start no earlier than 2025-06-09 |
| 123 |  | Colocacion Griferia | 3d | 2026-02-05 | 2026-02-09 | 124 |  | 93d |  |
| 124 |  | Colocacion Artefactos | 10d | 2026-01-22 | 2026-02-04 | 169 |  | 93d |  |
| 125 | 1.5.3.7.4 | **Instalacion de Gas** | 41d | 2025-07-10 | 2025-09-05 |  |  | -135d |  |
| 126 |  | Armado de cañerias internas | 7d | 2025-07-10 | 2025-07-18 | 121FS-12d |  | -135d |  |
| 127 |  | Conexión a red de gas | 10d | 2025-08-25 | 2025-09-05 | 71 |  | 199d |  |
| 128 | 1.5.3.7.5 | **Instalacion Aire Acondicionado** | 474d | 2025-06-09 A | 2027-05-04 |  | 22% | -213d |  |
| 129 |  | ✔Colocacion kit de instalacion | 7d | 2025-06-09 A | 2025-06-17 A |  | 100% |  | start no earlier than 2025-06-09 |
| 130 |  | Instalación Cañeria A°A° | 10d | 2025-07-10 | 2025-07-23 |  |  | 230d | start no earlier than 2025-07-10 |
| 131 |  | Conductos de bajo silueta | 12d | 2025-12-29 | 2026-01-15 | 169SF |  | 91d | start no earlier than 2025-01-02 |
| 132 |  | Colocacion de equipos | 3d | 2027-04-30 | 2027-05-04 | 171 |  | -213d |  |
| 133 | 1.5.3.7.6 | **Instalacion Calefaccion** | 18d | 2025-07-28 | 2025-08-21 |  |  | -140d |  |
| 134 |  | Piso Radiante en PB | 10d | 2025-07-28 | 2025-08-08 | 126, 116, 117, 120, 121 |  | -148d |  |
| 135 |  | Piso Radiante en PA | 6d | 2025-08-11 | 2025-08-18 | 134 |  | -148d |  |
| 136 |  | Colector | 3d | 2025-08-19 | 2025-08-21 | 135 |  | 210d |  |
| 137 | 1.5.3.7.7 | **Instalacion Electricas** | 257d | 2025-02-13 A | 2026-02-25 |  | 16% | 82d |  |
| 138 |  | Canalizacion en muros PB | 24d | 2025-06-24 A | 2025-07-25 | 120SS | 33% | 228d |  |
| 139 |  | ✔Canalizacion de cañerias y bocas en losa PB | 3d | 2025-02-13 A | 2025-02-17 A | 53FS-10d | 100% |  |  |
| 140 |  | Canalizacion en muros PA | 24d | 2025-06-24 | 2025-07-25 | 121SS |  | 228d |  |

| ID | WBS | Task | Duration | Start | Finish | Predecessors | Complete | Total float | Constraint |
| --- | --- | --- | --- | --- | --- | --- | --- | --- | --- |
| 141 |  | ✔Canalizacion de cañerias y bocas en losa PA | 3d | 2025-03-21 A | 2025-03-25 A | 54FS-10d | 100% |  |  |
| 142 |  | Cableado General | 15d | 2026-01-22 | 2026-02-11 | 169 |  | 82d |  |
| 143 |  | Armado de Tomas y puntos de encendido | 5d | 2026-02-12 | 2026-02-18 | 142 |  | 82d |  |
| 144 |  | Armado de tablero general | 5d | 2026-02-19 | 2026-02-25 | 143 |  | 82d |  |
| 145 |  | Colocacion de Artefactos | 10d | 2026-01-22 | 2026-02-04 | 169 |  | 96d |  |
| 146 | 1.5.3.8 | **PISOS Y REVESTIMIENTO** | 237d | 2025-07-21 | 2026-07-01 |  |  | -4d |  |
| 147 | 1.5.3.8.1 | **Revestimiento Exteriores** | 237d | 2025-07-21 | 2026-07-01 |  |  | -4d |  |
| 148 |  | Revestimiento en marmol travertino | 5d | 2026-06-25 | 2026-07-01 | 152 |  | -4d |  |
| 149 |  | Revestimiento en piedra | 50d | 2025-07-21 | 2025-09-26 | 80 |  | 184d |  |
| 150 | 1.5.3.8.2 | **Pisos Exteriores** | 20d | 2026-06-04 | 2026-07-01 |  |  | -4d |  |
| 151 |  | Hormigo alisado | 5d | 2026-06-25 | 2026-07-01 | 152 |  | -4d |  |
| 152 |  | Porcellanato Galeria | 15d | 2026-06-04 | 2026-06-24 | 157 |  | -4d |  |
| 153 | 1.5.3.8.3 | **Pisos Interiores** | 90d | 2026-01-22 | 2026-06-03 |  |  | -4d |  |
| 154 |  | Pisos Planta baja | 45d | 2026-01-22 | 2026-03-25 | 169 |  | -4d |  |
| 155 |  | Zocalos Planta baja | 10d | 2026-05-07 | 2026-05-20 | 156 |  | -4d |  |
| 156 |  | Pisos planta alta | 30d | 2026-03-26 | 2026-05-06 | 154 |  | -3d |  |
| 157 |  | Zocalos Planta alta | 10d | 2026-05-21 | 2026-06-03 | 155 |  | -4d |  |
| 158 | 1.5.3.9 | **PINTURA** | 62d | 2026-01-02 | 2026-04-02 |  |  | -204d |  |
| 159 | 1.5.3.9.1 | **Pintura Interior** | 44d | 2026-01-02 | 2026-03-05 |  |  | -204d |  |
| 160 |  | Latex Interior PB | 15d | 2026-01-02 | 2026-01-22 | 169FS-14d |  | 105d |  |
| 161 |  | Latex cielorraso PB | 15d | 2026-01-30 | 2026-02-19 | 162 |  | -213d |  |
| 162 |  | Latex Interior PA | 13d | 2026-01-13 | 2026-01-29 | 169FS-7d |  | -212d |  |
| 163 |  | Latex Cielorraso PA | 10d | 2026-02-20 | 2026-03-05 | 161 |  | -213d |  |
| 164 | 1.5.3.9.2 | **Pintura Exterior** | 18d | 2026-03-06 | 2026-04-02 |  |  | 56d |  |
| 165 |  | Revestimiento Plastico | 20d | 2026-03-06 | 2026-04-02 | 163 |  | 56d |  |
| 166 | 1.5.3.10 | **CARPINTERIA** | 5d | 2026-01-15 | 2026-01-21 |  |  | -211d |  |
| 167 |  | Puertas de Madera | 5d | 2026-01-15 | 2026-01-21 | 169SS |  | 103d | start no earlier than 2026-01-15 |
| 168 |  | Puertas de Aluminio | 3d | 2026-01-15 | 2026-01-19 | 169SS |  | 105d | start no earlier than 2026-01-15 |
| 169 |  | Aberturas de Aluminio | 5d | 2026-01-15 | 2026-01-21 | 72FS+30d |  | -211d | start no earlier than 2026-01-15 |
| 170 | 1.5.3.11 | **EQUIPAMIENTO FIJO** | 286d | 2026-03-06 | 2027-04-29 |  |  | -213d |  |
| 171 |  | Muebles Interiores | 300d | 2026-03-06 | 2027-04-29 | 163 |  | -213d |  |
| 172 | 1.5.3.12 | **PILETA** | 30d | 2025-08-25 | 2025-10-03 |  |  | 179d |  |
| 173 |  | Piscina con desborde infinito | 30d | 2025-08-25 | 2025-10-03 | 71 |  | 179d |  |
| 174 |  | Firma Acta recepcion Provisoria | 0d | 2027-05-04 | 2027-05-04 | 19 |  | -213d |  |
| 175 |  | Postobra Activo | 33d | 2027-03-19 | 2027-05-04 | 174FF |  | 249d |  |
| 176 |  | Firma Acta recepcion Definitiva | 0d | 2028-04-28 | 2028-04-28 | 174FS+12emo |  | 0d |  |
| 177 |  | Interiorismo | 110d | 2026-12-02 | 2027-05-04 | 19FF |  | 247d |  |
| 178 |  | StanBy Por definición de cliente | 186d | 2025-10-01 | 2026-06-17 |  |  | 465d | start no earlier than 2025-10-01 |

## Version 2 (saved 2026-09-26)

Last finish stays 2028-04-28. Complete tasks 53 → 54.

Changed:

| ID | Task | Start | Finish | Duration | Complete | Total float |
| --- | --- | --- | --- | --- | --- | --- |
| 1 | **VIVIENDA REBONI** |  |  |  | 41% → 46% |  |
| 178 | StanBy Por definición de cliente | 2025-10-01 A | 2026-06-17 → 2026-08-07 A (+51d) | 186d → 223d | 0% → 100% | 465d → none |
